# New Project plan V1

Schedule from MS Project, 2014-01-01 to 2016-01-05, A marks actual dates.

## Calendars

- Standard: Mon-Fri 08:00-12:00, 13:00-17:00; Sat-Sun off.

## Resources

| Resource |
| --- |
| Singapore |
| India |
| CDGI |
| I |
| Sina |

## Schedule

| ID | WBS | Task | Type | Duration | Start | Finish | Complete | Remaining | Resources | Work | Actual work | Items Pending at CDGI | India Ebix Remarks | Items Pending at Singapore |
| --- | --- | --- | --- | --- | --- | --- | --- | --- | --- | --- | --- | --- | --- | --- |
| 1 | 1 | **MCAS Project** |  | 525d | 2014-01-01 A | 2016-01-05 | 59% | 214.91d |  | 77600h | 34650h |  |  |  |
| 2 | 1.1 | **1 Project Initiation** |  | 262d | 2014-01-01 A | 2015-01-01 | 75% | 65.5d | Singapore | 8384h | 4716h |  |  |  |
| 3 | 1.1.1 | 1.1 Project Scope Definition | manual | 262d | 2014-01-01 A | 2015-01-01 | 75% | 65.5d | Singapore | 2096h | 1572h |  |  |  |
| 4 | 1.1.2 | 1.2 Project Plan Development | manual | 262d | 2014-01-01 A | 2015-01-01 | 75% | 65.5d | Singapore | 2096h | 1572h |  |  |  |
| 5 | 1.1.3 | 1.3 Project Scope Completed | manual | 262d | 2014-01-01 A | 2015-01-01 | 75% | 65.5d | Singapore | 2096h | 1572h |  |  |  |
| 6 | 1.2 | **2 Requirement Gathering** |  | 42d | 2015-01-01 A | 2015-02-27 | 63% | 15.42d | Singapore | 17232h | 9446h |  |  |  |
| 7 | 1.2.1 | **2.1 System Admin Requirements** |  | 32d | 2015-01-01 A | 2015-02-13 | 71% | 9.13d | Singapore | 7872h | 5128h | Pending clarification from CDGI |  |  |
| 8 | 1.2.1.1 | **2.1.1 Upload Main Menu** |  | 32d | 2015-01-01 A | 2015-02-13 | 44% | 18d | Singapore | 768h | 224h |  |  |  |
| 9 | 1.2.1.1.1 | 2.1.1.1 Vehicle Listing Upload | manual | 32d | 2015-01-01 A | 2015-02-13 | 44% | 18d | Singapore | 256h | 112h | CDGI to check with users |  |  |
| 10 | 1.2.1.1.2 | 2.1.1.2 Bus Captain Listing | manual | 32d | 2015-01-01 A | 2015-02-13 | 44% | 18d | Singapore | 256h | 112h | CDGI to check with users | Waiting for sample upload file |  |
| 11 | 1.2.1.2 | **2.1.2 User Admin** |  | 32d | 2015-01-01 A | 2015-02-13 | 44% | 17.86d | Singapore | 2048h | 792h | Pending clarification from CDGI |  |  |
| 12 | 1.2.1.2.1 | 2.1.2.1 Entity Details | manual | 32d | 2015-01-01 A | 2015-02-13 | 34% | 21d | Singapore | 256h | 88h |  | Waiting for functionality | Singapore ebix to Provide functional details |
| 13 | 1.2.1.2.2 | 2.1.2.2. User Groups | manual | 32d | 2015-01-01 A | 2015-02-13 | 69% | 10d | Singapore | 256h | 176h |  | completed | Singapore ebix to Provide functional details |
| 14 | 1.2.1.2.3 | 2.1.2.3 User | manual | 32d | 2015-01-01 A | 2015-02-13 | 69% | 10d | Singapore | 256h | 176h |  | completed |  |
| 15 | 1.2.1.2.4 | 2.1.2.4 Department Master | manual | 32d | 2015-01-01 A | 2015-02-13 | 34% | 21d | Singapore | 256h | 88h |  | Waiting for functionality | Singapore ebix to Provide functional details |
| 16 | 1.2.1.2.5 | 2.1.2.5 Password Setup | manual | 32d | 2015-01-01 A | 2015-02-13 | 34% | 21d | Singapore | 256h | 88h |  | Waiting for functionality | Singapore ebix to Provide functional details |
| 17 | 1.2.1.2.6 | 2.1.2.6 Release Locked Users | manual | 32d | 2015-01-01 A | 2015-02-13 | 34% | 21d | Singapore | 256h | 88h |  | Waiting for functionality | Singapore ebix to Provide functional details |
| 18 | 1.2.1.2.7 | 2.1.2.7 Country for User Access | manual | 32d | 2015-01-01 A | 2015-02-13 | 34% | 21d | Singapore | 256h | 88h |  | Waiting for functionality | Singapore ebix to Provide functional details |
| 19 | 1.2.1.3 | **2.1.3 Service Provider** |  | 22d | 2015-01-01 A | 2015-01-30 A | 100% |  | Singapore | 1232h | 1232h |  |  |  |
| 20 | 1.2.1.3.1 | 2.1.3.1 Insurer Master | manual | 22d | 2015-01-01 A | 2015-01-30 A | 100% |  | Singapore | 176h | 176h |  |  |  |
| 21 | 1.2.1.3.2 | 2.1.3.2 Surveyor Master | manual | 22d | 2015-01-01 A | 2015-01-30 A | 100% |  | Singapore | 176h | 176h |  |  |  |
| 22 | 1.2.1.3.3 | 2.1.3.3 Lawyer Master | manual | 22d | 2015-01-01 A | 2015-01-30 A | 100% |  | Singapore | 176h | 176h |  |  |  |
| 23 | 1.2.1.3.4 | 2.1.3.4 Workshop/Dept Master | manual | 22d | 2015-01-01 A | 2015-01-30 A | 100% |  | Singapore | 176h | 176h |  |  |  |
| 24 | 1.2.1.3.5 | 2.1.3.5 Hospital Master | manual | 22d | 2015-01-01 A | 2015-01-30 A | 100% |  | Singapore | 176h | 176h |  |  |  |
| 25 | 1.2.1.3.6 | 2.1.3.6 Adjuster Master | manual | 22d | 2015-01-01 A | 2015-01-30 A | 100% |  | Singapore | 176h | 176h |  |  |  |
| 26 | 1.2.1.4 | 2.1.4 Nature Of Loss | manual | 22d | 2015-01-01 A | 2015-01-30 A | 100% |  | Singapore | 176h | 176h |  |  |  |
| 27 | 1.2.1.5 | 2.1.5 Type of Loss | manual | 22d | 2015-01-01 A | 2015-01-30 A | 100% |  | Singapore | 176h | 176h |  |  |  |
| 28 | 1.2.1.6 | 2.1.6 Main Class Business | manual | 22d | 2015-01-01 A | 2015-01-30 A | 100% |  | Singapore | 176h | 176h |  |  |  |
| 29 | 1.2.1.7 | 2.1.7 Sub Class | manual | 22d | 2015-01-01 A | 2015-01-30 A | 100% |  | Singapore | 176h | 176h |  |  |  |
| 30 | 1.2.1.8 | 2.1.8 Claims Expense Master | manual | 22d | 2015-01-01 A | 2015-01-30 A | 100% |  | Singapore | 176h | 176h |  |  |  |
| 31 | 1.2.1.9 | 2.1.9 Claims Close Reason Master | manual | 22d | 2015-01-01 A | 2015-01-30 A | 100% |  | Singapore | 176h | 176h |  |  |  |
| 32 | 1.2.1.10 | 2.1.10 Currency Master | manual | 22d | 2015-01-01 A | 2015-01-30 A | 100% |  | Singapore | 176h | 176h |  |  |  |
| 33 | 1.2.1.11 | 2.1.11 Exchange Rate Master | manual | 22d | 2015-01-01 A | 2015-01-30 A | 100% |  | Singapore | 176h | 176h |  |  |  |
| 34 | 1.2.1.12 | 2.1.12 Vehicle Class | manual | 32d | 2015-01-01 A | 2015-02-13 | 52% | 15.5d | Singapore | 256h | 132h |  |  |  |
| 35 | 1.2.1.13 | 2.1.13 Vehicle Make | manual | 32d | 2015-01-01 A | 2015-02-13 | 52% | 15.5d | Singapore | 256h | 132h |  |  |  |
| 36 | 1.2.1.14 | 2.1.14 Vehicle Model | manual | 32d | 2015-01-01 A | 2015-02-13 | 52% | 15.5d | Singapore | 256h | 132h |  |  |  |
| 37 | 1.2.1.15 | 2.1.15 Insurance Policy | manual | 22d | 2015-01-01 A | 2015-01-30 A | 100% |  | Singapore | 176h | 176h |  |  |  |
| 38 | 1.2.1.16 | 2.1.16 GST Setting | manual | 22d | 2015-01-01 A | 2015-01-30 A | 100% |  | Singapore | 176h | 176h |  |  |  |
| 39 | 1.2.1.17 | 2.1.17 Organization | manual | 22d | 2015-01-01 A | 2015-01-30 A | 100% |  | Singapore | 176h | 176h |  |  |  |
| 40 | 1.2.1.18 | 2.1.18 Claim Officer Duty | manual | 22d | 2015-01-01 A | 2015-01-30 A | 100% |  | Singapore | 176h | 176h | Pending clarification from CDGI |  |  |
| 41 | 1.2.1.19 | 2.1.19 LOU Rate | manual | 22d | 2015-01-01 A | 2015-01-30 A | 100% |  | Singapore | 176h | 176h |  |  |  |
| 42 | 1.2.1.20 | 2.1.20 Interchange | manual | 32d | 2015-01-01 A | 2015-02-13 | 52% | 15.5d | Singapore | 256h | 132h |  |  |  |
| 43 | 1.2.1.21 | 2.1.21 Deductible | manual | 32d | 2015-01-01 A | 2015-02-13 | 25% | 24d | Singapore | 256h | 64h |  |  |  |

| ID | WBS | Task | Type | Duration | Start | Finish | Complete | Remaining | Resources | Work | Actual work | Items Pending at CDGI | India Ebix Remarks |
| --- | --- | --- | --- | --- | --- | --- | --- | --- | --- | --- | --- | --- | --- |
| 44 | 1.2.2 | **2.2 Upload Requirements** |  | 17d | 2015-01-29 A | 2015-02-20 | 50% | 8.5d | Singapore | 544h | 204h | Pending clarification from CDGI | Ui start development |
| 45 | 1.2.2.1 | 2.2.1 TAC Upload | manual | 17d | 2015-01-29 A | 2015-02-20 | 50% | 8.5d | Singapore | 136h | 68h | Pending clarification from CDGI | csv file needed |
| 46 | 1.2.2.2 | 2.2.2 Claim File Upload | manual | 17d | 2015-01-29 A | 2015-02-20 | 50% | 8.5d | Singapore | 136h | 68h | Pending clarification from CDGI | csv file needed |
| 47 | 1.2.2.3 | 2.2.3 SAP File Upload | manual | 17d? | 2015-01-29 A | 2015-02-20 | 50% | 8.5d? | Singapore | 136h | 68h | Pending clarification from CDGI | csv file needed |
| 48 | 1.2.3 | **2.3 Claim Requirements** |  | 22d | 2015-01-01 A | 2015-01-30 | 78% | 4.93d | Singapore | 3776h | 2656h |  |  |
| 49 | 1.2.3.1 | **2.3.1 Buses** |  | 22d | 2015-01-01 A | 2015-01-30 | 98% | 0.52d | Singapore | 2896h | 2656h |  |  |
| 50 | 1.2.3.1.1 | 2.3.1.1 Accident | manual | 22d | 2015-01-01 A | 2015-01-30 A | 100% |  | Singapore | 176h | 176h |  |  |
| 51 | 1.2.3.1.2 | 2.3.1.2 Claim | manual | 22d | 2015-01-01 A | 2015-01-30 A | 100% |  | Singapore | 176h | 176h |  |  |
| 52 | 1.2.3.1.3 | 2.3.1.3 Service Provider | manual | 22d | 2015-01-01 A | 2015-01-30 A | 100% |  | Singapore | 176h | 176h |  |  |
| 53 | 1.2.3.1.4 | 2.3.1.4 Notes | manual | 22d | 2015-01-01 A | 2015-01-30 A | 100% |  | Singapore | 176h | 176h |  |  |
| 54 | 1.2.3.1.5 | 2.3.1.5 Tasks | manual | 22d | 2015-01-01 A | 2015-01-30 A | 100% |  | Singapore | 176h | 176h |  |  |
| 55 | 1.2.3.1.6 | 2.3.1.6 Attachment | manual | 22d | 2015-01-01 A | 2015-01-30 A | 100% |  | Singapore | 176h | 176h |  |  |
| 56 | 1.2.3.1.7 | 2.3.1.7 Dairy | manual | 22d | 2015-01-01 A | 2015-01-30 A | 100% |  | Singapore | 176h | 176h |  |  |
| 57 | 1.2.3.1.8 | 2.3.1.8 Reassigned Dairy | manual | 22d | 2015-01-01 A | 2015-01-30 A | 100% |  | Singapore | 176h | 176h |  |  |
| 58 | 1.2.3.1.9 | 2.3.1.9 Reserve | manual | 22d | 2015-01-01 A | 2015-01-30 A | 100% |  | Singapore | 176h | 176h |  |  |
| 59 | 1.2.3.1.10 | 2.3.1.10 Reserve History | manual | 22d | 2015-01-01 A | 2015-01-30 A | 100% |  | Singapore | 176h | 176h |  |  |
| 60 | 1.2.3.1.11 | 2.3.1.11 Mandate | manual | 22d | 2015-01-01 A | 2015-01-30 A | 100% |  | Singapore | 176h | 176h |  |  |
| 61 | 1.2.3.1.12 | 2.3.1.12 Mandate History | manual | 22d | 2015-01-01 A | 2015-01-30 A | 100% |  | Singapore | 176h | 176h |  |  |
| 62 | 1.2.3.1.13 | 2.3.1.13 Payment | manual | 22d | 2015-01-01 A | 2015-01-30 A | 100% |  | Singapore | 176h | 176h |  |  |
| 63 | 1.2.3.1.14 | 2.3.1.14 Payment History | manual | 22d | 2015-01-01 A | 2015-01-30 A | 100% |  | Singapore | 176h | 176h |  |  |
| 64 | 1.2.3.1.15 | 2.3.1.15 Recovery | manual | 32d | 2015-01-01 A | 2015-02-13 | 75% | 8d | Singapore | 256h | 192h |  |  |
| 65 | 1.2.3.2 | 2.3.2 Trains | manual | 22d | 2015-02-16 | 2015-03-17 |  |  | Singapore | 176h |  |  |  |
| 66 | 1.2.3.3 | 2.3.3 Taxis | manual | 22d | 2015-03-17 | 2015-04-15 |  |  | Singapore | 176h |  |  |  |
| 67 | 1.2.3.4 | 2.3.4 Rental Cars | manual | 22d | 2015-04-15 | 2015-05-14 |  |  | Singapore | 176h |  |  |  |
| 68 | 1.2.3.5 | 2.3.5 Private Cars | manual | 22d | 2015-05-14 | 2015-06-12 |  |  | Singapore | 176h |  |  |  |
| 69 | 1.2.4 | 2.4 Dashboard Requirements | manual | 37d | 2015-01-01 A | 2015-02-20 | 73% | 10d | Singapore | 296h | 216h | Pending clarification from CDGI | UI of permission start development |

| ID | WBS | Task | Type | Duration | Start | Finish | Predecessors | Complete | Remaining | Actual start | Total slack | Constraint | Resources | Work | Actual work | Items Pending at CDGI | India Ebix Remarks | Description |
| --- | --- | --- | --- | --- | --- | --- | --- | --- | --- | --- | --- | --- | --- | --- | --- | --- | --- | --- |
| 70 | 1.2.5 | **2.5 Diary Listing** |  | 37d | 2015-01-01 A | 2015-02-20 |  | 73% | 10d |  |  |  | Singapore | 1184h | 864h |  |  |  |
| 71 | 1.2.5.1 | 2.5.1 Diary Items | manual | 37d | 2015-01-01 A | 2015-02-20 |  | 73% | 10d |  |  |  | Singapore | 296h | 216h | waiting To Get Details |  |  |
| 72 | 1.2.5.2 | 2.5.2 Assigned Tasks | manual | 37d | 2015-01-01 A | 2015-02-20 |  | 73% | 10d |  |  |  | Singapore | 296h | 216h | waiting To Get Details |  |  |
| 73 | 1.2.5.3 | 2.5.3 Escalation Tasks | manual | 37d | 2015-01-01 A | 2015-02-20 |  | 73% | 10d |  |  |  | Singapore | 296h | 216h | waiting To Get Details |  |  |
| 74 | 1.2.6 | **2.6 Claim Enquiry Requirements** |  | 27d | 2015-01-29 A | 2015-03-06 |  | 25% | 20.25d |  |  |  | Singapore | 864h | 162h | Pending clarification from CDGI | pending for requirement detail |  |
| 75 | 1.2.6.1 | 2.6.1 Claims | manual | 27d | 2015-01-29 A | 2015-03-06 |  | 25% | 20.25d |  |  |  | Singapore | 216h | 54h |  | pending for requirement detail |  |
| 76 | 1.2.6.2 | 2.6.2 Claim Documents Printing | manual | 27d | 2015-01-29 A | 2015-03-06 |  | 25% | 20.25d |  |  |  | Singapore | 216h | 54h |  | pending for requirement detail |  |
| 77 | 1.2.6.3 | 2.6.3 Job Schedule Enquiry | manual | 27d | 2015-01-29 A | 2015-03-06 |  | 25% | 20.25d |  |  |  | Singapore | 216h | 54h |  | pending for requirement detail |  |
| 78 | 1.2.7 | **2.7 Document Generation Module** |  | 27d | 2015-01-29 A | 2015-03-06 |  | 25% | 20.25d |  |  |  | Singapore | 432h | 54h | Pending clarification from CDGI | pending for requirement detail |  |
| 79 | 1.2.7.1 | 2.7.1 Document Generation Criteria | manual | 27d | 2015-01-29 A | 2015-03-06 |  | 25% | 20.25d |  |  |  | Singapore | 216h | 54h |  |  | new Task added |
| 80 | 1.2.8 | **2.8 Document Print** |  | 27d | 2015-01-29 A | 2015-03-06 |  | 25% | 20.25d |  |  |  | Singapore | 648h | 108h | Pending clarification from CDGI |  |  |
| 81 | 1.2.8.1 | 2.7.1 Claim Payment Document Printing | manual | 27d | 2015-01-29 A | 2015-03-06 |  | 25% | 20.25d |  |  |  | Singapore | 216h | 54h | waiting To Get Details |  |  |
| 82 | 1.2.8.2 | 2.7.2 Claim Registration Document Printing | manual | 27d | 2015-01-29 A | 2015-03-06 |  | 25% | 20.25d |  |  |  | Singapore | 216h | 54h | waiting To Get Details |  |  |
| 83 | 1.2.9 | 2.9 Unreported Claim | manual | 27d | 2015-01-29 A | 2015-03-06 |  | 25% | 20.25d |  |  |  | Singapore | 216h | 54h | Pending clarification from CDGI | pending for requirement detail |  |
| 84 | 1.2.10 | **2.10 Security Management System** |  | 27d | 2015-01-29 | 2015-03-06 |  |  |  |  |  |  | Singapore | 648h |  |  |  |  |
| 85 | 1.2.10.1 | 2.10.1 Permission Screen UI | manual | 27d | 2015-01-29 | 2015-03-06 |  |  |  |  |  |  | Singapore | 216h |  | waiting To Get Details |  | New Task added |
| 86 | 1.2.10.2 | 2.10.2 Permission screen functionality | manual | 27d | 2015-01-29 | 2015-03-06 |  |  |  |  |  |  | Singapore | 216h |  | waiting To Get Details |  |  |
| 87 | 1.2.11 | 2.11 Requirements signed off by client | manual | 52d | 2015-01-01 | 2015-03-13 |  |  |  |  |  |  | Singapore | 416h |  |  |  |  |
| 88 | 1.3 | **3 Requirements Finalized in TFS** |  | 392d | 2014-03-03 A | 2015-09-01 |  | 50% | 196d |  | 0d |  | India | 6272h | 3136h |  |  |  |
| 89 | 1.3.1 | 3.1 Document Upload in TFS | manual | 392d | 2014-03-03 A | 2015-09-01 |  | 50% | 196d |  |  |  | India | 3136h | 1568h |  |  |  |
| 90 | 1.4 | **4 Design UI and Functionality** |  | 307d? | 2014-05-01 A | 2015-07-03 |  | 69% | 96.39d? |  | 132d |  | India | 21416h | 9542.15h |  |  |  |
| 91 | 1.4.1 | **4.1 System Admin Requirements** |  | 307d | 2014-05-01 A | 2015-07-03 |  | 80% | 60.51d |  |  |  | India | 8648h | 4092.8h | Pending clarification from CDGI |  |  |
| 92 | 1.4.1.1 | **4.1.1 Upload Main Menu** |  | 192d | 2014-06-01 | 2015-02-23 |  |  | 192d | 2014-06-26 |  |  | India | 1616h |  |  |  |  |
| 93 | 1.4.1.1.1 | 4.1.1.1 Vehicle Listing Upload |  | 20d | 2014-05-05 | 2014-07-02 |  |  |  |  | 394d | finish no earlier than 2014-07-02 | Singapore | 160h |  |  |  |  |
| 94 | 1.4.1.1.2 | 4.1.1.2 Bus Captain Listing | manual | 10d | 2015-02-10 | 2015-02-23 | 10 |  |  |  |  |  | Singapore | 80h |  |  | Waiting to get upload sample filel |  |

| ID | WBS | Task | Type | Duration | Start | Finish | Predecessors | Complete | Remaining | Total slack | Resources | Work | Actual work | Items Pending at Singapore | India Ebix Remarks | Items Pending at CDGI |
| --- | --- | --- | --- | --- | --- | --- | --- | --- | --- | --- | --- | --- | --- | --- | --- | --- |
| 95 | 1.4.1.2 | **4.1.2 User Admin** |  | 217d | 2014-05-01 A | 2015-02-27 | 11 | 48% | 112.11d | 0d | India | 2416h | 1932.81h |  |  |  |
| 96 | 1.4.1.2.1 | 4.1.2.1 Entity Details | manual | 15d | 2014-05-01 A | 2014-05-21 A | 12 | 100% |  |  | India | 120h | 120h | Singapore ebix to Provide functional details | Waiting for functionality |  |
| 97 | 1.4.1.2.2 | 4.1.2.2. User Groups | manual | 20d | 2015-02-02 A | 2015-02-27 | 13 | 18% | 16.49d |  | India | 160h | 28.11h | Singapore ebix to Provide functional details | completed |  |
| 98 | 1.4.1.2.3 | 4.1.2.3 User | manual | 20d | 2015-01-30 A | 2015-02-26 | 14 | 23% | 15.49d |  | India | 160h | 36.12h |  | waiting to get UI details for unwanted fields |  |
| 99 | 1.4.1.2.4 | 4.1.2.4 Department Master | manual | 10d | 2015-01-30 A | 2015-02-12 | 15 | 45% | 5.49d |  | India | 80h | 36.12h | Singapore ebix to Provide functional details |  |  |
| 100 | 1.4.1.2.5 | 4.1.2.5 Password Setup | manual | 5d | 2015-01-30 A | 2015-02-05 | 16 | 90% | 0.49d |  | India | 40h | 36.12h | Singapore ebix to Provide functional details | Waiting for functionality |  |
| 101 | 1.4.1.2.6 | 4.1.2.6 Release Locked Users | manual | 5d | 2015-01-30 A | 2015-02-05 | 17 | 90% | 0.49d |  | India | 40h | 36.12h | Singapore ebix to Provide functional details | Waiting for functionality |  |
| 102 | 1.4.1.2.7 | 4.1.2.7 Country for User Access | manual | 10d | 2015-01-30 A | 2015-02-12 | 18 | 45% | 5.49d |  | India | 80h | 36.12h | Singapore ebix to Provide functional details | Waiting for functionality |  |
| 103 | 1.4.1.3 | **4.1.3 Service Provider** |  | 10d | 2014-11-05 A | 2014-11-18 A |  | 100% |  |  | India | 560h | 560h |  |  |  |
| 104 | 1.4.1.3.1 | 4.1.3.1 Insurer Master | manual | 10d | 2014-11-05 A | 2014-11-18 A |  | 100% |  |  | India | 80h | 80h |  |  |  |
| 105 | 1.4.1.3.2 | 4.1.3.2 Surveyor Master | manual | 10d | 2014-11-05 A | 2014-11-18 A |  | 100% |  |  | India | 80h | 80h |  |  |  |
| 106 | 1.4.1.3.3 | 4.1.3.3 Lawyer Master | manual | 10d | 2014-11-05 A | 2014-11-18 A |  | 100% |  |  | India | 80h | 80h |  |  |  |
| 107 | 1.4.1.3.4 | 4.1.3.4 Workshop/Dept Master | manual | 10d | 2014-11-05 A | 2014-11-18 A |  | 100% |  |  | India | 80h | 80h |  |  |  |
| 108 | 1.4.1.3.5 | 4.1.3.5 Hospital Master | manual | 10d | 2014-11-05 A | 2014-11-18 A |  | 100% |  |  | India | 80h | 80h |  |  |  |
| 109 | 1.4.1.3.6 | 4.1.3.6 Adjuster Master | manual | 10d | 2014-11-05 A | 2014-11-18 A |  | 100% |  |  | India | 80h | 80h |  |  |  |
| 110 | 1.4.1.4 | 4.1.4 Nature Of Loss | manual | 15d | 2014-06-04 A | 2014-06-24 A |  | 100% |  |  | India | 120h | 120h |  |  |  |
| 111 | 1.4.1.5 | 4.1.5 Type of Loss | manual | 10d | 2014-06-04 A | 2014-06-17 A |  | 100% |  |  | India | 80h | 80h |  | Waiting for functionality |  |
| 112 | 1.4.1.6 | 4.1.6 Main Class Business | manual | 10d | 2014-06-04 A | 2014-06-17 A |  | 100% |  |  | India | 80h | 80h |  | Waiting for functionality |  |
| 113 | 1.4.1.7 | 4.1.7 Sub Class | manual | 10d | 2014-06-04 A | 2014-06-17 A |  | 100% |  |  | India | 80h | 80h |  | Waiting for functionality |  |
| 114 | 1.4.1.8 | 4.1.8 Claims Expense Master | manual | 10d | 2014-06-04 A | 2014-06-17 A |  | 100% |  |  | India | 80h | 80h |  | Waiting for functionality |  |
| 115 | 1.4.1.9 | 4.1.9 Claims Close Reason Master | manual | 10d | 2014-06-04 A | 2014-06-17 A |  | 100% |  |  | India | 80h | 80h |  | Waiting for functionality |  |
| 116 | 1.4.1.10 | 4.1.10 Currency Master | manual | 10d | 2014-06-04 A | 2014-06-17 A |  | 100% |  |  | India | 80h | 80h |  |  |  |
| 117 | 1.4.1.11 | 4.1.11 Exchange Rate Master | manual | 10d | 2014-06-04 A | 2014-06-17 A |  | 100% |  |  | India | 80h | 80h |  |  |  |
| 118 | 1.4.1.12 | 4.1.12 Vehicle Class | manual | 10d | 2014-06-04 A | 2014-06-17 A |  | 100% |  |  | India | 80h | 80h |  |  |  |
| 119 | 1.4.1.13 | 4.1.13 Vehicle Make | manual | 10d | 2014-06-04 A | 2014-06-17 A |  | 100% |  |  | India | 80h | 80h |  |  |  |
| 120 | 1.4.1.14 | 4.1.14 Vehicle Model | manual | 10d | 2014-06-04 A | 2014-06-17 A |  | 100% |  |  | India | 80h | 80h |  |  |  |
| 121 | 1.4.1.15 | 4.1.15 Insurance Policy | manual | 15d | 2014-06-04 A | 2014-06-24 A |  | 100% |  |  | India | 120h | 120h |  |  |  |
| 122 | 1.4.1.16 | 4.1.16 GST Setting | manual | 10d | 2014-06-04 A | 2014-06-17 A |  | 100% |  |  | India | 80h | 80h |  | Waiting for functionality |  |
| 123 | 1.4.1.17 | 4.1.17 Organization | manual | 20d | 2014-12-15 A | 2015-01-09 A |  | 100% |  |  | India | 160h | 160h |  |  |  |
| 124 | 1.4.1.18 | 4.1.18 Claim Officer Duty | manual | 10d | 2014-09-03 A | 2014-09-16 A |  | 100% |  |  | India | 80h | 80h |  |  | Pending clarification from CDGI |
| 125 | 1.4.1.19 | 4.1.19 LOU Rate | manual | 10d | 2014-09-10 A | 2014-09-23 A |  | 100% |  |  | India | 80h | 80h |  |  |  |
| 126 | 1.4.1.20 | 4.1.20 Interchange | manual | 10d | 2014-09-10 A | 2014-09-23 A |  | 100% |  |  | India | 80h | 80h |  |  |  |
| 127 | 1.4.1.21 | 4.1.21 Deductible | manual | 10d | 2014-12-15 A | 2014-12-26 A |  | 100% |  |  | India | 80h | 80h |  |  |  |

| ID | WBS | Task | Type | Duration | Start | Finish | Complete | Remaining | Total slack | Resources | Work | Actual work | Items Pending at CDGI | India Ebix Remarks |
| --- | --- | --- | --- | --- | --- | --- | --- | --- | --- | --- | --- | --- | --- | --- |
| 128 | 1.4.2 | **4.2 Upload** |  | 20d | 2015-01-29 A | 2015-02-25 | 27% | 14.67d |  | India | 640h | 184h | Pending clarification from CDGI | Ui start development |
| 129 | 1.4.2.1 | 4.2.1 TAC Upload | manual | 20d | 2015-01-29 A | 2015-02-25 | 40% | 12d |  | India | 160h | 64h | Pending clarification from CDGI | Waiting for functionality |
| 130 | 1.4.2.2 | 4.2.2 Claim File Upload | manual | 20d | 2015-01-29 A | 2015-02-25 | 40% | 12d |  | India | 160h | 64h | Pending clarification from CDGI | Waiting for functionality |
| 131 | 1.4.2.3 | 4.2.3 SAP File Upload | manual | 20d | 2015-01-29 | 2015-02-25 |  |  |  | India | 160h |  | Pending clarification from CDGI | Waiting for functionality |
| 132 | 1.4.3 | **4.3 Claim** |  | 156d | 2014-10-02 A | 2015-05-07 | 89% | 17.51d | 0d | India | 6624h | 4366.92h |  |  |
| 133 | 1.4.3.1 | **4.3.1 Buses** |  | 96d | 2014-10-02 A | 2015-02-12 | 99% | 0.92d |  | India | 4648h | 4118.92h |  |  |
| 134 | 1.4.3.1.1 | 4.3.1.1 Accident | manual | 31d | 2014-10-02 A | 2014-11-13 A | 100% |  |  | India | 248h | 248h |  |  |
| 135 | 1.4.3.1.2 | 4.3.1.2 Claim | manual | 31d | 2014-10-02 A | 2014-11-13 A | 100% |  |  | India | 248h | 248h |  |  |
| 136 | 1.4.3.1.3 | 4.3.1.3 Service Provider | manual | 31d | 2014-10-02 A | 2014-11-13 A | 100% |  |  | India | 248h | 248h |  |  |
| 137 | 1.4.3.1.4 | 4.3.1.4 Notes | manual | 31d | 2014-10-02 A | 2014-11-13 A | 100% |  |  | India | 248h | 248h |  |  |
| 138 | 1.4.3.1.5 | 4.3.1.5 Tasks | manual | 31d | 2014-10-02 A | 2014-11-13 A | 100% |  |  | India | 248h | 248h |  |  |
| 139 | 1.4.3.1.6 | 4.3.1.6 Attachment | manual | 31d | 2014-10-02 A | 2014-11-13 A | 100% |  |  | India | 248h | 248h |  |  |
| 140 | 1.4.3.1.7 | 4.3.1.7 Dairy | manual | 31d | 2014-10-02 A | 2014-11-13 A | 100% |  |  | India | 248h | 248h |  |  |
| 141 | 1.4.3.1.8 | 4.3.1.8 Reassigned Dairy | manual | 31d | 2014-10-02 A | 2014-11-13 A | 100% |  |  | India | 248h | 248h |  |  |
| 142 | 1.4.3.1.9 | 4.3.1.9 Reserve |  | 31d | 2014-11-21 A | 2015-01-02 A | 100% |  |  | India | 248h | 248h |  |  |
| 143 | 1.4.3.1.10 | 4.3.1.10 Reserve History | manual | 31d | 2014-11-21 A | 2015-01-02 A | 100% |  |  | India | 248h | 248h |  |  |
| 144 | 1.4.3.1.11 | 4.3.1.11 Mandate | manual | 31d | 2014-11-21 A | 2015-01-02 A | 100% |  |  | India | 248h | 248h |  |  |
| 145 | 1.4.3.1.12 | 4.3.1.12 Mandate History | manual | 31d | 2014-11-21 A | 2015-01-02 A | 100% |  |  | India | 248h | 248h |  |  |
| 146 | 1.4.3.1.13 | 4.3.1.13 Payment | manual | 31d | 2014-12-05 A | 2015-01-16 A | 100% |  |  | India | 248h | 248h |  |  |
| 147 | 1.4.3.1.14 | 4.3.1.14 Payment History | manual | 31d | 2014-12-05 A | 2015-01-16 A | 100% |  |  | India | 248h | 248h |  |  |
| 148 | 1.4.3.1.15 | 4.3.1.15 Recovery | manual | 31d | 2015-01-01 A | 2015-02-12 | 85% | 4.65d |  | India | 248h | 210.8h |  | Waiting for functionality |
| 149 | 1.4.3.1.16 | 4.3.1.16 Transaction History | manual | 20d | 2014-10-02 A | 2014-10-29 A | 100% |  |  | India | 160h | 160h |  |  |
| 150 | 1.4.3.2 | 4.3.2 Trains | manual | 31d | 2014-10-02 A | 2014-11-13 A | 100% |  |  | India | 248h | 248h |  |  |
| 151 | 1.4.3.3 | 4.3.3 Taxis | manual | 20d | 2015-03-10 | 2015-04-06 |  |  |  | India | 160h |  |  | Waiting for functionality |
| 152 | 1.4.3.4 | 4.3.4 Rental Cars | manual | 20d | 2015-04-10 | 2015-05-07 |  |  |  | India | 160h |  |  | Waiting for functionality |
| 153 | 1.4.3.5 | 4.3.5 Private Cars | manual | 20d | 2015-04-10 | 2015-05-07 |  |  |  | India | 160h |  |  | Waiting for functionality |

| ID | WBS | Task | Type | Duration | Start | Finish | Predecessors | Complete | Remaining | Actual start | Total slack | Resources | Work | Actual work | Items Pending at CDGI | India Ebix Remarks | Description |
| --- | --- | --- | --- | --- | --- | --- | --- | --- | --- | --- | --- | --- | --- | --- | --- | --- | --- |
| 154 | 1.4.4 | **4.4 Dashboard** |  | 15d | 2015-02-10 A | 2015-03-02 |  | 10% | 13.5d |  |  | India | 240h | 12h | Pending clarification from CDGI | UI of permission start development |  |
| 155 | 1.4.4.1 | 4.4.1 Sections of Dashboard as per User Group | manual | 15d | 2015-02-10 A | 2015-03-02 |  | 10% | 13.5d |  |  | India | 120h | 12h | Pending clarification from CDGI | Waiting for functionality |  |
| 156 | 1.4.5 | **4.5 Diary Listing** |  | 10d | 2015-02-10 | 2015-02-23 |  |  |  |  | 0d | India | 320h |  |  | Waiting for functionality |  |
| 157 | 1.4.5.1 | 4.5.1 Diary Items | manual | 10d | 2015-02-10 | 2015-02-23 |  |  |  |  |  | India | 80h |  |  | Waiting for functionality |  |
| 158 | 1.4.5.2 | 4.5.2 Assigned Tasks | manual | 10d | 2015-02-10 | 2015-02-23 |  |  |  |  |  | India | 80h |  |  | Waiting for functionality |  |
| 159 | 1.4.5.3 | 4.5.3 Escalation Tasks | manual | 10d | 2015-02-10 | 2015-02-23 |  |  |  |  |  | India | 80h |  |  | Waiting for functionality |  |
| 160 | 1.4.6 | **4.6 Claim Enquiry** |  | 70d | 2015-01-29 A | 2015-05-06 |  | 39% | 42.5d |  |  | India | 1120h | 404h | Pending clarification from CDGI | Waiting for functionality |  |
| 161 | 1.4.6.1 | 4.6.1 Claims | manual | 30d | 2015-01-29 A | 2015-03-11 |  | 40% | 18d |  |  | India | 240h | 96h |  | Waiting for functionality |  |
| 162 | 1.4.6.2 | 4.6.2 Claim Documents Printing | manual | 30d | 2015-03-20 A | 2015-04-30 |  | 25% | 22.5d |  |  | India | 240h | 60h |  | Waiting for functionality |  |
| 163 | 1.4.6.3 | 4.6.3 Job Schedule Enquiry | manual | 10d | 2015-01-29 A | 2015-02-11 |  | 80% | 2d |  |  | India | 80h | 64h |  | Waiting for functionality |  |
| 164 | 1.4.7 | **4.7 Document Generation Module** |  | 60d | 2015-03-25 | 2015-06-16 |  |  |  |  |  | India | 960h |  | Pending clarification from CDGI | Waiting for functionality |  |
| 165 | 1.4.7.1 | 4.7.1 Document Generation Criteria | manual | 60d | 2015-03-25 | 2015-06-16 |  |  |  |  |  | India | 480h |  |  | Waiting for functionality | new Task added |
| 166 | 1.4.8 | **4.8 Document Print** |  | 30d | 2015-03-25 | 2015-05-05 |  |  |  |  |  | India | 720h |  | Pending clarification from CDGI |  |  |
| 167 | 1.4.8.1 | 4.8.1 Claim Payment Document Printing | manual | 30d | 2015-03-25 | 2015-05-05 |  |  |  |  |  | India | 240h |  | waiting To Get Details | Waiting for functionality |  |
| 168 | 1.4.8.2 | 4.8.2 Claim Registration Document Printing | manual | 30d | 2015-03-25 | 2015-05-05 |  |  |  |  |  | India | 240h |  |  | Waiting for functionality |  |
| 169 | 1.4.9 | 4.9 Unreported Claim | manual | 10d | 2015-02-05 | 2015-02-18 |  |  |  |  |  | India | 80h |  | Pending clarification from CDGI | Waiting for functionality |  |
| 170 | 1.4.10 | **4.10 Security Management System** |  | 30d | 2014-11-10 A | 2014-12-19 |  | 85% | 4.5d |  |  | India | 480h | 204h |  |  |  |
| 171 | 1.4.10.1 | 4.10.1 Permission Screen UI | manual | 15d | 2014-11-10 A | 2014-11-28 |  | 85% | 2.25d |  |  | India | 120h | 102h | waiting To Get Details |  | New Task added |
| 172 | 1.4.10.2 | 4.10.2 Permission screen functionality | manual | 15d | 2014-11-10 A | 2014-11-28 |  | 85% | 2.25d |  |  | India | 120h | 102h | waiting To Get Details |  |  |
| 173 | 1.4.11 | 4.11 UI and Design signed off by client | manual | 1d? | 2014-05-01 | 2014-05-01 |  |  |  |  |  | India | 8h |  |  |  |  |
| 174 | 1.5 | **5 Iterative Development and Testing** |  | 305d | 2014-05-22 A | 2015-07-22 | 88 | 43% | 174.91d |  | 0d | India | 22600h | 7809.82h |  |  |  |
| 175 | 1.5.1 | **5.1 System Admin** |  | 240d | 2014-07-01 | 2015-06-01 |  | 86% | 33.78d | 2014-05-22 |  | India | 7056h | 4560h |  |  |  |
| 176 | 1.5.1.1 | **5.1.1 Upload Main Menu** |  | 129d | 2014-09-09 A | 2015-03-06 | 92 | 75% | 32.25d |  | 0d | India | 240h | 200h |  |  |  |
| 177 | 1.5.1.1.1 | 5.1.1.1 Vehicle Listing Upload | manual | 10d | 2014-09-09 A | 2014-09-22 A | 93 | 100% |  |  |  | India | 80h | 80h |  |  |  |
| 178 | 1.5.1.1.2 | 5.1.1.2 Bus Captain Listing | manual | 10d | 2015-02-23 A | 2015-03-06 | 94 | 50% | 5d |  |  | India | 80h | 40h |  | Waiting for functionality |  |

| ID | WBS | Task | Type | Duration | Start | Finish | Predecessors | Complete | Remaining | Resources | Work | Actual work | Items Pending at CDGI |
| --- | --- | --- | --- | --- | --- | --- | --- | --- | --- | --- | --- | --- | --- |
| 179 | 1.5.1.2 | **5.1.2 User Admin** |  | 212d | 2014-05-22 A | 2015-03-13 A | 95 | 100% |  | India | 2256h | 2256h |  |
| 180 | 1.5.1.2.1 | 5.1.2.1 Entity Details | manual | 10d | 2014-05-22 A | 2014-06-04 A | 96 | 100% |  | India | 80h | 80h |  |
| 181 | 1.5.1.2.2 | 5.1.2.2. User Groups | manual | 10d | 2015-03-02 A | 2015-03-13 A | 97 | 100% |  | India | 80h | 80h |  |
| 182 | 1.5.1.2.3 | 5.1.2.3 User | manual | 10d | 2015-02-27 A | 2015-03-12 A | 98 | 100% |  | India | 80h | 80h |  |
| 183 | 1.5.1.2.4 | 5.1.2.4 Department Master | manual | 10d | 2015-02-13 A | 2015-02-26 A | 99 | 100% |  | India | 80h | 80h |  |
| 184 | 1.5.1.2.5 | 5.1.2.5 Password Setup | manual | 10d | 2015-02-06 A | 2015-02-19 A | 100 | 100% |  | India | 80h | 80h |  |
| 185 | 1.5.1.2.6 | 5.1.2.6 Release Locked Users | manual | 10d | 2015-02-06 A | 2015-02-19 A | 101 | 100% |  | India | 80h | 80h |  |
| 186 | 1.5.1.2.7 | 5.1.2.7 Country for User Access | manual | 10d | 2015-02-13 A | 2015-02-26 A | 102 | 100% |  | India | 80h | 80h |  |
| 187 | 1.5.1.3 | **5.1.3 Service Provider** |  | 15d | 2014-11-19 A | 2014-12-09 |  | 99% | 0d | India | 600h | 480h |  |
| 188 | 1.5.1.3.1 | 5.1.3.1 Insurer Master | manual | 10d | 2014-11-19 A | 2014-12-02 A | 104 | 100% |  | India | 80h | 80h |  |
| 189 | 1.5.1.3.2 | 5.1.3.2 Surveyor Master | manual | 10d | 2014-11-19 A | 2014-12-02 A | 105 | 100% |  | India | 80h | 80h |  |
| 190 | 1.5.1.3.3 | 5.1.3.3 Lawyer Master | manual | 10d | 2014-11-19 A | 2014-12-02 A | 106 | 100% |  | India | 80h | 80h |  |
| 191 | 1.5.1.3.4 | 5.1.3.4 Workshop/Dept Master | manual | 10d | 2014-11-25 A | 2014-12-08 A | 107 | 100% |  | India | 80h | 80h |  |
| 192 | 1.5.1.3.5 | 5.1.3.5 Hospital Master | manual | 10d | 2014-11-26 A | 2014-12-09 A | 108 | 100% |  | India | 80h | 80h |  |
| 193 | 1.5.1.3.6 | 5.1.3.6 Adjuster Master | manual | 10d | 2014-11-25 A | 2014-12-08 A | 109 | 100% |  | India | 80h | 80h |  |
| 194 | 1.5.1.4 | 5.1.4 Nature Of Loss | manual | 10d | 2014-06-25 A | 2014-07-08 A | 110 | 100% |  | India | 80h | 80h |  |
| 195 | 1.5.1.5 | 5.1.5 Type of Loss | manual | 10d | 2014-06-18 A | 2014-07-01 A | 111 | 100% |  | India | 80h | 80h |  |
| 196 | 1.5.1.6 | 5.1.6 Main Class Business | manual | 10d | 2014-06-18 A | 2014-07-01 A | 112 | 100% |  | India | 80h | 80h |  |
| 197 | 1.5.1.7 | 5.1.7 Sub Class | manual | 10d | 2014-06-18 A | 2014-07-01 A | 113 | 100% |  | India | 80h | 80h |  |
| 198 | 1.5.1.8 | 5.1.8 Claims Expense Master | manual | 10d | 2014-06-18 A | 2014-07-01 A | 114 | 100% |  | India | 80h | 80h |  |
| 199 | 1.5.1.9 | 5.1.9 Claims Close Reason Master | manual | 10d | 2014-06-18 A | 2014-07-01 A | 115 | 100% |  | India | 80h | 80h |  |
| 200 | 1.5.1.10 | 5.1.10 Currency Master | manual | 10d | 2014-06-18 A | 2014-07-01 A | 116 | 100% |  | India | 80h | 80h |  |
| 201 | 1.5.1.11 | 5.1.11 Exchange Rate Master | manual | 10d | 2014-06-18 A | 2014-07-01 A | 117 | 100% |  | India | 80h | 80h |  |
| 202 | 1.5.1.12 | 5.1.12 Vehicle Class | manual | 10d | 2014-06-18 A | 2014-07-01 A | 118 | 100% |  | India | 80h | 80h |  |
| 203 | 1.5.1.13 | 5.1.13 Vehicle Make | manual | 10d | 2014-06-18 A | 2014-07-01 A | 119 | 100% |  | India | 80h | 80h |  |
| 204 | 1.5.1.14 | 5.1.14 Vehicle Model | manual | 10d | 2014-06-18 A | 2014-07-01 A | 120 | 100% |  | India | 80h | 80h |  |
| 205 | 1.5.1.15 | 5.1.15 Insurance Policy | manual | 10d | 2014-06-25 A | 2014-07-08 A | 121 | 100% |  | India | 80h | 80h |  |
| 206 | 1.5.1.16 | 5.1.16 GST Setting | manual | 10d | 2014-06-18 A | 2014-07-01 A | 122 | 100% |  | India | 80h | 80h |  |
| 207 | 1.5.1.17 | 5.1.17 Organization | manual | 10d | 2015-01-12 A | 2015-01-23 A | 123 | 100% |  | India | 80h | 80h |  |
| 208 | 1.5.1.18 | 5.1.18 Claim Officer Duty | manual | 10d | 2014-09-17 A | 2014-09-30 A | 124 | 100% |  | India | 80h | 80h |  |
| 209 | 1.5.1.19 | 5.1.19 LOU Rate | manual | 10d | 2014-09-24 A | 2014-10-07 A | 125 | 100% |  | India | 80h | 80h |  |
| 210 | 1.5.1.20 | 5.1.20 Interchange | manual | 10d | 2014-09-24 A | 2014-10-07 A | 126 | 100% |  | India | 80h | 80h |  |
| 211 | 1.5.1.21 | 5.1.21 Deductible | manual | 10d | 2014-12-29 A | 2015-01-09 A | 127 | 100% |  | India | 80h | 80h |  |
| 212 | 1.5.1.22 | 5.1.22 User Manual | manual | 30d | 2015-02-02 A | 2015-03-13 |  | 7% | 28d | India | 240h | 16h | waiting To Get Details |
| 213 | 1.5.1.23 | 5.1.23 Test Approach/Test Cases | manual | 5d | 2015-02-02 A | 2015-02-06 A |  | 100% |  | India | 40h | 40h | waiting To Get Details |
| 214 | 1.5.1.24 | 5.1.24 QA Testing | manual | 20d | 2015-02-11 A | 2015-03-10 |  | 80% | 4d | India | 160h | 128h | waiting To Get Details |
| 215 | 1.5.1.25 | 5.1.25 UAT | manual | 20d | 2015-03-10 | 2015-04-06 |  |  |  | Singapore | 160h |  | waiting To Get Details |

| ID | WBS | Task | Type | Duration | Start | Finish | Predecessors | Complete | Remaining | Actual start | Resources | Work | Actual work | Items Pending at CDGI | India Ebix Remarks |
| --- | --- | --- | --- | --- | --- | --- | --- | --- | --- | --- | --- | --- | --- | --- | --- |
| 216 | 1.5.2 | **5.2 Upload** |  | 58d | 2015-01-30 | 2015-04-21 | 128 |  |  |  | India | 1240h |  | waiting to get Details |  |
| 217 | 1.5.2.1 | 5.2.1 TAC Upload | manual | 25d | 2015-02-26 | 2015-04-01 | 129 |  |  |  | India | 200h |  | waiting to get Details | Waiting for functionality |
| 218 | 1.5.2.2 | 5.2.2 Claim File Upload | manual | 25d | 2015-02-26 | 2015-04-01 | 130 |  |  |  | India | 200h |  |  | Waiting for functionality |
| 219 | 1.5.2.3 | 5.2.3 SAP File Upload | manual | 25d | 2015-02-26 | 2015-04-01 | 131 |  |  |  | India | 200h |  |  | Waiting for functionality |
| 220 | 1.5.2.4 | 5.2.4 User Manual | manual | 5d | 2015-04-02 | 2015-04-08 | 219 |  |  |  | India | 40h |  |  |  |
| 221 | 1.5.2.5 | 5.2.5 Test Approach/Test Cases | manual | 2d | 2015-04-01 | 2015-04-02 | 131 |  |  |  | India | 16h |  |  |  |
| 222 | 1.5.2.6 | 5.2.6 QA Testing | manual | 5d | 2015-04-01 | 2015-04-07 | 131 |  |  |  | Singapore | 40h |  |  |  |
| 223 | 1.5.2.7 | 5.2.7 UAT | manual | 10d | 2015-04-08 | 2015-04-21 |  |  |  |  | CDGI | 80h |  |  |  |
| 224 | 1.5.3 | **5.3 Claim** |  | 179d | 2014-11-14 | 2015-07-22 |  | 40% | 107.84d | 2014-10-30 | India | 6816h | 1736.4h |  |  |
| 225 | 1.5.3.1 | **5.3.1 Buses** |  | 127d | 2014-11-14 | 2015-05-11 | 133 | 68% | 40.88d | 2014-10-30 | India | 3048h | 1378h |  |  |
| 226 | 1.5.3.1.1 | 5.3.1.1 Accident | manual | 10d | 2014-11-14 A | 2014-11-27 A | 134 | 100% |  |  | India | 80h | 80h |  |  |
| 227 | 1.5.3.1.2 | 5.3.1.2 Claim | manual | 12d | 2014-11-14 A | 2014-12-01 A | 135 | 100% |  |  | India | 96h | 96h |  |  |
| 228 | 1.5.3.1.3 | 5.3.1.3 Service Provider | manual | 15d | 2014-11-14 A | 2014-12-04 A | 136 | 100% |  |  | India | 120h | 120h |  |  |
| 229 | 1.5.3.1.4 | 5.3.1.4 Notes | manual | 10d | 2014-11-14 A | 2014-11-27 A | 137 | 100% |  |  | India | 80h | 80h |  |  |
| 230 | 1.5.3.1.5 | 5.3.1.5 Tasks | manual | 12d | 2014-11-14 A | 2014-12-01 A | 138 | 100% |  |  | India | 96h | 96h |  |  |
| 231 | 1.5.3.1.6 | 5.3.1.6 Attachment | manual | 12d | 2014-11-14 A | 2014-12-01 A | 139 | 100% |  |  | India | 96h | 96h |  |  |
| 232 | 1.5.3.1.7 | 5.3.1.7 Dairy | manual | 20d | 2014-11-14 A | 2014-12-11 A | 140 | 100% |  |  | India | 160h | 160h |  |  |
| 233 | 1.5.3.1.8 | 5.3.1.8 Reassigned Dairy | manual | 10d | 2014-11-14 A | 2014-11-27 A | 141 | 100% |  |  | India | 80h | 80h |  |  |
| 234 | 1.5.3.1.9 | 5.3.1.9 Reserve | manual | 10d | 2015-01-02 A | 2015-01-15 | 142 | 85% | 1.5d |  | India | 80h | 68h |  |  |
| 235 | 1.5.3.1.10 | 5.3.1.10 Reserve History | manual | 5d | 2015-01-16 A | 2015-01-22 | 234 | 85% | 0.75d |  | India | 40h | 34h |  |  |
| 236 | 1.5.3.1.11 | 5.3.1.11 Mandate | manual | 30d | 2015-01-02 A | 2015-02-12 | 144 | 28% | 21.5d |  | India | 240h | 68h |  |  |
| 237 | 1.5.3.1.12 | 5.3.1.12 Mandate History | manual | 5d | 2015-01-16 | 2015-01-22 | 236 |  |  |  | India | 40h |  |  | Waiting for functionality |
| 238 | 1.5.3.1.13 | 5.3.1.13 Payment | manual | 30d | 2015-01-19 A | 2015-02-27 | 146 | 13% | 26d |  | India | 240h | 32h |  | Waiting for functionality |
| 239 | 1.5.3.1.14 | 5.3.1.14 Payment History | manual | 5d | 2015-03-02 | 2015-03-06 | 238 |  |  |  | India | 40h |  |  | Waiting for functionality |
| 240 | 1.5.3.1.15 | 5.3.1.15 Recovery | manual | 30d | 2015-02-10 A | 2015-03-23 | 148 | 27% | 22d |  | India | 240h | 64h |  |  |
| 241 | 1.5.3.1.16 | 5.3.1.16 Transaction History | manual | 38d | 2014-10-30 A | 2014-12-22 A | 149 | 100% |  |  | India | 304h | 304h |  |  |
| 242 | 1.5.3.2 | 5.3.2 Trains | manual | 127d | 2014-11-14 A | 2015-05-11 | 150 | 35% | 82.2d |  | India | 1016h | 358.4h |  |  |
| 243 | 1.5.3.3 | 5.3.3 Taxis | manual | 30d | 2015-04-07 | 2015-05-18 | 151 |  |  |  | India | 240h |  |  | Waiting for functionality |
| 244 | 1.5.3.4 | 5.3.4 Rental Cars | manual | 30d | 2015-05-08 | 2015-06-18 | 152 |  |  |  | India | 240h |  |  | Waiting for functionality |
| 245 | 1.5.3.5 | 5.3.5 Private Cars | manual | 30d | 2015-05-08 | 2015-06-18 | 153 |  |  |  | India | 240h |  |  | Waiting for functionality |
| 246 | 1.5.3.6 | 5.3.6 User Manual | manual | 30d | 2015-05-11 | 2015-06-19 |  |  |  |  | India | 240h |  |  | Waiting for functionality |
| 247 | 1.5.3.7 | 5.3.7 Test Approach/Test Cases | manual | 5d | 2015-05-22 | 2015-05-28 |  |  |  |  | India | 40h |  |  |  |
| 248 | 1.5.3.8 | 5.3.8 QA Testing | manual | 25d | 2015-05-28 | 2015-07-01 |  |  |  |  | Singapore | 200h |  |  |  |
| 249 | 1.5.3.9 | 5.3.9 UAT | manual | 15d | 2015-07-02 | 2015-07-22 | 248 |  |  |  | CDGI | 120h |  |  |  |

| ID | WBS | Task | Type | Duration | Start | Finish | Predecessors | Complete | Remaining | Actual start | Resources | Work | Actual work | India Ebix Remarks | Items Pending at CDGI |
| --- | --- | --- | --- | --- | --- | --- | --- | --- | --- | --- | --- | --- | --- | --- | --- |
| 250 | 1.5.4 | **5.4 Dashboard** |  | 34d | 2015-02-12 | 2015-03-31 |  |  |  |  | India | 528h |  | Waiting for functionality |  |
| 251 | 1.5.4.1 | 5.4.1 Sections of Dashboard per User Group | manual | 10d | 2015-02-12 | 2015-02-25 |  |  |  |  | India | 80h |  | pending for requirement detail | waiting To Get Details |
| 252 | 1.5.4.2 | 5.4.2 User Manual | manual | 10d | 2015-02-26 | 2015-03-11 | 251 |  |  |  | India | 80h |  |  |  |
| 253 | 1.5.4.3 | 5.4.3 Test Approach/Test Cases | manual | 5d | 2015-02-26 | 2015-03-04 | 251 |  |  |  | India | 40h |  |  |  |
| 254 | 1.5.4.4 | 5.4.4 QA Testing | manual | 2d | 2015-02-26 | 2015-02-27 | 251 |  |  |  | Singapore | 16h |  |  |  |
| 255 | 1.5.4.5 | 5.4.5 UAT | manual | 5d | 2015-03-12 | 2015-03-18 | 252 |  |  |  | CDGI | 40h |  |  |  |
| 256 | 1.5.5 | **5.5 Diary Listing** |  | 27d | 2015-02-24 | 2015-04-01 |  |  |  |  | India | 672h |  |  |  |
| 257 | 1.5.5.1 | 5.5.1 Diary Items | manual | 10d | 2015-02-24 | 2015-03-09 | 157 |  |  |  | India | 80h |  | Waiting for functionality | waiting To Get Details |
| 258 | 1.5.5.2 | 5.5.2 Assigned Tasks | manual | 10d | 2015-02-24 | 2015-03-09 | 158 |  |  |  | India | 80h |  | Waiting for functionality | waiting To Get Details |
| 259 | 1.5.5.3 | 5.5.3 Escalation Tasks | manual | 17d | 2015-02-24 | 2015-03-18 | 159 |  |  |  | India | 136h |  | Waiting for functionality | waiting To Get Details |
| 260 | 1.5.5.4 | 5.5.4 User Manual | manual | 5d | 2015-03-19 | 2015-03-25 | 259 |  |  |  | India | 40h |  | Waiting for functionality | waiting To Get Details |
| 261 | 1.5.5.5 | 5.5.5 Test Approach/Test Cases | manual | 5d | 2015-03-26 | 2015-04-01 | 260 |  |  |  | India | 40h |  |  | waiting To Get Details |
| 262 | 1.5.5.6 | 5.5.6 QA Testing | manual | 5d | 2015-03-26 | 2015-04-01 | 260 |  |  |  | Singapore | 40h |  |  | waiting To Get Details |
| 263 | 1.5.5.7 | 5.5.7 UAT | manual | 5d | 2015-03-25 | 2015-03-31 | 260 |  |  |  | CDGI | 40h |  |  | waiting To Get Details |
| 264 | 1.5.6 | **5.6 Claim Enquiry** |  | 67d | 2015-03-11 | 2015-06-11 | 160 | 18% | 54.82d | 2015-03-12 | India | 976h | 80h | Waiting for functionality |  |
| 265 | 1.5.6.1 | 5.6.1 Claims | manual | 15d | 2015-03-12 A | 2015-04-01 | 161 | 40% | 9d |  | India | 120h | 48h | Waiting for functionality | waiting To Get Details |
| 266 | 1.5.6.2 | 5.6.2 Claim Documents Printing | manual | 10d | 2015-05-01 | 2015-05-14 | 162 |  |  |  | India | 80h |  | Waiting for functionality | waiting To Get Details |
| 267 | 1.5.6.3 | 5.6.3 Job Schedule Enquiry | manual | 10d | 2015-05-15 A | 2015-05-28 | 266 | 40% | 6d |  | India | 80h | 32h | Waiting for functionality | waiting To Get Details |
| 268 | 1.5.6.4 | 5.6.4 User Manual | manual | 5d | 2015-05-29 | 2015-06-04 | 267 |  |  |  | India | 40h |  |  | waiting To Get Details |
| 269 | 1.5.6.5 | 5.6.5 Test Approach/Test Cases | manual | 5d | 2015-05-29 | 2015-06-04 | 267 |  |  |  | India | 40h |  |  | waiting To Get Details |
| 270 | 1.5.6.6 | 5.6.6 QA Testing | manual | 5d | 2015-05-29 | 2015-06-04 | 267 |  |  |  | Singapore | 40h |  |  | waiting To Get Details |
| 271 | 1.5.6.7 | 5.6.7 UAT | manual | 5d | 2015-06-05 | 2015-06-11 | 268 |  |  |  | CDGI | 40h |  |  | waiting To Get Details |
| 272 | 1.5.7 | **5.7 Document Generation Module** |  | 27d | 2015-04-23 | 2015-05-29 |  |  |  |  | India | 496h |  | Waiting for functionality |  |
| 273 | 1.5.7.1 | 5.7.1 Document Generation Criteria | manual | 15d | 2015-04-23 | 2015-05-13 | 165 |  |  |  | India | 120h |  | Waiting for functionality |  |
| 274 | 1.5.7.2 | 5.7.2 User Manual | manual | 5d | 2015-05-14 | 2015-05-20 | 273 |  |  |  | India | 40h |  |  | waiting To Get Details |
| 275 | 1.5.7.3 | 5.7.3 Test Approach/Test Cases | manual | 5d | 2015-05-21 | 2015-05-27 | 273 |  |  |  | India | 40h |  |  | waiting To Get Details |
| 276 | 1.5.7.4 | 5.7.4 QA Testing | manual | 5d | 2015-05-21 | 2015-05-27 | 273 |  |  |  | Singapore | 40h |  |  | waiting To Get Details |
| 277 | 1.5.7.5 | 5.7.5 UAT | manual | 5d | 2015-05-25 | 2015-05-29 | 274 |  |  |  | CDGI | 40h |  |  | waiting To Get Details |

| ID | WBS | Task | Type | Duration | Start | Finish | Predecessors | Complete | Remaining | Resources | Work | Actual work | Items Pending at CDGI | India Ebix Remarks | Description |
| --- | --- | --- | --- | --- | --- | --- | --- | --- | --- | --- | --- | --- | --- | --- | --- |
| 278 | 1.5.8 | **5.8 Document Print** |  | 25d | 2015-05-06 | 2015-06-09 |  |  |  | India | 560h |  |  |  |  |
| 279 | 1.5.8.1 | 5.8.1 Claim Payment Document Printing | manual | 10d | 2015-05-06 | 2015-05-19 | 167 |  |  | India | 80h |  | waiting To Get Details | Waiting for functionality |  |
| 280 | 1.5.8.2 | 5.8.2 Claim Registration Document Printing | manual | 10d | 2015-05-06 | 2015-05-19 | 168 |  |  | India | 80h |  | waiting To Get Details | Waiting for functionality |  |
| 281 | 1.5.8.3 | 5.8.3 User Manual | manual | 5d | 2015-05-20 | 2015-05-26 | 280 |  |  | India | 40h |  | waiting To Get Details |  | on Going |
| 282 | 1.5.8.4 | 5.8.4 Test Approach/Test Cases | manual | 5d | 2015-05-20 | 2015-05-26 | 280 |  |  | India | 40h |  | waiting To Get Details |  |  |
| 283 | 1.5.8.5 | 5.8.5 QA Testing | manual | 5d | 2015-05-20 | 2015-05-26 | 280 |  |  | Singapore | 40h |  | waiting To Get Details |  |  |
| 284 | 1.5.8.6 | 5.8.6 UAT | manual | 10d | 2015-05-27 | 2015-06-09 | 281 |  |  | CDGI | 80h |  | waiting To Get Details |  |  |
| 285 | 1.5.9 | **5.9 Unreported Claim Menu** |  | 49d | 2015-01-30 | 2015-04-08 |  |  |  | India | 712h |  |  |  |  |
| 286 | 1.5.9.1 | 5.9.1 UI and functionality implementation | manual | 10d | 2015-02-19 | 2015-03-04 | 169 |  |  | India | 80h |  | waiting To Get Details | Waiting for functionality |  |
| 287 | 1.5.9.2 | 5.9.2 User Manual | manual | 10d | 2015-03-05 | 2015-03-18 | 286 |  |  | India | 80h |  | waiting To Get Details |  |  |
| 288 | 1.5.9.3 | 5.9.3 Test Approach/Test Cases | manual | 5d | 2015-03-19 | 2015-03-25 | 286 |  |  | India | 40h |  | waiting To Get Details |  |  |
| 289 | 1.5.9.4 | 5.9.4 QA Testing | manual | 5d | 2015-03-19 | 2015-03-25 | 287 |  |  | Singapore | 40h |  | waiting To Get Details |  |  |
| 290 | 1.5.9.5 | 5.9.5 UAT | manual | 10d | 2015-03-26 | 2015-04-08 | 287 |  |  | CDGI | 80h |  | waiting To Get Details |  |  |
| 291 | 1.5.10 | **5.10 Security Management System** |  | 86d | 2014-12-01 A | 2015-03-30 |  | 18% | 70.74d | India | 1104h | 88h |  |  |  |
| 292 | 1.5.10.1 | 5.7.1 Permission Screen UI and Functionality | manual | 10d | 2014-12-01 | 2014-12-12 | 171 |  |  |  |  |  | waiting To Get Details | Waiting for functionality |  |
| 293 | 1.5.10.2 | 5.7.2 User Manual | manual | 30d | 2015-02-02 | 2015-03-13 |  |  |  | India | 240h |  | waiting To Get Details |  | On Going |
| 294 | 1.5.10.3 | 5.7.3 Test Approach/Test Cases | manual | 5d | 2015-02-02 A | 2015-02-06 A | 292 | 100% |  | India | 40h | 40h | waiting To Get Details |  |  |
| 295 | 1.5.10.4 | 5.7.4 QA Testing | manual | 6d | 2014-12-15 A | 2014-12-22 A | 292 | 100% |  | Singapore | 48h | 48h | waiting To Get Details |  |  |
| 296 | 1.5.10.5 | 5.7.5 UAT | manual | 11d | 2015-03-16 | 2015-03-30 | 293 |  |  | CDGI | 88h |  | waiting To Get Details |  |  |
| 297 | 1.6 | **6 QA Test Scripts** |  | 20d | 2015-07-23 | 2015-08-19 | 174 |  |  | India | 320h |  |  |  |  |
| 298 | 1.6.1 | 6.1 Testing Approach Development/Confirmation | manual | 5d | 2015-07-23 | 2015-07-29 |  |  |  | India | 40h |  |  |  |  |
| 299 | 1.6.2 | 6.2 Test Condition Development | manual | 5d | 2015-08-06 | 2015-08-12 | 298 |  |  | India | 40h |  |  |  |  |
| 300 | 1.6.3 | 6.3 Test Script Development | manual | 5d | 2015-08-20 | 2015-08-26 | 299 |  |  | India | 40h |  |  |  |  |
| 301 | 1.6.4 | 6.4 Expected Results Development | manual | 5d | 2015-09-03 | 2015-09-09 | 300 |  |  | India | 40h |  |  |  |  |

| ID | WBS | Task | Type | Duration | Start | Finish | Predecessors | Resources | Work |
| --- | --- | --- | --- | --- | --- | --- | --- | --- | --- |
| 302 | 1.7 | **7 QA Testing** |  | 20d | 2015-09-09 | 2015-10-06 | 301 | India | 320h |
| 303 | 1.7.1 | 7.1 QA Testing | manual | 10d | 2015-09-09 | 2015-09-22 | 301 | India | 80h |
| 304 | 1.7.2 | 7.2 Review results | manual | 10d | 2015-09-23 | 2015-10-06 | 303 | India | 80h |
| 305 | 1.8 | **8 End-to-end UAT** |  | 20d | 2015-10-07 | 2015-11-03 | 304 | Singapore | 320h |
| 306 | 1.8.1 | 8.1 Access to UAT Environment | manual | 10d | 2015-10-07 | 2015-10-20 | 304 | Singapore | 80h |
| 307 | 1.8.2 | 8.2 Product Testing | manual | 10d | 2015-10-21 | 2015-11-03 | 306 | Singapore | 80h |
| 308 | 1.9 | **9 Client UAT** |  | 20d | 2015-10-07 | 2015-11-03 |  | CDGI | 320h |
| 309 | 1.9.1 | 9.1 Access to UAT Environment | manual | 10d | 2015-10-07 | 2015-10-20 |  | CDGI | 80h |
| 310 | 1.9.2 | 9.2 Product Testing | manual | 10d | 2015-10-21 | 2015-11-03 |  | CDGI | 80h |
| 311 | 1.10 | **10 Deployment** |  | 26d | 2015-11-04 | 2015-12-09 |  | Singapore | 416h |
| 312 | 1.10.1 | 10.1 Deployment Approach | manual | 5d | 2015-11-04 | 2015-11-10 |  | Singapore | 40h |
| 313 | 1.10.2 | 10.2 Platform Readiness | manual | 5d | 2015-11-11 | 2015-11-17 | 312 | Singapore | 40h |
| 314 | 1.10.3 | 10.3 Software Installation | manual | 5d | 2015-11-18 | 2015-11-24 | 313 | Singapore | 40h |
| 315 | 1.10.4 | 10.4 UAT Sign-off | manual | 1d | 2015-11-25 | 2015-11-25 | 314 | Singapore | 8h |
| 316 | 1.10.5 | 10.5 Go Live Preparation | manual | 5d | 2015-11-26 | 2015-12-02 | 315 | Singapore | 40h |
| 317 | 1.10.6 | 10.6 Support Kick Off | manual | 5d | 2015-12-03 | 2015-12-09 | 316 | Singapore | 40h |
