# New Project plan V1

Schedule from MS Project, 2014-01-01 to 2015-12-09, A marks actual dates.

## Calendars

- Standard: Mon-Fri 08:00-12:00, 13:00-17:00; Sat-Sun off.

## Resources

| Resource |
| --- |
| Singapore |
| India |
| CDGI |
| I |
| Sina |

## Schedule

| ID | WBS | Task | Type | Duration | Start | Finish | Complete | Remaining | Resources | Work | Actual work | Items Pending at CDGI | India Ebix Remarks | Items Pending at Singapore |
| --- | --- | --- | --- | --- | --- | --- | --- | --- | --- | --- | --- | --- | --- | --- |
| 1 | 1 | **MCAS Project Phase 1** |  | 506d | 2014-01-01 A | 2015-12-09 | 66% | 174.24d |  | 68144h | 33239.6h |  |  |  |
| 2 | 1.1 | **1 Project Initiation** |  | 262d | 2014-01-01 A | 2015-01-01 | 75% | 65.5d | Singapore | 8384h | 4716h |  |  |  |
| 3 | 1.1.1 | 1.1 Project Scope Definition | manual | 262d | 2014-01-01 A | 2015-01-01 | 75% | 65.5d | Singapore | 2096h | 1572h |  |  |  |
| 4 | 1.1.2 | 1.2 Project Plan Development | manual | 262d | 2014-01-01 A | 2015-01-01 | 75% | 65.5d | Singapore | 2096h | 1572h |  |  |  |
| 5 | 1.1.3 | 1.3 Project Scope Completed | manual | 262d | 2014-01-01 A | 2015-01-01 | 75% | 65.5d | Singapore | 2096h | 1572h |  |  |  |
| 6 | 1.2 | **2 Requirement Gathering** |  | 48d | 2015-01-01 A | 2015-03-09 | 68% | 15.16d | Singapore | 15072h | 8654h |  |  |  |
| 7 | 1.2.1 | **2.1 System Admin Requirements** |  | 32d | 2015-01-01 A | 2015-02-13 | 71% | 9.13d | Singapore | 7872h | 5128h | Pending clarification from CDGI |  |  |
| 8 | 1.2.1.1 | **2.1.1 Upload Main Menu** |  | 32d | 2015-01-01 A | 2015-02-13 | 44% | 18d | Singapore | 768h | 224h |  |  |  |
| 9 | 1.2.1.1.1 | 2.1.1.1 Vehicle Listing Upload | manual | 32d | 2015-01-01 A | 2015-02-13 | 44% | 18d | Singapore | 256h | 112h | CDGI to check with users |  |  |
| 10 | 1.2.1.1.2 | 2.1.1.2 Bus Captain Listing | manual | 32d | 2015-01-01 A | 2015-02-13 | 44% | 18d | Singapore | 256h | 112h | CDGI to check with users | Waiting for sample upload file |  |
| 11 | 1.2.1.2 | **2.1.2 User Admin** |  | 32d | 2015-01-01 A | 2015-02-13 | 44% | 17.86d | Singapore | 2048h | 792h | Pending clarification from CDGI |  |  |
| 12 | 1.2.1.2.1 | 2.1.2.1 Entity Details | manual | 32d | 2015-01-01 A | 2015-02-13 | 34% | 21d | Singapore | 256h | 88h |  | Waiting for functionality | Singapore ebix to Provide functional details |
| 13 | 1.2.1.2.2 | 2.1.2.2. User Groups | manual | 32d | 2015-01-01 A | 2015-02-13 | 69% | 10d | Singapore | 256h | 176h |  | completed | Singapore ebix to Provide functional details |
| 14 | 1.2.1.2.3 | 2.1.2.3 User | manual | 32d | 2015-01-01 A | 2015-02-13 | 69% | 10d | Singapore | 256h | 176h |  | completed |  |
| 15 | 1.2.1.2.4 | 2.1.2.4 Department Master | manual | 32d | 2015-01-01 A | 2015-02-13 | 34% | 21d | Singapore | 256h | 88h |  | Waiting for functionality | Singapore ebix to Provide functional details |
| 16 | 1.2.1.2.5 | 2.1.2.5 Password Setup | manual | 32d | 2015-01-01 A | 2015-02-13 | 34% | 21d | Singapore | 256h | 88h |  | Waiting for functionality | Singapore ebix to Provide functional details |
| 17 | 1.2.1.2.6 | 2.1.2.6 Release Locked Users | manual | 32d | 2015-01-01 A | 2015-02-13 | 34% | 21d | Singapore | 256h | 88h |  | Waiting for functionality | Singapore ebix to Provide functional details |
| 18 | 1.2.1.2.7 | 2.1.2.7 Country for User Access | manual | 32d | 2015-01-01 A | 2015-02-13 | 34% | 21d | Singapore | 256h | 88h |  | Waiting for functionality | Singapore ebix to Provide functional details |
| 19 | 1.2.1.3 | **2.1.3 Service Provider** |  | 22d | 2015-01-01 A | 2015-01-30 A | 100% |  | Singapore | 1232h | 1232h |  |  |  |
| 20 | 1.2.1.3.1 | 2.1.3.1 Insurer Master | manual | 22d | 2015-01-01 A | 2015-01-30 A | 100% |  | Singapore | 176h | 176h |  |  |  |
| 21 | 1.2.1.3.2 | 2.1.3.2 Surveyor Master | manual | 22d | 2015-01-01 A | 2015-01-30 A | 100% |  | Singapore | 176h | 176h |  |  |  |
| 22 | 1.2.1.3.3 | 2.1.3.3 Lawyer Master | manual | 22d | 2015-01-01 A | 2015-01-30 A | 100% |  | Singapore | 176h | 176h |  |  |  |
| 23 | 1.2.1.3.4 | 2.1.3.4 Workshop/Dept Master | manual | 22d | 2015-01-01 A | 2015-01-30 A | 100% |  | Singapore | 176h | 176h |  |  |  |
| 24 | 1.2.1.3.5 | 2.1.3.5 Hospital Master | manual | 22d | 2015-01-01 A | 2015-01-30 A | 100% |  | Singapore | 176h | 176h |  |  |  |
| 25 | 1.2.1.3.6 | 2.1.3.6 Adjuster Master | manual | 22d | 2015-01-01 A | 2015-01-30 A | 100% |  | Singapore | 176h | 176h |  |  |  |
| 26 | 1.2.1.4 | 2.1.4 Nature Of Loss | manual | 22d | 2015-01-01 A | 2015-01-30 A | 100% |  | Singapore | 176h | 176h |  |  |  |
| 27 | 1.2.1.5 | 2.1.5 Type of Loss | manual | 22d | 2015-01-01 A | 2015-01-30 A | 100% |  | Singapore | 176h | 176h |  |  |  |
| 28 | 1.2.1.6 | 2.1.6 Main Class Business | manual | 22d | 2015-01-01 A | 2015-01-30 A | 100% |  | Singapore | 176h | 176h |  |  |  |
| 29 | 1.2.1.7 | 2.1.7 Sub Class | manual | 22d | 2015-01-01 A | 2015-01-30 A | 100% |  | Singapore | 176h | 176h |  |  |  |
| 30 | 1.2.1.8 | 2.1.8 Claims Expense Master | manual | 22d | 2015-01-01 A | 2015-01-30 A | 100% |  | Singapore | 176h | 176h |  |  |  |
| 31 | 1.2.1.9 | 2.1.9 Claims Close Reason Master | manual | 22d | 2015-01-01 A | 2015-01-30 A | 100% |  | Singapore | 176h | 176h |  |  |  |
| 32 | 1.2.1.10 | 2.1.10 Currency Master | manual | 22d | 2015-01-01 A | 2015-01-30 A | 100% |  | Singapore | 176h | 176h |  |  |  |
| 33 | 1.2.1.11 | 2.1.11 Exchange Rate Master | manual | 22d | 2015-01-01 A | 2015-01-30 A | 100% |  | Singapore | 176h | 176h |  |  |  |
| 34 | 1.2.1.12 | 2.1.12 Vehicle Class | manual | 32d | 2015-01-01 A | 2015-02-13 | 52% | 15.5d | Singapore | 256h | 132h |  |  |  |
| 35 | 1.2.1.13 | 2.1.13 Vehicle Make | manual | 32d | 2015-01-01 A | 2015-02-13 | 52% | 15.5d | Singapore | 256h | 132h |  |  |  |
| 36 | 1.2.1.14 | 2.1.14 Vehicle Model | manual | 32d | 2015-01-01 A | 2015-02-13 | 52% | 15.5d | Singapore | 256h | 132h |  |  |  |
| 37 | 1.2.1.15 | 2.1.15 Insurance Policy | manual | 22d | 2015-01-01 A | 2015-01-30 A | 100% |  | Singapore | 176h | 176h |  |  |  |
| 38 | 1.2.1.16 | 2.1.16 GST Setting | manual | 22d | 2015-01-01 A | 2015-01-30 A | 100% |  | Singapore | 176h | 176h |  |  |  |
| 39 | 1.2.1.17 | 2.1.17 Organization | manual | 22d | 2015-01-01 A | 2015-01-30 A | 100% |  | Singapore | 176h | 176h |  |  |  |
| 40 | 1.2.1.18 | 2.1.18 Claim Officer Duty | manual | 22d | 2015-01-01 A | 2015-01-30 A | 100% |  | Singapore | 176h | 176h | Pending clarification from CDGI |  |  |
| 41 | 1.2.1.19 | 2.1.19 LOU Rate | manual | 22d | 2015-01-01 A | 2015-01-30 A | 100% |  | Singapore | 176h | 176h |  |  |  |
| 42 | 1.2.1.20 | 2.1.20 Interchange | manual | 32d | 2015-01-01 A | 2015-02-13 | 52% | 15.5d | Singapore | 256h | 132h |  |  |  |
| 43 | 1.2.1.21 | 2.1.21 Deductible | manual | 32d | 2015-01-01 A | 2015-02-13 | 25% | 24d | Singapore | 256h | 64h |  |  |  |

| ID | WBS | Task | Type | Duration | Start | Finish | Complete | Remaining | Resources | Work | Actual work | Items Pending at CDGI | India Ebix Remarks |
| --- | --- | --- | --- | --- | --- | --- | --- | --- | --- | --- | --- | --- | --- |
| 44 | 1.2.2 | **2.2 Upload Requirements** |  | 17d | 2015-01-29 A | 2015-02-20 | 50% | 8.5d | Singapore | 544h | 204h | Pending clarification from CDGI | Ui start development |
| 45 | 1.2.2.1 | 2.2.1 TAC Upload | manual | 17d | 2015-01-29 A | 2015-02-20 | 50% | 8.5d | Singapore | 136h | 68h | Pending clarification from CDGI | csv file needed |
| 46 | 1.2.2.2 | 2.2.2 Claim File Upload | manual | 17d | 2015-01-29 A | 2015-02-20 | 50% | 8.5d | Singapore | 136h | 68h | Pending clarification from CDGI | csv file needed |
| 47 | 1.2.2.3 | 2.2.3 SAP File Upload | manual | 17d? | 2015-01-29 A | 2015-02-20 | 50% | 8.5d? | Singapore | 136h | 68h | Pending clarification from CDGI | csv file needed |
| 48 | 1.2.3 | **2.3 Claim Requirements** |  | 22d | 2015-01-01 A | 2015-01-30 | 98% | 0.47d | Singapore | 3344h | 2928h |  |  |
| 49 | 1.2.3.1 | **2.3.1 Buses** |  | 22d | 2015-01-01 A | 2015-01-30 | 98% | 0.47d | Singapore | 3168h | 2928h |  |  |
| 50 | 1.2.3.1.1 | 2.3.1.1 Accident | manual | 22d | 2015-01-01 A | 2015-01-30 A | 100% |  | Singapore | 176h | 176h |  |  |
| 51 | 1.2.3.1.2 | 2.3.1.2 Claim | manual | 22d | 2015-01-01 A | 2015-01-30 A | 100% |  | Singapore | 176h | 176h |  |  |
| 52 | 1.2.3.1.3 | 2.3.1.3 Service Provider | manual | 22d | 2015-01-01 A | 2015-01-30 A | 100% |  | Singapore | 176h | 176h |  |  |
| 53 | 1.2.3.1.4 | 2.3.1.4 Notes | manual | 22d | 2015-01-01 A | 2015-01-30 A | 100% |  | Singapore | 176h | 176h |  |  |
| 54 | 1.2.3.1.5 | 2.3.1.5 Tasks | manual | 22d | 2015-01-01 A | 2015-01-30 A | 100% |  | Singapore | 176h | 176h |  |  |
| 55 | 1.2.3.1.6 | 2.3.1.6 Attachment | manual | 22d | 2015-01-01 A | 2015-01-30 A | 100% |  | Singapore | 176h | 176h |  |  |
| 56 | 1.2.3.1.7 | 2.3.1.7 Dairy | manual | 22d | 2015-01-01 A | 2015-01-30 A | 100% |  | Singapore | 176h | 176h |  |  |
| 57 | 1.2.3.1.8 | 2.3.1.8 Reassigned Dairy | manual | 22d | 2015-01-01 A | 2015-01-30 A | 100% |  | Singapore | 176h | 176h |  |  |
| 58 | 1.2.3.1.9 | 2.3.1.9 Reserve | manual | 22d | 2015-01-01 A | 2015-01-30 A | 100% |  | Singapore | 176h | 176h |  |  |
| 59 | 1.2.3.1.10 | 2.3.1.10 Reserve History | manual | 22d | 2015-01-01 A | 2015-01-30 A | 100% |  | Singapore | 176h | 176h |  |  |
| 60 | 1.2.3.1.11 | 2.3.1.11 Mandate | manual | 22d | 2015-01-01 A | 2015-01-30 A | 100% |  | Singapore | 176h | 176h |  |  |
| 61 | 1.2.3.1.12 | 2.3.1.12 Mandate History | manual | 22d | 2015-01-01 A | 2015-01-30 A | 100% |  | Singapore | 176h | 176h |  |  |
| 62 | 1.2.3.1.13 | 2.3.1.13 Payment | manual | 22d | 2015-01-01 A | 2015-01-30 A | 100% |  | Singapore | 176h | 176h |  |  |
| 63 | 1.2.3.1.14 | 2.3.1.14 Payment History | manual | 22d | 2015-01-01 A | 2015-01-30 A | 100% |  | Singapore | 176h | 176h |  |  |
| 64 | 1.2.3.1.15 | 2.3.1.15 Recovery | manual | 32d | 2015-01-01 A | 2015-02-13 | 75% | 8d | Singapore | 256h | 192h |  |  |
| 65 | 1.2.3.1.16 | 2.3.1.16 Alert Indicator | manual | 34d | 2015-01-01 A | 2015-02-17 A | 100% |  | Singapore | 272h | 272h |  |  |
| 66 | 1.2.4 | **2.6 Claim Enquiry Requirements** |  | 27d | 2015-01-29 A | 2015-03-06 | 25% | 20.25d | Singapore | 864h | 162h | Pending clarification from CDGI | pending for requirement detail |
| 67 | 1.2.4.1 | 2.6.1 Claims | manual | 27d | 2015-01-29 A | 2015-03-06 | 25% | 20.25d | Singapore | 216h | 54h |  | pending for requirement detail |
| 68 | 1.2.4.2 | 2.6.2 Claim Documents Printing | manual | 27d | 2015-01-29 A | 2015-03-06 | 25% | 20.25d | Singapore | 216h | 54h |  | pending for requirement detail |
| 69 | 1.2.4.3 | 2.6.3 Job Schedule Enquiry | manual | 27d | 2015-01-29 A | 2015-03-06 | 25% | 20.25d | Singapore | 216h | 54h |  | pending for requirement detail |

| ID | WBS | Task | Type | Duration | Start | Finish | Predecessors | Complete | Remaining | Total slack | Constraint | Resources | Work | Actual work | Items Pending at CDGI | India Ebix Remarks | Description | Items Pending at Singapore |
| --- | --- | --- | --- | --- | --- | --- | --- | --- | --- | --- | --- | --- | --- | --- | --- | --- | --- | --- |
| 70 | 1.2.5 | **2.7 Document Generation Module** |  | 27d | 2015-01-29 A | 2015-03-06 |  | 25% | 20.25d |  |  | Singapore | 432h | 54h | Pending clarification from CDGI | pending for requirement detail |  |  |
| 71 | 1.2.5.1 | 2.7.1 Document Generation Criteria | manual | 27d | 2015-01-29 A | 2015-03-06 |  | 25% | 20.25d |  |  | Singapore | 216h | 54h |  |  | new Task added |  |
| 72 | 1.2.6 | **2.8 Document Print** |  | 27d | 2015-01-29 A | 2015-03-06 |  | 25% | 20.25d |  |  | Singapore | 648h | 108h | Pending clarification from CDGI |  |  |  |
| 73 | 1.2.6.1 | 2.7.1 Claim Payment Document Printing | manual | 27d | 2015-01-29 A | 2015-03-06 |  | 25% | 20.25d |  |  | Singapore | 216h | 54h | waiting To Get Details |  |  |  |
| 74 | 1.2.6.2 | 2.7.2 Claim Registration Document Printing | manual | 27d | 2015-01-29 A | 2015-03-06 |  | 25% | 20.25d |  |  | Singapore | 216h | 54h | waiting To Get Details |  |  |  |
| 75 | 1.2.7 | 2.9 Unreported Claim | manual | 27d | 2015-01-29 A | 2015-03-06 |  | 25% | 20.25d |  |  | Singapore | 216h | 54h | Pending clarification from CDGI | pending for requirement detail |  |  |
| 76 | 1.2.8 | **2.10 Security Management System** |  | 27d | 2015-01-29 | 2015-03-06 |  |  |  |  |  | Singapore | 648h |  |  |  |  |  |
| 77 | 1.2.8.1 | 2.10.1 Permission Screen UI | manual | 27d | 2015-01-29 | 2015-03-06 |  |  |  |  |  | Singapore | 216h |  | waiting To Get Details |  | New Task added |  |
| 78 | 1.2.8.2 | 2.10.2 Permission screen functionality | manual | 27d | 2015-01-29 | 2015-03-06 |  |  |  |  |  | Singapore | 216h |  | waiting To Get Details |  |  |  |
| 79 | 1.2.9 | 2.11 LOG Request | manual | 10d | 2015-02-17 A | 2015-03-02 |  | 20% | 8d |  |  | Singapore | 80h | 16h |  |  |  |  |
| 80 | 1.2.10 | 2.12 Requirements signed off by client | manual | 5d | 2015-03-03 | 2015-03-09 |  |  |  |  |  | Singapore | 40h |  |  |  |  |  |
| 81 | 1.3 | **3 Requirements Finalized in TFS** |  | 267d | 2014-03-03 A | 2015-03-10 |  | 73% | 71d |  |  | India | 4272h | 3136h |  |  |  |  |
| 82 | 1.3.1 | 3.1 Document Upload in TFS | manual | 267d | 2014-03-03 A | 2015-03-10 |  | 73% | 71d |  |  | India | 2136h | 1568h |  |  |  |  |
| 83 | 1.4 | **4 Design UI and Functionality** |  | 299d | 2014-05-01 A | 2015-06-23 |  | 75% | 75.16d |  |  | India | 19136h | 9282.15h |  |  |  |  |
| 84 | 1.4.1 | **4.1 System Admin Requirements** |  | 307d | 2014-05-01 A | 2015-07-03 |  | 80% | 60.51d |  |  | India | 8648h | 4092.8h | Pending clarification from CDGI |  |  |  |
| 85 | 1.4.1.1 | **4.1.1 Upload Main Menu** |  | 192d | 2014-06-01 A | 2015-02-23 |  |  | 192d |  |  | India | 1616h |  |  |  |  |  |
| 86 | 1.4.1.1.1 | 4.1.1.1 Vehicle Listing Upload |  | 20d | 2015-05-05 | 2015-06-01 |  |  |  | 137d | start no earlier than 2015-05-05 | India | 160h |  |  |  |  |  |
| 87 | 1.4.1.1.2 | 4.1.1.2 Bus Captain Listing | manual | 10d | 2015-02-10 | 2015-02-23 | 10 |  |  |  |  | India | 80h |  |  | Waiting to get upload sample filel |  |  |
| 88 | 1.4.1.2 | **4.1.2 User Admin** |  | 217d | 2014-05-01 A | 2015-02-27 | 11 | 48% | 112.11d | 0d |  | India | 2416h | 1932.81h |  |  |  |  |
| 89 | 1.4.1.2.1 | 4.1.2.1 Entity Details | manual | 15d | 2014-05-01 A | 2014-05-21 A | 12 | 100% |  |  |  | India | 120h | 120h |  | Waiting for functionality |  | Singapore ebix to Provide functional details |
| 90 | 1.4.1.2.2 | 4.1.2.2. User Groups | manual | 20d | 2015-02-02 A | 2015-02-27 | 13 | 18% | 16.49d |  |  | India | 160h | 28.11h |  | completed |  | Singapore ebix to Provide functional details |
| 91 | 1.4.1.2.3 | 4.1.2.3 User | manual | 20d | 2015-01-30 A | 2015-02-26 | 14 | 23% | 15.49d |  |  | India | 160h | 36.12h |  | waiting to get UI details for unwanted fields |  |  |
| 92 | 1.4.1.2.4 | 4.1.2.4 Department Master | manual | 10d | 2015-01-30 A | 2015-02-12 | 15 | 45% | 5.49d |  |  | India | 80h | 36.12h |  |  |  | Singapore ebix to Provide functional details |
| 93 | 1.4.1.2.5 | 4.1.2.5 Password Setup | manual | 5d | 2015-01-30 A | 2015-02-05 | 16 | 90% | 0.49d |  |  | India | 40h | 36.12h |  | Waiting for functionality |  | Singapore ebix to Provide functional details |
| 94 | 1.4.1.2.6 | 4.1.2.6 Release Locked Users | manual | 5d | 2015-01-30 A | 2015-02-05 | 17 | 90% | 0.49d |  |  | India | 40h | 36.12h |  | Waiting for functionality |  | Singapore ebix to Provide functional details |
| 95 | 1.4.1.2.7 | 4.1.2.7 Country for User Access | manual | 10d | 2015-01-30 A | 2015-02-12 | 18 | 45% | 5.49d |  |  | India | 80h | 36.12h |  | Waiting for functionality |  | Singapore ebix to Provide functional details |

| ID | WBS | Task | Type | Duration | Start | Finish | Complete | Resources | Work | Actual work | India Ebix Remarks | Items Pending at CDGI |
| --- | --- | --- | --- | --- | --- | --- | --- | --- | --- | --- | --- | --- |
| 96 | 1.4.1.3 | **4.1.3 Service Provider** |  | 10d | 2014-11-05 A | 2014-11-18 A | 100% | India | 560h | 560h |  |  |
| 97 | 1.4.1.3.1 | 4.1.3.1 Insurer Master | manual | 10d | 2014-11-05 A | 2014-11-18 A | 100% | India | 80h | 80h |  |  |
| 98 | 1.4.1.3.2 | 4.1.3.2 Surveyor Master | manual | 10d | 2014-11-05 A | 2014-11-18 A | 100% | India | 80h | 80h |  |  |
| 99 | 1.4.1.3.3 | 4.1.3.3 Lawyer Master | manual | 10d | 2014-11-05 A | 2014-11-18 A | 100% | India | 80h | 80h |  |  |
| 100 | 1.4.1.3.4 | 4.1.3.4 Workshop/Dept Master | manual | 10d | 2014-11-05 A | 2014-11-18 A | 100% | India | 80h | 80h |  |  |
| 101 | 1.4.1.3.5 | 4.1.3.5 Hospital Master | manual | 10d | 2014-11-05 A | 2014-11-18 A | 100% | India | 80h | 80h |  |  |
| 102 | 1.4.1.3.6 | 4.1.3.6 Adjuster Master | manual | 10d | 2014-11-05 A | 2014-11-18 A | 100% | India | 80h | 80h |  |  |
| 103 | 1.4.1.4 | 4.1.4 Nature Of Loss | manual | 15d | 2014-06-04 A | 2014-06-24 A | 100% | India | 120h | 120h |  |  |
| 104 | 1.4.1.5 | 4.1.5 Type of Loss | manual | 10d | 2014-06-04 A | 2014-06-17 A | 100% | India | 80h | 80h | Waiting for functionality |  |
| 105 | 1.4.1.6 | 4.1.6 Main Class Business | manual | 10d | 2014-06-04 A | 2014-06-17 A | 100% | India | 80h | 80h | Waiting for functionality |  |
| 106 | 1.4.1.7 | 4.1.7 Sub Class | manual | 10d | 2014-06-04 A | 2014-06-17 A | 100% | India | 80h | 80h | Waiting for functionality |  |
| 107 | 1.4.1.8 | 4.1.8 Claims Expense Master | manual | 10d | 2014-06-04 A | 2014-06-17 A | 100% | India | 80h | 80h | Waiting for functionality |  |
| 108 | 1.4.1.9 | 4.1.9 Claims Close Reason Master | manual | 10d | 2014-06-04 A | 2014-06-17 A | 100% | India | 80h | 80h | Waiting for functionality |  |
| 109 | 1.4.1.10 | 4.1.10 Currency Master | manual | 10d | 2014-06-04 A | 2014-06-17 A | 100% | India | 80h | 80h |  |  |
| 110 | 1.4.1.11 | 4.1.11 Exchange Rate Master | manual | 10d | 2014-06-04 A | 2014-06-17 A | 100% | India | 80h | 80h |  |  |
| 111 | 1.4.1.12 | 4.1.12 Vehicle Class | manual | 10d | 2014-06-04 A | 2014-06-17 A | 100% | India | 80h | 80h |  |  |
| 112 | 1.4.1.13 | 4.1.13 Vehicle Make | manual | 10d | 2014-06-04 A | 2014-06-17 A | 100% | India | 80h | 80h |  |  |
| 113 | 1.4.1.14 | 4.1.14 Vehicle Model | manual | 10d | 2014-06-04 A | 2014-06-17 A | 100% | India | 80h | 80h |  |  |
| 114 | 1.4.1.15 | 4.1.15 Insurance Policy | manual | 15d | 2014-06-04 A | 2014-06-24 A | 100% | India | 120h | 120h |  |  |
| 115 | 1.4.1.16 | 4.1.16 GST Setting | manual | 10d | 2014-06-04 A | 2014-06-17 A | 100% | India | 80h | 80h | Waiting for functionality |  |
| 116 | 1.4.1.17 | 4.1.17 Organization | manual | 20d | 2014-12-15 A | 2015-01-09 A | 100% | India | 160h | 160h |  |  |
| 117 | 1.4.1.18 | 4.1.18 Claim Officer Duty | manual | 10d | 2014-09-03 A | 2014-09-16 A | 100% | India | 80h | 80h |  | Pending clarification from CDGI |
| 118 | 1.4.1.19 | 4.1.19 LOU Rate | manual | 10d | 2014-09-10 A | 2014-09-23 A | 100% | India | 80h | 80h |  |  |
| 119 | 1.4.1.20 | 4.1.20 Interchange | manual | 10d | 2014-09-10 A | 2014-09-23 A | 100% | India | 80h | 80h |  |  |
| 120 | 1.4.1.21 | 4.1.21 Deductible | manual | 10d | 2014-12-15 A | 2014-12-26 A | 100% | India | 80h | 80h |  |  |

| ID | WBS | Task | Type | Duration | Start | Finish | Complete | Remaining | Total slack | Resources | Work | Actual work | Items Pending at CDGI | India Ebix Remarks |
| --- | --- | --- | --- | --- | --- | --- | --- | --- | --- | --- | --- | --- | --- | --- |
| 121 | 1.4.2 | **4.2 Upload** |  | 20d | 2015-01-29 A | 2015-02-25 | 27% | 14.67d |  | India | 640h | 184h | Pending clarification from CDGI | Ui start development |
| 122 | 1.4.2.1 | 4.2.1 TAC Upload | manual | 20d | 2015-01-29 A | 2015-02-25 | 40% | 12d |  | India | 160h | 64h | Pending clarification from CDGI | Waiting for functionality |
| 123 | 1.4.2.2 | 4.2.2 Claim File Upload | manual | 20d | 2015-01-29 A | 2015-02-25 | 40% | 12d |  | India | 160h | 64h | Pending clarification from CDGI | Waiting for functionality |
| 124 | 1.4.2.3 | 4.2.3 SAP File Upload | manual | 20d | 2015-01-29 | 2015-02-25 |  |  |  | India | 160h |  | Pending clarification from CDGI | Waiting for functionality |
| 125 | 1.4.3 | **4.3 Claim** |  | 96d | 2014-10-02 A | 2015-02-12 | 99% | 1.12d | 0d | India | 5416h | 4118.92h |  |  |
| 126 | 1.4.3.1 | **4.3.1 Buses** |  | 96d | 2014-10-02 A | 2015-02-12 | 99% | 1.12d |  | India | 4648h | 4118.92h |  |  |
| 127 | 1.4.3.1.1 | 4.3.1.1 Accident | manual | 31d | 2014-10-02 A | 2014-11-13 A | 100% |  |  | India | 248h | 248h |  |  |
| 128 | 1.4.3.1.2 | 4.3.1.2 Claim | manual | 31d | 2014-10-02 A | 2014-11-13 A | 100% |  |  | India | 248h | 248h |  |  |
| 129 | 1.4.3.1.3 | 4.3.1.3 Service Provider | manual | 31d | 2014-10-02 A | 2014-11-13 A | 100% |  |  | India | 248h | 248h |  |  |
| 130 | 1.4.3.1.4 | 4.3.1.4 Notes | manual | 31d | 2014-10-02 A | 2014-11-13 A | 100% |  |  | India | 248h | 248h |  |  |
| 131 | 1.4.3.1.5 | 4.3.1.5 Tasks | manual | 31d | 2014-10-02 A | 2014-11-13 A | 100% |  |  | India | 248h | 248h |  |  |
| 132 | 1.4.3.1.6 | 4.3.1.6 Attachment | manual | 31d | 2014-10-02 A | 2014-11-13 A | 100% |  |  | India | 248h | 248h |  |  |
| 133 | 1.4.3.1.7 | 4.3.1.7 Dairy | manual | 31d | 2014-10-02 A | 2014-11-13 A | 100% |  |  | India | 248h | 248h |  |  |
| 134 | 1.4.3.1.8 | 4.3.1.8 Reassigned Dairy | manual | 31d | 2014-10-02 A | 2014-11-13 A | 100% |  |  | India | 248h | 248h |  |  |
| 135 | 1.4.3.1.9 | 4.3.1.9 Reserve |  | 31d | 2014-11-21 A | 2015-01-02 A | 100% |  |  | India | 248h | 248h |  |  |
| 136 | 1.4.3.1.10 | 4.3.1.10 Reserve History | manual | 31d | 2014-11-21 A | 2015-01-02 A | 100% |  |  | India | 248h | 248h |  |  |
| 137 | 1.4.3.1.11 | 4.3.1.11 Mandate | manual | 31d | 2014-11-21 A | 2015-01-02 A | 100% |  |  | India | 248h | 248h |  |  |
| 138 | 1.4.3.1.12 | 4.3.1.12 Mandate History | manual | 31d | 2014-11-21 A | 2015-01-02 A | 100% |  |  | India | 248h | 248h |  |  |
| 139 | 1.4.3.1.13 | 4.3.1.13 Payment | manual | 31d | 2014-12-05 A | 2015-01-16 A | 100% |  |  | India | 248h | 248h |  |  |
| 140 | 1.4.3.1.14 | 4.3.1.14 Payment History | manual | 31d | 2014-12-05 A | 2015-01-16 A | 100% |  |  | India | 248h | 248h |  |  |
| 141 | 1.4.3.1.15 | 4.3.1.15 Recovery | manual | 31d | 2015-01-01 A | 2015-02-12 | 85% | 4.65d |  | India | 248h | 210.8h |  | Waiting for functionality |
| 142 | 1.4.3.1.16 | 4.3.1.16 Transaction History | manual | 20d | 2014-10-02 A | 2014-10-29 A | 100% |  |  | India | 160h | 160h |  |  |
| 143 | 1.4.3.1.17 | 4.3.1.17 Alert Indicator | manual | 1d? | 2014-10-02 | 2014-10-02 |  |  |  |  |  |  |  |  |
| 144 | 1.4.4 | **4.6 Claim Enquiry** |  | 70d | 2015-01-29 A | 2015-05-06 | 39% | 42.5d |  | India | 1120h | 404h | Pending clarification from CDGI | Waiting for functionality |
| 145 | 1.4.4.1 | 4.6.1 Claims | manual | 30d | 2015-01-29 A | 2015-03-11 | 40% | 18d |  | India | 240h | 96h |  | Waiting for functionality |
| 146 | 1.4.4.2 | 4.6.2 Claim Documents Printing | manual | 30d | 2015-03-20 A | 2015-04-30 | 25% | 22.5d |  | India | 240h | 60h |  | Waiting for functionality |
| 147 | 1.4.4.3 | 4.6.3 Job Schedule Enquiry | manual | 10d | 2015-01-29 A | 2015-02-11 | 80% | 2d |  | India | 80h | 64h |  | Waiting for functionality |

| ID | WBS | Task | Type | Duration | Start | Finish | Predecessors | Complete | Remaining | Actual start | Total slack | Resources | Work | Actual work | Items Pending at CDGI | India Ebix Remarks | Description |
| --- | --- | --- | --- | --- | --- | --- | --- | --- | --- | --- | --- | --- | --- | --- | --- | --- | --- |
| 148 | 1.4.5 | **4.7 Document Generation Module** |  | 30d | 2015-03-02 | 2015-04-10 |  |  |  |  |  | India | 480h |  | Pending clarification from CDGI | Waiting for functionality |  |
| 149 | 1.4.5.1 | 4.7.1 Document Generation Criteria | manual | 30d | 2015-03-02 | 2015-04-10 |  |  |  |  |  | India | 240h |  |  | Waiting for functionality | new Task added |
| 150 | 1.4.6 | **4.8 Document Print** |  | 30d | 2015-03-25 | 2015-05-05 |  |  |  |  |  | India | 720h |  | Pending clarification from CDGI |  |  |
| 151 | 1.4.6.1 | 4.8.1 Claim Payment Document Printing | manual | 30d | 2015-03-25 | 2015-05-05 |  |  |  |  |  | India | 240h |  | waiting To Get Details | Waiting for functionality |  |
| 152 | 1.4.6.2 | 4.8.2 Claim Registration Document Printing | manual | 30d | 2015-03-25 | 2015-05-05 |  |  |  |  |  | India | 240h |  |  | Waiting for functionality |  |
| 153 | 1.4.7 | 4.9 Unreported Claim | manual | 10d | 2015-02-05 | 2015-02-18 |  |  |  |  |  | India | 80h |  | Pending clarification from CDGI | Waiting for functionality |  |
| 154 | 1.4.8 | **4.10 Security Management System** |  | 30d | 2014-11-10 A | 2014-12-19 |  | 85% | 4.5d |  |  | India | 480h | 204h |  |  |  |
| 155 | 1.4.8.1 | 4.10.1 Permission Screen UI | manual | 15d | 2014-11-10 A | 2014-11-28 |  | 85% | 2.25d |  |  | India | 120h | 102h | waiting To Get Details |  | New Task added |
| 156 | 1.4.8.2 | 4.10.2 Permission screen functionality | manual | 15d | 2014-11-10 A | 2014-11-28 |  | 85% | 2.25d |  |  | India | 120h | 102h | waiting To Get Details |  |  |
| 157 | 1.4.9 | 4.11 LOG Request | manual | 10d | 2015-02-23 | 2015-03-06 |  |  |  |  |  |  |  |  |  |  |  |
| 158 | 1.4.10 | 4.12 UI and Design signed off by client | manual | 5d | 2014-06-17 | 2014-06-23 |  |  |  |  |  | India | 40h |  |  |  |  |
| 159 | 1.5 | **5 Iterative Development and Testing** |  | 305d | 2014-05-22 | 2015-07-22 | 81 | 50% | 153.97d | 2014-03-17 |  | India | 19584h | 7451.42h |  |  |  |
| 160 | 1.5.1 | **5.1 System Admin** |  | 240d | 2014-07-01 | 2015-06-01 |  | 86% | 33.78d | 2014-05-22 |  | India | 7056h | 4560h |  |  |  |
| 161 | 1.5.1.1 | **5.1.1 Upload Main Menu** |  | 129d | 2014-09-09 A | 2015-03-06 | 85 | 75% | 32.25d |  | 0d | India | 240h | 200h |  |  |  |
| 162 | 1.5.1.1.1 | 5.1.1.1 Vehicle Listing Upload | manual | 10d | 2014-09-09 A | 2014-09-22 A | 86 | 100% |  |  |  | India | 80h | 80h |  |  |  |
| 163 | 1.5.1.1.2 | 5.1.1.2 Bus Captain Listing | manual | 10d | 2015-02-23 A | 2015-03-06 | 87 | 50% | 5d |  |  | India | 80h | 40h |  | Waiting for functionality |  |
| 164 | 1.5.1.2 | **5.1.2 User Admin** |  | 212d | 2014-05-22 A | 2015-03-13 A | 88 | 100% |  |  |  | India | 2256h | 2256h |  |  |  |
| 165 | 1.5.1.2.1 | 5.1.2.1 Entity Details | manual | 10d | 2014-05-22 A | 2014-06-04 A | 89 | 100% |  |  |  | India | 80h | 80h |  |  |  |
| 166 | 1.5.1.2.2 | 5.1.2.2. User Groups | manual | 10d | 2015-03-02 A | 2015-03-13 A | 90 | 100% |  |  |  | India | 80h | 80h |  |  |  |
| 167 | 1.5.1.2.3 | 5.1.2.3 User | manual | 10d | 2015-02-27 A | 2015-03-12 A | 91 | 100% |  |  |  | India | 80h | 80h |  |  |  |
| 168 | 1.5.1.2.4 | 5.1.2.4 Department Master | manual | 10d | 2015-02-13 A | 2015-02-26 A | 92 | 100% |  |  |  | India | 80h | 80h |  |  |  |
| 169 | 1.5.1.2.5 | 5.1.2.5 Password Setup | manual | 10d | 2015-02-06 A | 2015-02-19 A | 93 | 100% |  |  |  | India | 80h | 80h |  |  |  |
| 170 | 1.5.1.2.6 | 5.1.2.6 Release Locked Users | manual | 10d | 2015-02-06 A | 2015-02-19 A | 94 | 100% |  |  |  | India | 80h | 80h |  |  |  |
| 171 | 1.5.1.2.7 | 5.1.2.7 Country for User Access | manual | 10d | 2015-02-13 A | 2015-02-26 A | 95 | 100% |  |  |  | India | 80h | 80h |  |  |  |

| ID | WBS | Task | Type | Duration | Start | Finish | Predecessors | Complete | Remaining | Resources | Work | Actual work | Items Pending at CDGI |
| --- | --- | --- | --- | --- | --- | --- | --- | --- | --- | --- | --- | --- | --- |
| 172 | 1.5.1.3 | **5.1.3 Service Provider** |  | 15d | 2014-11-19 A | 2014-12-09 |  | 99% | 0d | India | 600h | 480h |  |
| 173 | 1.5.1.3.1 | 5.1.3.1 Insurer Master | manual | 10d | 2014-11-19 A | 2014-12-02 A | 97 | 100% |  | India | 80h | 80h |  |
| 174 | 1.5.1.3.2 | 5.1.3.2 Surveyor Master | manual | 10d | 2014-11-19 A | 2014-12-02 A | 98 | 100% |  | India | 80h | 80h |  |
| 175 | 1.5.1.3.3 | 5.1.3.3 Lawyer Master | manual | 10d | 2014-11-19 A | 2014-12-02 A | 99 | 100% |  | India | 80h | 80h |  |
| 176 | 1.5.1.3.4 | 5.1.3.4 Workshop/Dept Master | manual | 10d | 2014-11-25 A | 2014-12-08 A | 100 | 100% |  | India | 80h | 80h |  |
| 177 | 1.5.1.3.5 | 5.1.3.5 Hospital Master | manual | 10d | 2014-11-26 A | 2014-12-09 A | 101 | 100% |  | India | 80h | 80h |  |
| 178 | 1.5.1.3.6 | 5.1.3.6 Adjuster Master | manual | 10d | 2014-11-25 A | 2014-12-08 A | 102 | 100% |  | India | 80h | 80h |  |
| 179 | 1.5.1.4 | 5.1.4 Nature Of Loss | manual | 10d | 2014-06-25 A | 2014-07-08 A | 103 | 100% |  | India | 80h | 80h |  |
| 180 | 1.5.1.5 | 5.1.5 Type of Loss | manual | 10d | 2014-06-18 A | 2014-07-01 A | 104 | 100% |  | India | 80h | 80h |  |
| 181 | 1.5.1.6 | 5.1.6 Main Class Business | manual | 10d | 2014-06-18 A | 2014-07-01 A | 105 | 100% |  | India | 80h | 80h |  |
| 182 | 1.5.1.7 | 5.1.7 Sub Class | manual | 10d | 2014-06-18 A | 2014-07-01 A | 106 | 100% |  | India | 80h | 80h |  |
| 183 | 1.5.1.8 | 5.1.8 Claims Expense Master | manual | 10d | 2014-06-18 A | 2014-07-01 A | 107 | 100% |  | India | 80h | 80h |  |
| 184 | 1.5.1.9 | 5.1.9 Claims Close Reason Master | manual | 10d | 2014-06-18 A | 2014-07-01 A | 108 | 100% |  | India | 80h | 80h |  |
| 185 | 1.5.1.10 | 5.1.10 Currency Master | manual | 10d | 2014-06-18 A | 2014-07-01 A | 109 | 100% |  | India | 80h | 80h |  |
| 186 | 1.5.1.11 | 5.1.11 Exchange Rate Master | manual | 10d | 2014-06-18 A | 2014-07-01 A | 110 | 100% |  | India | 80h | 80h |  |
| 187 | 1.5.1.12 | 5.1.12 Vehicle Class | manual | 10d | 2014-06-18 A | 2014-07-01 A | 111 | 100% |  | India | 80h | 80h |  |
| 188 | 1.5.1.13 | 5.1.13 Vehicle Make | manual | 10d | 2014-06-18 A | 2014-07-01 A | 112 | 100% |  | India | 80h | 80h |  |
| 189 | 1.5.1.14 | 5.1.14 Vehicle Model | manual | 10d | 2014-06-18 A | 2014-07-01 A | 113 | 100% |  | India | 80h | 80h |  |
| 190 | 1.5.1.15 | 5.1.15 Insurance Policy | manual | 10d | 2014-06-25 A | 2014-07-08 A | 114 | 100% |  | India | 80h | 80h |  |
| 191 | 1.5.1.16 | 5.1.16 GST Setting | manual | 10d | 2014-06-18 A | 2014-07-01 A | 115 | 100% |  | India | 80h | 80h |  |
| 192 | 1.5.1.17 | 5.1.17 Organization | manual | 10d | 2015-01-12 A | 2015-01-23 A | 116 | 100% |  | India | 80h | 80h |  |
| 193 | 1.5.1.18 | 5.1.18 Claim Officer Duty | manual | 10d | 2014-09-17 A | 2014-09-30 A | 117 | 100% |  | India | 80h | 80h |  |
| 194 | 1.5.1.19 | 5.1.19 LOU Rate | manual | 10d | 2014-09-24 A | 2014-10-07 A | 118 | 100% |  | India | 80h | 80h |  |
| 195 | 1.5.1.20 | 5.1.20 Interchange | manual | 10d | 2014-09-24 A | 2014-10-07 A | 119 | 100% |  | India | 80h | 80h |  |
| 196 | 1.5.1.21 | 5.1.21 Deductible | manual | 10d | 2014-12-29 A | 2015-01-09 A | 120 | 100% |  | India | 80h | 80h |  |
| 197 | 1.5.1.22 | 5.1.22 User Manual | manual | 30d | 2015-02-02 A | 2015-03-13 |  | 7% | 28d | India | 240h | 16h | waiting To Get Details |
| 198 | 1.5.1.23 | 5.1.23 Test Approach/Test Cases | manual | 5d | 2015-02-02 A | 2015-02-06 A |  | 100% |  | India | 40h | 40h | waiting To Get Details |
| 199 | 1.5.1.24 | 5.1.24 QA Testing | manual | 20d | 2015-02-11 A | 2015-03-10 |  | 80% | 4d | India | 160h | 128h | waiting To Get Details |
| 200 | 1.5.1.25 | 5.1.25 UAT | manual | 20d | 2015-03-10 | 2015-04-06 |  |  |  | Singapore | 160h |  | waiting To Get Details |

| ID | WBS | Task | Type | Duration | Start | Finish | Predecessors | Complete | Remaining | Actual start | Resources | Work | Actual work | Items Pending at CDGI | India Ebix Remarks |
| --- | --- | --- | --- | --- | --- | --- | --- | --- | --- | --- | --- | --- | --- | --- | --- |
| 201 | 1.5.2 | **5.2 Upload** |  | 58d | 2015-01-30 | 2015-04-21 | 121 |  |  |  | India | 1240h |  | waiting to get Details |  |
| 202 | 1.5.2.1 | 5.2.1 TAC Upload | manual | 25d | 2015-02-26 | 2015-04-01 | 122 |  |  |  | India | 200h |  | waiting to get Details | Waiting for functionality |
| 203 | 1.5.2.2 | 5.2.2 Claim File Upload | manual | 25d | 2015-02-26 | 2015-04-01 | 123 |  |  |  | India | 200h |  |  | Waiting for functionality |
| 204 | 1.5.2.3 | 5.2.3 SAP File Upload | manual | 25d | 2015-02-26 | 2015-04-01 | 124 |  |  |  | India | 200h |  |  | Waiting for functionality |
| 205 | 1.5.2.4 | 5.2.4 User Manual | manual | 5d | 2015-04-02 | 2015-04-08 | 204 |  |  |  | India | 40h |  |  |  |
| 206 | 1.5.2.5 | 5.2.5 Test Approach/Test Cases | manual | 2d | 2015-04-01 | 2015-04-02 | 124 |  |  |  | India | 16h |  |  |  |
| 207 | 1.5.2.6 | 5.2.6 QA Testing | manual | 5d | 2015-04-01 | 2015-04-07 | 124 |  |  |  | Singapore | 40h |  |  |  |
| 208 | 1.5.2.7 | 5.2.7 UAT | manual | 10d | 2015-04-08 | 2015-04-21 |  |  |  |  | CDGI | 80h |  |  |  |
| 209 | 1.5.3 | **5.3 Claim** |  | 179d | 2014-11-14 | 2015-07-22 |  | 52% | 86.69d | 2014-10-30 | India | 4840h | 1378h |  |  |
| 210 | 1.5.3.1 | **5.3.1 Buses** |  | 92d | 2014-11-14 | 2015-03-23 | 126 | 67% | 30.81d | 2014-10-30 | India | 2808h | 1378h |  |  |
| 211 | 1.5.3.1.1 | 5.3.1.1 Accident | manual | 10d | 2014-11-14 A | 2014-11-27 A | 127 | 100% |  |  | India | 80h | 80h |  |  |
| 212 | 1.5.3.1.2 | 5.3.1.2 Claim | manual | 12d | 2014-11-14 A | 2014-12-01 A | 128 | 100% |  |  | India | 96h | 96h |  |  |
| 213 | 1.5.3.1.3 | 5.3.1.3 Service Provider | manual | 15d | 2014-11-14 A | 2014-12-04 A | 129 | 100% |  |  | India | 120h | 120h |  |  |
| 214 | 1.5.3.1.4 | 5.3.1.4 Notes | manual | 10d | 2014-11-14 A | 2014-11-27 A | 130 | 100% |  |  | India | 80h | 80h |  |  |
| 215 | 1.5.3.1.5 | 5.3.1.5 Tasks | manual | 12d | 2014-11-14 A | 2014-12-01 A | 131 | 100% |  |  | India | 96h | 96h |  |  |
| 216 | 1.5.3.1.6 | 5.3.1.6 Attachment | manual | 12d | 2014-11-14 A | 2014-12-01 A | 132 | 100% |  |  | India | 96h | 96h |  |  |
| 217 | 1.5.3.1.7 | 5.3.1.7 Dairy | manual | 20d | 2014-11-14 A | 2014-12-11 A | 133 | 100% |  |  | India | 160h | 160h |  |  |
| 218 | 1.5.3.1.8 | 5.3.1.8 Reassigned Dairy | manual | 10d | 2014-11-14 A | 2014-11-27 A | 134 | 100% |  |  | India | 80h | 80h |  |  |
| 219 | 1.5.3.1.9 | 5.3.1.9 Reserve | manual | 10d | 2015-01-02 A | 2015-01-15 | 135 | 85% | 1.5d |  | India | 80h | 68h |  |  |
| 220 | 1.5.3.1.10 | 5.3.1.10 Reserve History | manual | 5d | 2015-01-16 A | 2015-01-22 | 219 | 85% | 0.75d |  | India | 40h | 34h |  |  |
| 221 | 1.5.3.1.11 | 5.3.1.11 Mandate | manual | 30d | 2015-01-02 A | 2015-02-12 | 137 | 28% | 21.5d |  | India | 240h | 68h |  |  |
| 222 | 1.5.3.1.12 | 5.3.1.12 Mandate History | manual | 5d | 2015-01-16 | 2015-01-22 | 221 |  |  |  | India | 40h |  |  | Waiting for functionality |
| 223 | 1.5.3.1.13 | 5.3.1.13 Payment | manual | 30d | 2015-01-19 A | 2015-02-27 | 139 | 13% | 26d |  | India | 240h | 32h |  | Waiting for functionality |
| 224 | 1.5.3.1.14 | 5.3.1.14 Payment History | manual | 5d | 2015-03-02 | 2015-03-06 | 223 |  |  |  | India | 40h |  |  | Waiting for functionality |
| 225 | 1.5.3.1.15 | 5.3.1.15 Recovery | manual | 30d | 2015-02-10 A | 2015-03-23 | 141 | 27% | 22d |  | India | 240h | 64h |  |  |
| 226 | 1.5.3.1.16 | 5.3.1.16 Transaction History | manual | 38d | 2014-10-30 A | 2014-12-22 A | 142 | 100% |  |  | India | 304h | 304h |  |  |
| 227 | 1.5.3.1.17 | 5.3.1.17 Alert Indicator | manual | 5d? | 2014-11-14 | 2014-11-20 |  |  |  |  | India | 40h |  |  |  |
| 228 | 1.5.3.2 | 5.3.6 User Manual | manual | 30d | 2015-05-11 | 2015-06-19 |  |  |  |  | India | 240h |  |  | Waiting for functionality |
| 229 | 1.5.3.3 | 5.3.7 Test Approach/Test Cases | manual | 5d | 2015-05-22 | 2015-05-28 |  |  |  |  | India | 40h |  |  |  |
| 230 | 1.5.3.4 | 5.3.8 QA Testing | manual | 25d | 2015-05-28 | 2015-07-01 |  |  |  |  | Singapore | 200h |  |  |  |
| 231 | 1.5.3.5 | 5.3.9 UAT | manual | 15d | 2015-07-02 | 2015-07-22 | 230 |  |  |  | CDGI | 120h |  |  |  |

| ID | WBS | Task | Type | Duration | Start | Finish | Predecessors | Complete | Remaining | Actual start | Resources | Work | Actual work | India Ebix Remarks | Items Pending at CDGI | Description |
| --- | --- | --- | --- | --- | --- | --- | --- | --- | --- | --- | --- | --- | --- | --- | --- | --- |
| 232 | 1.5.4 | **5.6 Claim Enquiry** |  | 67d | 2015-03-11 | 2015-06-11 | 144 | 18% | 54.82d | 2015-03-12 | India | 976h | 80h | Waiting for functionality |  |  |
| 233 | 1.5.4.1 | 5.6.1 Claims | manual | 15d | 2015-03-12 A | 2015-04-01 | 145 | 40% | 9d |  | India | 120h | 48h | Waiting for functionality | waiting To Get Details |  |
| 234 | 1.5.4.2 | 5.6.2 Claim Documents Printing | manual | 10d | 2015-05-01 | 2015-05-14 | 146 |  |  |  | India | 80h |  | Waiting for functionality | waiting To Get Details |  |
| 235 | 1.5.4.3 | 5.6.3 Job Schedule Enquiry | manual | 10d | 2015-05-15 A | 2015-05-28 | 234 | 40% | 6d |  | India | 80h | 32h | Waiting for functionality | waiting To Get Details |  |
| 236 | 1.5.4.4 | 5.6.4 User Manual | manual | 5d | 2015-05-29 | 2015-06-04 | 235 |  |  |  | India | 40h |  |  | waiting To Get Details |  |
| 237 | 1.5.4.5 | 5.6.5 Test Approach/Test Cases | manual | 5d | 2015-05-29 | 2015-06-04 | 235 |  |  |  | India | 40h |  |  | waiting To Get Details |  |
| 238 | 1.5.4.6 | 5.6.6 QA Testing | manual | 5d | 2015-05-29 | 2015-06-04 | 235 |  |  |  | Singapore | 40h |  |  | waiting To Get Details |  |
| 239 | 1.5.4.7 | 5.6.7 UAT | manual | 5d | 2015-06-05 | 2015-06-11 | 236 |  |  |  | CDGI | 40h |  |  | waiting To Get Details |  |
| 240 | 1.5.5 | **5.7 Document Generation Module** |  | 27d | 2015-04-23 | 2015-05-29 |  |  |  |  | India | 496h |  | Waiting for functionality |  |  |
| 241 | 1.5.5.1 | 5.7.1 Document Generation Criteria | manual | 15d | 2015-04-23 | 2015-05-13 | 149 |  |  |  | India | 120h |  | Waiting for functionality |  |  |
| 242 | 1.5.5.2 | 5.7.2 User Manual | manual | 5d | 2015-05-14 | 2015-05-20 | 241 |  |  |  | India | 40h |  |  | waiting To Get Details |  |
| 243 | 1.5.5.3 | 5.7.3 Test Approach/Test Cases | manual | 5d | 2015-05-21 | 2015-05-27 | 241 |  |  |  | India | 40h |  |  | waiting To Get Details |  |
| 244 | 1.5.5.4 | 5.7.4 QA Testing | manual | 5d | 2015-05-21 | 2015-05-27 | 241 |  |  |  | Singapore | 40h |  |  | waiting To Get Details |  |
| 245 | 1.5.5.5 | 5.7.5 UAT | manual | 5d | 2015-05-25 | 2015-05-29 | 242 |  |  |  | CDGI | 40h |  |  | waiting To Get Details |  |
| 246 | 1.5.6 | **5.8 Document Print** |  | 25d | 2015-05-06 | 2015-06-09 |  |  |  |  | India | 560h |  |  |  |  |
| 247 | 1.5.6.1 | 5.8.1 Claim Payment Document Printing | manual | 10d | 2015-05-06 | 2015-05-19 | 151 |  |  |  | India | 80h |  | Waiting for functionality | waiting To Get Details |  |
| 248 | 1.5.6.2 | 5.8.2 Claim Registration Document Printing | manual | 10d | 2015-05-06 | 2015-05-19 | 152 |  |  |  | India | 80h |  | Waiting for functionality | waiting To Get Details |  |
| 249 | 1.5.6.3 | 5.8.3 User Manual | manual | 5d | 2015-05-20 | 2015-05-26 | 248 |  |  |  | India | 40h |  |  | waiting To Get Details | on Going |
| 250 | 1.5.6.4 | 5.8.4 Test Approach/Test Cases | manual | 5d | 2015-05-20 | 2015-05-26 | 248 |  |  |  | India | 40h |  |  | waiting To Get Details |  |
| 251 | 1.5.6.5 | 5.8.5 QA Testing | manual | 5d | 2015-05-20 | 2015-05-26 | 248 |  |  |  | Singapore | 40h |  |  | waiting To Get Details |  |
| 252 | 1.5.6.6 | 5.8.6 UAT | manual | 10d | 2015-05-27 | 2015-06-09 | 249 |  |  |  | CDGI | 80h |  |  | waiting To Get Details |  |
| 253 | 1.5.7 | **5.9 Unreported Claim Menu** |  | 49d | 2015-01-30 | 2015-04-08 |  |  |  |  | India | 712h |  |  |  |  |
| 254 | 1.5.7.1 | 5.9.1 UI and functionality implementation | manual | 10d | 2015-02-19 | 2015-03-04 | 153 |  |  |  | India | 80h |  | Waiting for functionality | waiting To Get Details |  |
| 255 | 1.5.7.2 | 5.9.2 User Manual | manual | 10d | 2015-03-05 | 2015-03-18 | 254 |  |  |  | India | 80h |  |  | waiting To Get Details |  |
| 256 | 1.5.7.3 | 5.9.3 Test Approach/Test Cases | manual | 5d | 2015-03-19 | 2015-03-25 | 254 |  |  |  | India | 40h |  |  | waiting To Get Details |  |
| 257 | 1.5.7.4 | 5.9.4 QA Testing | manual | 5d | 2015-03-19 | 2015-03-25 | 255 |  |  |  | Singapore | 40h |  |  | waiting To Get Details |  |
| 258 | 1.5.7.5 | 5.9.5 UAT | manual | 10d | 2015-03-26 | 2015-04-08 | 255 |  |  |  | CDGI | 80h |  |  | waiting To Get Details |  |

| ID | WBS | Task | Type | Duration | Start | Finish | Predecessors | Complete | Remaining | Resources | Work | Actual work | Items Pending at CDGI | India Ebix Remarks | Description |
| --- | --- | --- | --- | --- | --- | --- | --- | --- | --- | --- | --- | --- | --- | --- | --- |
| 259 | 1.5.8 | **5.10 Security Management System** |  | 86d | 2014-12-01 A | 2015-03-30 |  | 18% | 70.74d | India | 1104h | 88h |  |  |  |
| 260 | 1.5.8.1 | 5.7.1 Permission Screen UI and Functionality | manual | 10d | 2014-12-01 | 2014-12-12 | 155 |  |  |  |  |  | waiting To Get Details | Waiting for functionality |  |
| 261 | 1.5.8.2 | 5.7.2 User Manual | manual | 30d | 2015-02-02 | 2015-03-13 |  |  |  | India | 240h |  | waiting To Get Details |  | On Going |
| 262 | 1.5.8.3 | 5.7.3 Test Approach/Test Cases | manual | 5d | 2015-02-02 A | 2015-02-06 A | 260 | 100% |  | India | 40h | 40h | waiting To Get Details |  |  |
| 263 | 1.5.8.4 | 5.7.4 QA Testing | manual | 6d | 2014-12-15 A | 2014-12-22 A | 260 | 100% |  | Singapore | 48h | 48h | waiting To Get Details |  |  |
| 264 | 1.5.8.5 | 5.7.5 UAT | manual | 11d | 2015-03-16 | 2015-03-30 | 261 |  |  | CDGI | 88h |  | waiting To Get Details |  |  |
| 265 | 1.5.9 | 5.11 LOG Request | manual | 20d | 2014-03-17 | 2014-04-11 |  |  |  | India | 160h |  |  |  |  |
| 266 | 1.6 | **6 QA Test Scripts** |  | 20d | 2015-03-30 | 2015-04-24 | 159 |  |  | India | 320h |  |  |  |  |
| 267 | 1.6.1 | 6.1 Testing Approach Development/Confirmation | manual | 5d | 2015-03-30 | 2015-04-03 |  |  |  | India | 40h |  |  |  |  |
| 268 | 1.6.2 | 6.2 Test Condition Development | manual | 5d | 2015-04-06 | 2015-04-10 | 267 |  |  | India | 40h |  |  |  |  |
| 269 | 1.6.3 | 6.3 Test Script Development | manual | 5d | 2015-04-13 | 2015-04-17 | 268 |  |  | India | 40h |  |  |  |  |
| 270 | 1.6.4 | 6.4 Expected Results Development | manual | 5d | 2015-04-20 | 2015-04-24 | 269 |  |  | India | 40h |  |  |  |  |
| 271 | 1.7 | **7 QA Testing** |  | 20d | 2015-04-27 | 2015-05-22 | 270 |  |  | India | 320h |  |  |  |  |
| 272 | 1.7.1 | 7.1 QA Testing | manual | 10d | 2015-04-27 | 2015-05-08 | 270 |  |  | India | 80h |  |  |  |  |
| 273 | 1.7.2 | 7.2 Review results | manual | 10d | 2015-05-11 | 2015-05-22 | 272 |  |  | India | 80h |  |  |  |  |
| 274 | 1.8 | **8 End-to-end UAT** |  | 20d | 2015-05-25 | 2015-06-19 | 273 |  |  | Singapore | 320h |  |  |  |  |
| 275 | 1.8.1 | 8.1 Access to UAT Environment | manual | 10d | 2015-05-25 | 2015-06-05 | 273 |  |  | Singapore | 80h |  |  |  |  |
| 276 | 1.8.2 | 8.2 Product Testing | manual | 10d | 2015-06-08 | 2015-06-19 | 275 |  |  | Singapore | 80h |  |  |  |  |
| 277 | 1.9 | **9 Client UAT** |  | 20d | 2015-05-25 | 2015-06-19 |  |  |  | CDGI | 320h |  |  |  |  |
| 278 | 1.9.1 | 9.1 Access to UAT Environment | manual | 10d | 2015-05-25 | 2015-06-05 |  |  |  | CDGI | 80h |  |  |  |  |
| 279 | 1.9.2 | 9.2 Product Testing | manual | 10d | 2015-06-08 | 2015-06-19 |  |  |  | CDGI | 80h |  |  |  |  |
| 280 | 1.10 | **10 Deployment** |  | 26d | 2015-06-22 | 2015-07-27 |  |  |  | Singapore | 416h |  |  |  |  |
| 281 | 1.10.1 | 10.1 Deployment Approach | manual | 5d | 2015-06-22 | 2015-06-26 |  |  |  | Singapore | 40h |  |  |  |  |
| 282 | 1.10.2 | 10.2 Platform Readiness | manual | 5d | 2015-06-29 | 2015-07-03 | 281 |  |  | Singapore | 40h |  |  |  |  |
| 283 | 1.10.3 | 10.3 Software Installation | manual | 5d | 2015-07-06 | 2015-07-10 | 282 |  |  | Singapore | 40h |  |  |  |  |
| 284 | 1.10.4 | 10.4 UAT Sign-off | manual | 1d | 2015-07-13 | 2015-07-13 | 283 |  |  | Singapore | 8h |  |  |  |  |
| 285 | 1.10.5 | 10.5 Go Live Preparation | manual | 5d | 2015-07-14 | 2015-07-20 | 284 |  |  | Singapore | 40h |  |  |  |  |
| 286 | 1.10.6 | 10.6 Support Kick Off | manual | 5d | 2015-07-21 | 2015-07-27 | 285 |  |  | Singapore | 40h |  |  |  |  |
