# New Project plan V1

Schedule from MS Project, 2014-01-01 to 2015-12-09, A marks actual dates.

## Calendars

- Standard: Mon-Fri 08:00-12:00, 13:00-17:00; Sat-Sun off.

## Resources

| Resource |
| --- |
| Singapore |
| India |
| CDGI |
| I |
| Sina |
| Sinagpore |

## Schedule

| ID | WBS | Task | Type | Duration | Start | Finish | Complete | Remaining | Resources | Work | Actual work | India Ebix Remarks | Items Pending at Singapore |
| --- | --- | --- | --- | --- | --- | --- | --- | --- | --- | --- | --- | --- | --- |
| 1 | 1 | **MCAS Project** |  | 506d | 2014-01-01 A | 2015-12-09 | 70% | 152.71d |  | 87136h | 56187.4h |  |  |
| 2 | 1.1 | **1 Project Initiation** |  | 262d | 2014-01-01 A | 2015-01-01 A | 100% |  | Singapore | 8384h | 8384h |  |  |
| 3 | 1.1.1 | 1.1 Project Scope Definition | manual | 262d | 2014-01-01 A | 2015-01-01 A | 100% |  | Singapore | 2096h | 2096h |  |  |
| 4 | 1.1.2 | 1.2 Project Plan Development | manual | 262d | 2014-01-01 A | 2015-01-01 A | 100% |  | Singapore | 2096h | 2096h |  |  |
| 5 | 1.1.3 | 1.3 Project Scope Completed | manual | 262d | 2014-01-01 A | 2015-01-01 A | 100% |  | Singapore | 2096h | 2096h |  |  |
| 6 | 1.2 | **2 Requirement Gathering** |  | 122d | 2015-01-01 A | 2015-06-19 | 89% | 13.86d | Singapore | 17600h | 13959.4h |  |  |
| 7 | 1.2.1 | **2.1 System Admin Requirements** |  | 32d | 2015-01-01 A | 2015-02-13 | 99% | 0d | Singapore | 7872h | 7469.27h |  |  |
| 8 | 1.2.1.1 | **2.1.1 Upload Main Menu** |  | 32d | 2015-01-01 A | 2015-02-13 | 99% | 0d | Singapore | 768h | 566.64h |  |  |
| 9 | 1.2.1.1.1 | 2.1.1.1 Vehicle Listing Upload | manual | 32d | 2015-01-01 A | 2015-02-13 A | 100% |  | Singapore | 256h | 256h |  |  |
| 10 | 1.2.1.1.2 | 2.1.1.2 Bus Captain Listing | manual | 32d | 2015-01-01 A | 2015-02-13 A | 100% |  | Singapore | 256h | 256h | Waiting for sample upload file |  |
| 11 | 1.2.1.2 | **2.1.2 User Admin** |  | 32d | 2015-01-01 A | 2015-02-13 A | 100% |  | Singapore | 2048h | 2048h |  |  |
| 12 | 1.2.1.2.1 | 2.1.2.1 Entity Details | manual | 32d | 2015-01-01 A | 2015-02-13 A | 100% |  | Singapore | 256h | 256h |  | Singapore ebix to Provide functional details |
| 13 | 1.2.1.2.2 | 2.1.2.2. User Groups | manual | 32d | 2015-01-01 A | 2015-02-13 A | 100% |  | Singapore | 256h | 256h |  | Singapore ebix to Provide functional details |
| 14 | 1.2.1.2.3 | 2.1.2.3 User | manual | 32d | 2015-01-01 A | 2015-02-13 A | 100% |  | Singapore | 256h | 256h |  |  |
| 15 | 1.2.1.2.4 | 2.1.2.4 Department Master | manual | 32d | 2015-01-01 A | 2015-02-13 A | 100% |  | Singapore | 256h | 256h |  | Singapore ebix to Provide functional details |
| 16 | 1.2.1.2.5 | 2.1.2.5 Password Setup | manual | 32d | 2015-01-01 A | 2015-02-13 A | 100% |  | Singapore | 256h | 256h |  | Singapore ebix to Provide functional details |
| 17 | 1.2.1.2.6 | 2.1.2.6 Release Locked Users | manual | 32d | 2015-01-01 A | 2015-02-13 A | 100% |  | Singapore | 256h | 256h |  | Singapore ebix to Provide functional details |
| 18 | 1.2.1.2.7 | 2.1.2.7 Country for User Access | manual | 32d | 2015-01-01 A | 2015-02-13 A | 100% |  | Singapore | 256h | 256h |  | Singapore ebix to Provide functional details |
| 19 | 1.2.1.3 | **2.1.3 Service Provider** |  | 22d | 2015-01-01 A | 2015-01-30 A | 100% |  | Singapore | 1232h | 1232h |  |  |
| 20 | 1.2.1.3.1 | 2.1.3.1 Insurer Master | manual | 22d | 2015-01-01 A | 2015-01-30 A | 100% |  | Singapore | 176h | 176h |  |  |
| 21 | 1.2.1.3.2 | 2.1.3.2 Surveyor Master | manual | 22d | 2015-01-01 A | 2015-01-30 A | 100% |  | Singapore | 176h | 176h |  |  |
| 22 | 1.2.1.3.3 | 2.1.3.3 Lawyer Master | manual | 22d | 2015-01-01 A | 2015-01-30 A | 100% |  | Singapore | 176h | 176h |  |  |
| 23 | 1.2.1.3.4 | 2.1.3.4 Workshop/Dept Master | manual | 22d | 2015-01-01 A | 2015-01-30 A | 100% |  | Singapore | 176h | 176h |  |  |
| 24 | 1.2.1.3.5 | 2.1.3.5 Hospital Master | manual | 22d | 2015-01-01 A | 2015-01-30 A | 100% |  | Singapore | 176h | 176h |  |  |
| 25 | 1.2.1.3.6 | 2.1.3.6 Adjuster Master | manual | 22d | 2015-01-01 A | 2015-01-30 A | 100% |  | Singapore | 176h | 176h |  |  |
| 26 | 1.2.1.4 | 2.1.4 Nature Of Loss | manual | 22d | 2015-01-01 A | 2015-01-30 A | 100% |  | Singapore | 176h | 176h |  |  |
| 27 | 1.2.1.5 | 2.1.5 Type of Loss | manual | 22d | 2015-01-01 A | 2015-01-30 A | 100% |  | Singapore | 176h | 176h |  |  |
| 28 | 1.2.1.6 | 2.1.6 Main Class Business | manual | 22d | 2015-01-01 A | 2015-01-30 A | 100% |  | Singapore | 176h | 176h |  |  |
| 29 | 1.2.1.7 | 2.1.7 Sub Class | manual | 22d | 2015-01-01 A | 2015-01-30 A | 100% |  | Singapore | 176h | 176h |  |  |
| 30 | 1.2.1.8 | 2.1.8 Claims Expense Master | manual | 22d | 2015-01-01 A | 2015-01-30 A | 100% |  | Singapore | 176h | 176h |  |  |
| 31 | 1.2.1.9 | 2.1.9 Claims Close Reason Master | manual | 22d | 2015-01-01 A | 2015-01-30 A | 100% |  | Singapore | 176h | 176h |  |  |
| 32 | 1.2.1.10 | 2.1.10 Currency Master | manual | 22d | 2015-01-01 A | 2015-01-30 A | 100% |  | Singapore | 176h | 176h |  |  |
| 33 | 1.2.1.11 | 2.1.11 Exchange Rate Master | manual | 22d | 2015-01-01 A | 2015-01-30 A | 100% |  | Singapore | 176h | 176h |  |  |
| 34 | 1.2.1.12 | 2.1.12 Vehicle Class | manual | 32d | 2015-01-01 A | 2015-02-13 A | 100% |  | Singapore | 256h | 256h |  |  |
| 35 | 1.2.1.13 | 2.1.13 Vehicle Make | manual | 32d | 2015-01-01 A | 2015-02-13 A | 100% |  | Singapore | 256h | 256h |  |  |
| 36 | 1.2.1.14 | 2.1.14 Vehicle Model | manual | 32d | 2015-01-01 A | 2015-02-13 A | 100% |  | Singapore | 256h | 256h |  |  |
| 37 | 1.2.1.15 | 2.1.15 Insurance Policy | manual | 22d | 2015-01-01 A | 2015-01-30 A | 100% |  | Singapore | 176h | 176h |  |  |
| 38 | 1.2.1.16 | 2.1.16 GST Setting | manual | 22d | 2015-01-01 A | 2015-01-30 A | 100% |  | Singapore | 176h | 176h |  |  |
| 39 | 1.2.1.17 | 2.1.17 Organization | manual | 22d | 2015-01-01 A | 2015-01-30 A | 100% |  | Singapore | 176h | 176h |  |  |
| 40 | 1.2.1.18 | 2.1.18 Claim Officer Duty | manual | 22d | 2015-01-01 A | 2015-01-30 A | 100% |  | Singapore | 176h | 176h |  |  |
| 41 | 1.2.1.19 | 2.1.19 LOU Rate | manual | 22d | 2015-01-01 A | 2015-01-30 A | 100% |  | Singapore | 176h | 176h |  |  |
| 42 | 1.2.1.20 | 2.1.20 Interchange | manual | 32d | 2015-01-01 A | 2015-02-13 A | 100% |  | Singapore | 256h | 256h |  |  |
| 43 | 1.2.1.21 | 2.1.21 Deductible | manual | 32d | 2015-01-01 A | 2015-02-13 A | 100% |  | Singapore | 256h | 256h |  |  |

| ID | WBS | Task | Type | Duration | Start | Finish | Complete | Remaining | Actual finish | Resources | Work | Actual work | Items Pending at CDGI | India Ebix Remarks |
| --- | --- | --- | --- | --- | --- | --- | --- | --- | --- | --- | --- | --- | --- | --- |
| 44 | 1.2.2 | **2.2 Upload Requirements** |  | 17d | 2015-01-29 A | 2015-02-20 | 61% | 6.68d |  | Singapore | 584h | 272h |  |  |
| 45 | 1.2.2.1 | 2.2.1 TAC Upload | manual | 17d | 2015-01-29 A | 2015-02-20 A | 100% |  |  | Singapore | 136h | 136h |  |  |
| 46 | 1.2.2.2 | 2.2.2 Claim File Upload | manual | 17d | 2015-01-29 A | 2015-02-20 A | 100% |  |  | Singapore | 136h | 136h |  |  |
| 47 | 1.2.2.3 | 2.2.3 SAP File Upload | manual | 22d | 2015-06-01 A | 2015-06-30 |  | 22d |  | Singapore | 176h |  | Phase 2 delivery | Phase 2 delivery |
| 48 | 1.2.3 | **2.3 Claim Requirements** |  | 22d | 2015-01-01 A | 2015-01-30 | 80% | 4.5d |  | Singapore | 3792h | 2966.64h |  |  |
| 49 | 1.2.3.1 | **2.3.1 Buses** |  | 22d | 2015-01-01 A | 2015-01-30 | 100% |  | 2015-02-13 | Singapore | 2912h | 2912h |  |  |
| 50 | 1.2.3.1.1 | 2.3.1.1 Accident | manual | 22d | 2015-01-01 A | 2015-01-30 A | 100% |  |  | Singapore | 176h | 176h |  |  |
| 51 | 1.2.3.1.2 | 2.3.1.2 Claim | manual | 22d | 2015-01-01 A | 2015-01-30 A | 100% |  |  | Singapore | 176h | 176h |  |  |
| 52 | 1.2.3.1.3 | 2.3.1.3 Service Provider | manual | 22d | 2015-01-01 A | 2015-01-30 A | 100% |  |  | Singapore | 176h | 176h |  |  |
| 53 | 1.2.3.1.4 | 2.3.1.4 Notes | manual | 22d | 2015-01-01 A | 2015-01-30 A | 100% |  |  | Singapore | 176h | 176h |  |  |
| 54 | 1.2.3.1.5 | 2.3.1.5 Tasks | manual | 22d | 2015-01-01 A | 2015-01-30 A | 100% |  |  | Singapore | 176h | 176h |  |  |
| 55 | 1.2.3.1.6 | 2.3.1.6 Attachment | manual | 22d | 2015-01-01 A | 2015-01-30 A | 100% |  |  | Singapore | 176h | 176h |  |  |
| 56 | 1.2.3.1.7 | 2.3.1.7 Dairy | manual | 22d | 2015-01-01 A | 2015-01-30 A | 100% |  |  | Singapore | 176h | 176h |  |  |
| 57 | 1.2.3.1.8 | 2.3.1.8 Reassigned Dairy | manual | 22d | 2015-01-01 A | 2015-01-30 A | 100% |  |  | Singapore | 176h | 176h |  |  |
| 58 | 1.2.3.1.9 | 2.3.1.9 Reserve | manual | 22d | 2015-01-01 A | 2015-01-30 A | 100% |  |  | Singapore | 176h | 176h |  |  |
| 59 | 1.2.3.1.10 | 2.3.1.10 Reserve History | manual | 22d | 2015-01-01 A | 2015-01-30 A | 100% |  |  | Singapore | 176h | 176h |  |  |
| 60 | 1.2.3.1.11 | 2.3.1.11 Mandate | manual | 22d | 2015-01-01 A | 2015-01-30 A | 100% |  |  | Singapore | 176h | 176h |  |  |
| 61 | 1.2.3.1.12 | 2.3.1.12 Mandate History | manual | 22d | 2015-01-01 A | 2015-01-30 A | 100% |  |  | Singapore | 176h | 176h |  |  |
| 62 | 1.2.3.1.13 | 2.3.1.13 Payment | manual | 22d | 2015-01-01 A | 2015-01-30 A | 100% |  |  | Singapore | 176h | 176h |  |  |
| 63 | 1.2.3.1.14 | 2.3.1.14 Payment History | manual | 22d | 2015-01-01 A | 2015-01-30 A | 100% |  |  | Singapore | 176h | 176h |  |  |
| 64 | 1.2.3.1.15 | 2.3.1.15 Recovery | manual | 32d | 2015-01-01 A | 2015-02-13 A | 100% |  |  | Singapore | 256h | 256h |  |  |
| 65 | 1.2.3.1.16 | 2.3.1.16 Transaction History | manual | 1d? | 2015-01-01 A | 2015-01-01 A | 100% |  |  | Singapore | 8h | 8h |  |  |
| 66 | 1.2.3.1.17 | 2.3.1.17 Alert Indicator for Deductible | manual | 1d? | 2015-01-01 A | 2015-01-01 A | 100% |  |  | Singapore | 8h | 8h |  |  |
| 67 | 1.2.3.2 | 2.3.2 Trains | manual | 22d | 2015-02-16 | 2015-03-17 |  |  |  | Singapore | 176h |  |  | Phase 2 delivery |
| 68 | 1.2.3.3 | 2.3.3 Taxis | manual | 22d | 2015-03-17 | 2015-04-15 |  |  |  | Singapore | 176h |  |  | Phase 2 delivery |
| 69 | 1.2.3.4 | 2.3.4 Rental Cars | manual | 22d | 2015-04-15 | 2015-05-14 |  |  |  | Singapore | 176h |  |  | Phase 2 delivery |
| 70 | 1.2.3.5 | 2.3.5 Private Cars | manual | 22d | 2015-05-14 | 2015-06-12 |  |  |  | Singapore | 176h |  |  | Phase 2 delivery |
| 71 | 1.2.4 | 2.4 Dashboard Requirements | manual | 37d | 2015-01-01 A | 2015-02-20 | 80% | 7.4d |  | Singapore | 296h | 236.8h | Pending clarification from CDGI | UI of permission start development |

| ID | WBS | Task | Type | Duration | Start | Finish | Complete | Remaining | Actual start | Resources | Work | Actual work | Items Pending at CDGI | Description |
| --- | --- | --- | --- | --- | --- | --- | --- | --- | --- | --- | --- | --- | --- | --- |
| 72 | 1.2.5 | **2.5 Diary Listing** |  | 37d | 2015-01-01 A | 2015-02-20 A | 100% |  |  | Singapore | 1184h | 1184h |  |  |
| 73 | 1.2.5.1 | 2.5.1 Diary Items | manual | 37d | 2015-01-01 A | 2015-02-20 A | 100% |  |  | Singapore | 296h | 296h |  |  |
| 74 | 1.2.5.2 | 2.5.2 Assigned Tasks | manual | 37d | 2015-01-01 A | 2015-02-20 A | 100% |  |  | Singapore | 296h | 296h |  |  |
| 75 | 1.2.5.3 | 2.5.3 Escalation Tasks | manual | 37d | 2015-01-01 A | 2015-02-20 A | 100% |  |  | Singapore | 296h | 296h |  |  |
| 76 | 1.2.6 | **2.6 Claim Enquiry Requirements** |  | 27d | 2015-01-29 A | 2015-03-06 A | 100% |  |  | Singapore | 864h | 864h |  |  |
| 77 | 1.2.6.1 | 2.6.1 Claims | manual | 27d | 2015-01-29 A | 2015-03-06 A | 100% |  |  | Singapore | 216h | 216h |  |  |
| 78 | 1.2.6.2 | 2.6.2 Claim Documents Printing | manual | 27d | 2015-01-29 A | 2015-03-06 A | 100% |  |  | Singapore | 216h | 216h |  |  |
| 79 | 1.2.6.3 | 2.6.3 Job Schedule Enquiry | manual | 27d | 2015-01-29 A | 2015-03-06 A | 100% |  |  | Singapore | 216h | 216h |  |  |
| 80 | 1.2.7 | **2.7 Document Generation Module** |  | 27d | 2015-01-29 A | 2015-03-06 |  | 27d |  | Singapore | 432h |  | Pending clarification from CDGI |  |
| 81 | 1.2.7.1 | 2.7.1 Document Generation Criteria | manual | 27d | 2015-01-29 A | 2015-03-06 |  | 27d |  | Singapore | 216h |  |  | new Task added |
| 82 | 1.2.8 | **2.8 Document Print** |  | 27d | 2015-01-29 A | 2015-03-06 |  | 27d |  | Singapore | 648h |  | Pending clarification from CDGI |  |
| 83 | 1.2.8.1 | 2.7.1 Claim Payment Document Printing | manual | 27d | 2015-01-29 A | 2015-03-06 |  | 27d |  | Singapore | 216h |  | waiting To Get Details |  |
| 84 | 1.2.8.2 | 2.7.2 Claim Registration Document Printing | manual | 27d | 2015-01-29 A | 2015-03-06 |  | 27d |  | Singapore | 216h |  | waiting To Get Details |  |
| 85 | 1.2.9 | 2.9 Unreported Claim | manual | 27d | 2015-01-29 A | 2015-03-06 A | 100% |  |  | Singapore | 216h | 216h |  |  |
| 86 | 1.2.10 | **2.10 Security Management System** |  | 27d | 2015-01-29 A | 2015-03-06 A | 100% |  |  | Singapore | 648h | 648h |  |  |
| 87 | 1.2.10.1 | 2.10.1 Permission Screen UI | manual | 27d | 2015-01-29 A | 2015-03-06 A | 100% |  |  | Singapore | 216h | 216h | waiting To Get Details | New Task added |
| 88 | 1.2.10.2 | 2.10.2 Permission screen functionality | manual | 27d | 2015-01-29 A | 2015-03-06 A | 100% |  |  | Singapore | 216h | 216h | waiting To Get Details |  |
| 89 | 1.2.11 | **2.11 Requirements signed off by client** |  | 5d | 2015-06-15 | 2015-06-19 | 99% | 0d | 2015-01-01 | Singapore | 56h | 16h |  |  |
| 90 | 1.2.11.1 | **2.12 New Requirement - New Master Tables** |  | 1d? | 2015-01-01 A | 2015-01-01 A | 100% |  |  | Singapore | 16h | 16h |  |  |
| 91 | 1.2.11.1.1 | 2.12.1 iTrack #2 | manual | 1d? | 2015-01-01 A | 2015-01-01 A | 100% |  |  | Singapore | 8h | 8h |  |  |
| 92 | 1.2.12 | **2.13 New Requirement - LOG Request** |  | 1d? | 2015-01-01 A | 2015-01-01 A | 100% |  |  | Singapore | 16h | 16h |  |  |
| 93 | 1.2.12.1 | 2.13.1 iTrack #10 | manual | 1d? | 2015-01-01 A | 2015-01-01 A | 100% |  |  | Singapore | 8h | 8h |  |  |
| 94 | 1.2.13 | **2.14 New Requirement - FAL Masters** |  | 1d? | 2015-01-01 A | 2015-01-01 A | 100% |  |  | Singapore | 16h | 16h |  |  |
| 95 | 1.2.13.1 | 2.14.1 iTrack #23 | manual | 1d? | 2015-01-01 A | 2015-01-01 A | 100% |  |  | Singapore | 8h | 8h |  |  |

Notes:
- 72: India Ebix Remarks: Requirement revoked and menu removed from Application
- 73: India Ebix Remarks: Requirement revoked and menu removed from Application
- 74: India Ebix Remarks: Requirement revoked and menu removed from Application
- 75: India Ebix Remarks: Requirement revoked and menu removed from Application
- 80: India Ebix Remarks: On hold due to requirement not yet gathered , as per communication these tasks will be completed after completion of all screens of MCAS application
- 81: India Ebix Remarks: On hold due to requirement not yet gathered , as per communication these tasks will be completed after completion of all screens of MCAS application
- 82: India Ebix Remarks: On hold due to requirement not yet gathered , as per communication these tasks will be completed after completion of all screens of MCAS application
- 83: India Ebix Remarks: On hold due to requirement not yet gathered , as per communication these tasks will be completed after completion of all screens of MCAS application
- 84: India Ebix Remarks: On hold due to requirement not yet gathered , as per communication these tasks will be completed after completion of all screens of MCAS application

| ID | WBS | Task | Type | Duration | Start | Finish | Predecessors | Complete | Remaining | Actual start | Total slack | Free slack | Constraint | Resources | Work | Actual work | Items Pending at CDGI | India Ebix Remarks | Items Pending at Singapore |
| --- | --- | --- | --- | --- | --- | --- | --- | --- | --- | --- | --- | --- | --- | --- | --- | --- | --- | --- | --- |
| 96 | 1.3 | **3 Requirements Finalized in TFS** |  | 392d | 2014-03-03 A | 2015-09-01 |  | 57% | 167.17d |  | 0d |  |  | India | 6272h | 3597.27h |  |  |  |
| 97 | 1.3.1 | 3.1 Document Upload in TFS | manual | 392d | 2014-03-03 A | 2015-09-01 |  | 57% | 167.17d |  |  |  |  | India | 3136h | 1798.64h |  |  |  |
| 98 | 1.4 | **4 Design UI and Functionality** |  | 299d | 2014-05-01 A | 2015-06-23 |  | 82% | 55.15d |  |  |  |  | India | 21200h | 15308.1h |  |  |  |
| 99 | 1.4.1 | **4.1 System Admin Requirements** |  | 307d | 2014-05-01 A | 2015-07-03 |  | 99% | 2.46d |  |  |  |  | India | 8648h | 7091.91h | Pending clarification from CDGI |  |  |
| 100 | 1.4.1.1 | **4.1.1 Upload Main Menu** |  | 192d | 2014-06-01 | 2015-02-23 |  | 90% | 19.2d | 2014-05-05 |  |  |  | India | 1616h | 1342.64h |  |  |  |
| 101 | 1.4.1.1.1 | 4.1.1.1 Vehicle Listing Upload |  | 20d | 2014-05-05 A | 2014-07-02 |  | 90% | 2d |  | 56d | 48d | finish no earlier than 2014-07-02 | India | 160h | 144h |  |  |  |
| 102 | 1.4.1.1.2 | 4.1.1.2 Bus Captain Listing | manual | 10d | 2015-02-10 A | 2015-02-23 | 10 | 90% | 1d |  |  |  |  | India | 80h | 72h |  | Waiting to get upload sample filel |  |
| 103 | 1.4.1.2 | **4.1.2 User Admin** |  | 217d | 2014-05-01 A | 2015-02-27 | 11 | 99% | 0d |  | 0d |  |  | India | 2416h | 2134.64h |  |  |  |
| 104 | 1.4.1.2.1 | 4.1.2.1 Entity Details | manual | 15d | 2014-05-01 A | 2014-05-21 A | 12 | 100% |  |  |  |  |  | India | 120h | 120h |  | Requirement revoked and menu removed from Application | Singapore ebix to Provide functional details |
| 105 | 1.4.1.2.2 | 4.1.2.2. User Groups | manual | 20d | 2015-02-02 A | 2015-02-27 A | 13 | 100% |  |  |  |  |  | India | 160h | 160h |  |  | Singapore ebix to Provide functional details |
| 106 | 1.4.1.2.3 | 4.1.2.3 User | manual | 20d | 2015-01-30 A | 2015-02-26 A | 14 | 100% |  |  |  |  |  | India | 160h | 160h |  |  |  |
| 107 | 1.4.1.2.4 | 4.1.2.4 Department Master | manual | 10d | 2015-01-30 A | 2015-02-12 A | 15 | 100% |  |  |  |  |  | India | 80h | 80h |  |  | Singapore ebix to Provide functional details |
| 108 | 1.4.1.2.5 | 4.1.2.5 Password Setup | manual | 5d | 2015-01-30 A | 2015-02-05 A | 16 | 100% |  |  |  |  |  | India | 40h | 40h |  |  | Singapore ebix to Provide functional details |
| 109 | 1.4.1.2.6 | 4.1.2.6 Release Locked Users | manual | 5d | 2015-01-30 A | 2015-02-05 A | 17 | 100% |  |  |  |  |  | India | 40h | 40h |  |  | Singapore ebix to Provide functional details |
| 110 | 1.4.1.2.7 | 4.1.2.7 Country for User Access | manual | 10d | 2015-01-30 A | 2015-02-12 A | 18 | 100% |  |  |  |  |  | India | 80h | 80h |  | Requirement revoked and menu removed from Application | Singapore ebix to Provide functional details |
| 111 | 1.4.1.3 | **4.1.3 Service Provider** |  | 10d | 2014-11-05 A | 2014-11-18 A |  | 100% |  |  |  |  |  | India | 560h | 560h |  |  |  |
| 112 | 1.4.1.3.1 | 4.1.3.1 Insurer Master | manual | 10d | 2014-11-05 A | 2014-11-18 A |  | 100% |  |  |  |  |  | India | 80h | 80h |  |  |  |
| 113 | 1.4.1.3.2 | 4.1.3.2 Surveyor Master | manual | 10d | 2014-11-05 A | 2014-11-18 A |  | 100% |  |  |  |  |  | India | 80h | 80h |  |  |  |
| 114 | 1.4.1.3.3 | 4.1.3.3 Lawyer Master | manual | 10d | 2014-11-05 A | 2014-11-18 A |  | 100% |  |  |  |  |  | India | 80h | 80h |  |  |  |
| 115 | 1.4.1.3.4 | 4.1.3.4 Workshop/Dept Master | manual | 10d | 2014-11-05 A | 2014-11-18 A |  | 100% |  |  |  |  |  | India | 80h | 80h |  |  |  |
| 116 | 1.4.1.3.5 | 4.1.3.5 Hospital Master | manual | 10d | 2014-11-05 A | 2014-11-18 A |  | 100% |  |  |  |  |  | India | 80h | 80h |  |  |  |
| 117 | 1.4.1.3.6 | 4.1.3.6 Adjuster Master | manual | 10d | 2014-11-05 A | 2014-11-18 A |  | 100% |  |  |  |  |  | India | 80h | 80h |  |  |  |
| 118 | 1.4.1.4 | 4.1.4 Nature Of Loss | manual | 15d | 2014-06-04 A | 2014-06-24 A |  | 100% |  |  |  |  |  | India | 120h | 120h |  |  |  |
| 119 | 1.4.1.5 | 4.1.5 Type of Loss | manual | 10d | 2014-06-04 A | 2014-06-17 A |  | 100% |  |  |  |  |  | India | 80h | 80h |  | Waiting for functionality |  |
| 120 | 1.4.1.6 | 4.1.6 Main Class Business | manual | 10d | 2014-06-04 A | 2014-06-17 A |  | 100% |  |  |  |  |  | India | 80h | 80h |  | Waiting for functionality |  |
| 121 | 1.4.1.7 | 4.1.7 Sub Class | manual | 10d | 2014-06-04 A | 2014-06-17 A |  | 100% |  |  |  |  |  | India | 80h | 80h |  | Waiting for functionality |  |
| 122 | 1.4.1.8 | 4.1.8 Claims Expense Master | manual | 10d | 2014-06-04 A | 2014-06-17 A |  | 100% |  |  |  |  |  | India | 80h | 80h |  | Waiting for functionality |  |
| 123 | 1.4.1.9 | 4.1.9 Claims Close Reason Master | manual | 10d | 2014-06-04 A | 2014-06-17 A |  | 100% |  |  |  |  |  | India | 80h | 80h |  | Waiting for functionality |  |
| 124 | 1.4.1.10 | 4.1.10 Currency Master | manual | 10d | 2014-06-04 A | 2014-06-17 A |  | 100% |  |  |  |  |  | India | 80h | 80h |  |  |  |
| 125 | 1.4.1.11 | 4.1.11 Exchange Rate Master | manual | 10d | 2014-06-04 A | 2014-06-17 A |  | 100% |  |  |  |  |  | India | 80h | 80h |  |  |  |
| 126 | 1.4.1.12 | 4.1.12 Vehicle Class | manual | 10d | 2014-06-04 A | 2014-06-17 A |  | 100% |  |  |  |  |  | India | 80h | 80h |  |  |  |
| 127 | 1.4.1.13 | 4.1.13 Vehicle Make | manual | 10d | 2014-06-04 A | 2014-06-17 A |  | 100% |  |  |  |  |  | India | 80h | 80h |  |  |  |
| 128 | 1.4.1.14 | 4.1.14 Vehicle Model | manual | 10d | 2014-06-04 A | 2014-06-17 A |  | 100% |  |  |  |  |  | India | 80h | 80h |  |  |  |
| 129 | 1.4.1.15 | 4.1.15 Insurance Policy | manual | 15d | 2014-06-04 A | 2014-06-24 A |  | 100% |  |  |  |  |  | India | 120h | 120h |  |  |  |
| 130 | 1.4.1.16 | 4.1.16 GST Setting | manual | 10d | 2014-06-04 A | 2014-06-17 A |  | 100% |  |  |  |  |  | India | 80h | 80h |  | Waiting for functionality |  |
| 131 | 1.4.1.17 | 4.1.17 Organization | manual | 20d | 2014-12-15 A | 2015-01-09 A |  | 100% |  |  |  |  |  | India | 160h | 160h |  |  |  |
| 132 | 1.4.1.18 | 4.1.18 Claim Officer Duty | manual | 10d | 2014-09-03 A | 2014-09-16 A |  | 100% |  |  |  |  |  | India | 80h | 80h | Pending clarification from CDGI |  |  |
| 133 | 1.4.1.19 | 4.1.19 LOU Rate | manual | 10d | 2014-09-10 A | 2014-09-23 A |  | 100% |  |  |  |  |  | India | 80h | 80h |  |  |  |
| 134 | 1.4.1.20 | 4.1.20 Interchange | manual | 10d | 2014-09-10 A | 2014-09-23 A |  | 100% |  |  |  |  |  | India | 80h | 80h |  |  |  |
| 135 | 1.4.1.21 | 4.1.21 Deductible | manual | 10d | 2014-12-15 A | 2014-12-26 A |  | 100% |  |  |  |  |  | India | 80h | 80h |  |  |  |

| ID | WBS | Task | Type | Duration | Start | Finish | Complete | Remaining | Total slack | Resources | Work | Actual work | Items Pending at CDGI | India Ebix Remarks |
| --- | --- | --- | --- | --- | --- | --- | --- | --- | --- | --- | --- | --- | --- | --- |
| 136 | 1.4.2 | **4.2 Upload** |  | 20d | 2015-01-29 A | 2015-02-25 | 67% | 6.67d |  | India | 640h | 320h |  |  |
| 137 | 1.4.2.1 | 4.2.1 TAC Upload | manual | 20d | 2015-01-29 A | 2015-02-25 A | 100% |  |  | India | 160h | 160h |  |  |
| 138 | 1.4.2.2 | 4.2.2 Claim File Upload | manual | 20d | 2015-01-29 A | 2015-02-25 A | 100% |  |  | India | 160h | 160h |  |  |
| 139 | 1.4.2.3 | 4.2.3 SAP File Upload | manual | 20d | 2015-01-29 A | 2015-02-25 |  | 20d |  | India | 160h |  | Phase 2 delivery | Phase 2 delivery |
| 140 | 1.4.3 | **4.3 Claim** |  | 156d | 2014-10-02 A | 2015-05-07 | 79% | 32.98d | 0d | India | 6632h | 4789.51h |  |  |
| 141 | 1.4.3.1 | **4.3.1 Buses** |  | 96d | 2014-10-02 A | 2015-02-12 | 87% | 12.24d |  | India | 4656h | 3966.87h |  |  |
| 142 | 1.4.3.1.1 | 4.3.1.1 Accident | manual | 31d | 2014-10-02 A | 2014-11-13 A | 100% |  |  | India | 248h | 248h |  |  |
| 143 | 1.4.3.1.2 | 4.3.1.2 Claim | manual | 31d | 2014-10-02 A | 2014-11-13 A | 100% |  |  | India | 248h | 248h |  |  |
| 144 | 1.4.3.1.3 | 4.3.1.3 Service Provider | manual | 31d | 2014-10-02 A | 2014-11-13 A | 100% |  |  | India | 248h | 248h |  |  |
| 145 | 1.4.3.1.4 | 4.3.1.4 Notes | manual | 31d | 2014-10-02 A | 2014-11-13 A | 100% |  |  | India | 248h | 248h |  |  |
| 146 | 1.4.3.1.5 | 4.3.1.5 Tasks | manual | 31d | 2014-10-02 A | 2014-11-13 A | 100% |  |  | India | 248h | 248h |  |  |
| 147 | 1.4.3.1.6 | 4.3.1.6 Attachment | manual | 31d | 2014-10-02 A | 2014-11-13 A | 100% |  |  | India | 248h | 248h |  |  |
| 148 | 1.4.3.1.7 | 4.3.1.7 Dairy | manual | 31d | 2014-10-02 A | 2014-11-13 A | 100% |  |  | India | 248h | 248h |  |  |
| 149 | 1.4.3.1.8 | 4.3.1.8 Reassigned Dairy | manual | 31d | 2014-10-02 A | 2014-11-13 A | 100% |  |  | India | 248h | 248h |  |  |
| 150 | 1.4.3.1.9 | 4.3.1.9 Reserve |  | 31d | 2014-11-21 A | 2015-01-02 A | 100% |  |  | India | 248h | 248h |  |  |
| 151 | 1.4.3.1.10 | 4.3.1.10 Reserve History | manual | 31d | 2014-11-21 A | 2015-01-02 | 50% | 15.5d |  | India | 248h | 124h |  |  |
| 152 | 1.4.3.1.11 | 4.3.1.11 Mandate | manual | 31d | 2014-11-21 A | 2015-01-02 A | 100% |  |  | India | 248h | 248h |  |  |
| 153 | 1.4.3.1.12 | 4.3.1.12 Mandate History | manual | 31d | 2014-11-21 A | 2015-01-02 |  | 31d |  | India | 248h |  |  |  |
| 154 | 1.4.3.1.13 | 4.3.1.13 Payment | manual | 31d | 2014-12-05 A | 2015-01-16 | 83% | 5.17d |  | India | 248h | 206.64h |  |  |
| 155 | 1.4.3.1.14 | 4.3.1.14 Payment History | manual | 31d | 2014-12-05 A | 2015-01-16 A | 100% |  |  | India | 248h | 248h |  | Requirement revoked and menu removed from Application |
| 156 | 1.4.3.1.15 | 4.3.1.15 Recovery | manual | 31d | 2015-01-01 A | 2015-02-12 | 70% | 9.3d |  | India | 248h | 173.6h |  | Waiting for functionality |
| 157 | 1.4.3.1.16 | 4.3.1.16 Transaction History | manual | 20d | 2014-10-02 A | 2014-10-29 A | 100% |  |  | India | 160h | 160h |  |  |
| 158 | 1.4.3.1.17 | 4.3.1.17 Alert Indicator for Deductible | manual | 1d? | 2014-10-02 | 2014-10-02 |  |  |  | India | 8h |  |  |  |
| 159 | 1.4.3.2 | 4.3.2 Trains | manual | 31d | 2014-10-02 A | 2014-11-13 A | 100% |  |  | India | 248h | 248h |  |  |
| 160 | 1.4.3.3 | 4.3.3 Taxis | manual | 20d | 2015-03-10 | 2015-04-06 |  |  |  | India | 160h |  |  | Phase 2 delivery |
| 161 | 1.4.3.4 | 4.3.4 Rental Cars | manual | 20d | 2015-04-10 | 2015-05-07 |  |  |  | India | 160h |  |  | Phase 2 delivery |
| 162 | 1.4.3.5 | 4.3.5 Private Cars | manual | 20d | 2015-04-10 | 2015-05-07 |  |  |  | India | 160h |  |  | Phase 2 delivery |

| ID | WBS | Task | Type | Duration | Start | Finish | Complete | Remaining | Resources | Work | Actual work | Items Pending at CDGI | Description |
| --- | --- | --- | --- | --- | --- | --- | --- | --- | --- | --- | --- | --- | --- |
| 163 | 1.4.4 | **4.4 Dashboard** |  | 15d | 2015-02-10 A | 2015-03-02 | 90% | 1.5d | India | 240h | 204h |  |  |
| 164 | 1.4.4.1 | 4.4.1 Sections of Dashboard as per User Group | manual | 15d | 2015-02-10 A | 2015-03-02 | 90% | 1.5d | India | 120h | 108h | Pending clarification from CDGI |  |
| 165 | 1.4.5 | **4.5 Diary Listing** |  | 10d | 2015-02-10 A | 2015-02-23 A | 100% |  | India | 320h | 320h |  |  |
| 166 | 1.4.5.1 | 4.5.1 Diary Items | manual | 10d | 2015-02-10 A | 2015-02-23 A | 100% |  | India | 80h | 80h |  |  |
| 167 | 1.4.5.2 | 4.5.2 Assigned Tasks | manual | 10d | 2015-02-10 A | 2015-02-23 A | 100% |  | India | 80h | 80h |  |  |
| 168 | 1.4.5.3 | 4.5.3 Escalation Tasks | manual | 10d | 2015-02-10 A | 2015-02-23 A | 100% |  | India | 80h | 80h |  |  |
| 169 | 1.4.6 | **4.6 Claim Enquiry** |  | 70d | 2015-01-29 A | 2015-05-06 A | 100% |  | India | 1120h | 1120h |  |  |
| 170 | 1.4.6.1 | 4.6.1 Claims | manual | 30d | 2015-01-29 A | 2015-03-11 A | 100% |  | India | 240h | 240h |  |  |
| 171 | 1.4.6.2 | 4.6.2 Claim Documents Printing | manual | 30d | 2015-03-20 A | 2015-04-30 A | 100% |  | India | 240h | 240h |  |  |
| 172 | 1.4.6.3 | 4.6.3 Job Schedule Enquiry | manual | 10d | 2015-01-29 A | 2015-02-11 A | 100% |  | India | 80h | 80h |  |  |
| 173 | 1.4.7 | **4.7 Document Generation Module** |  | 30d | 2015-03-02 | 2015-04-10 |  |  | India | 480h |  | Pending clarification from CDGI |  |
| 174 | 1.4.7.1 | 4.7.1 Document Generation Criteria | manual | 30d | 2015-03-02 | 2015-04-10 |  |  | India | 240h |  |  | new Task added |
| 175 | 1.4.8 | **4.8 Document Print** |  | 30d | 2015-03-25 | 2015-05-05 |  |  | India | 720h |  | Pending clarification from CDGI |  |
| 176 | 1.4.8.1 | 4.8.1 Claim Payment Document Printing | manual | 30d | 2015-03-25 | 2015-05-05 |  |  | India | 240h |  | waiting To Get Details |  |
| 177 | 1.4.8.2 | 4.8.2 Claim Registration Document Printing | manual | 30d | 2015-03-25 | 2015-05-05 |  |  | India | 240h |  |  |  |
| 178 | 1.4.9 | 4.9 Unreported Claim | manual | 10d | 2015-02-05 A | 2015-02-18 A | 100% |  | India | 80h | 80h | Removed |  |
| 179 | 1.4.10 | **4.10 Security Management System** |  | 30d | 2014-11-10 A | 2014-12-19 A | 100% |  | India | 480h | 480h |  |  |
| 180 | 1.4.10.1 | 4.10.1 Permission Screen UI | manual | 15d | 2014-11-10 A | 2014-11-28 A | 100% |  | India | 120h | 120h | waiting To Get Details | New Task added |
| 181 | 1.4.10.2 | 4.10.2 Permission screen functionality | manual | 15d | 2014-11-10 A | 2014-11-28 A | 100% |  | India | 120h | 120h | waiting To Get Details |  |
| 182 | 1.4.11 | 4.11 UI and Design signed off by client | manual | 5d | 2014-06-17 A | 2014-06-23 A | 100% |  | India | 40h | 40h |  |  |
| 183 | 1.4.12 | **4.12 New Requirement - New Master Tables** |  | 6d | 2015-03-03 A | 2015-03-10 A | 100% |  | India | 96h | 96h |  |  |
| 184 | 1.4.12.1 | 4.12.1 iTrack #2 | manual | 6d | 2015-03-03 A | 2015-03-10 A | 100% |  | India | 48h | 48h |  |  |
| 185 | 1.4.13 | **4.13 New Requirement - LOG Request** |  | 5d | 2015-10-03 A | 2015-10-10 A | 100% |  | India | 96h | 96h |  |  |
| 186 | 1.4.13.1 | 2.13.1 iTrack #10 | manual | 7d | 2015-10-03 A | 2015-10-10 A | 100% |  | India | 56h | 56h |  |  |

Notes:
- 164: India Ebix Remarks: Waiting for functionality
- 165: India Ebix Remarks: Requirement revoked and menu removed from Application
- 166: India Ebix Remarks: Requirement revoked and menu removed from Application
- 167: India Ebix Remarks: Requirement revoked and menu removed from Application
- 168: India Ebix Remarks: Requirement revoked and menu removed from Application
- 173: India Ebix Remarks: On hold due to requirement not yet gathered , as per communication these tasks will be completed after completion of all screens of MCAS application
- 174: India Ebix Remarks: On hold due to requirement not yet gathered , as per communication these tasks will be completed after completion of all screens of MCAS application
- 175: India Ebix Remarks: On hold due to requirement not yet gathered , as per communication these tasks will be completed after completion of all screens of MCAS application
- 176: India Ebix Remarks: On hold due to requirement not yet gathered , as per communication these tasks will be completed after completion of all screens of MCAS application
- 177: India Ebix Remarks: On hold due to requirement not yet gathered , as per communication these tasks will be completed after completion of all screens of MCAS application
- 178: India Ebix Remarks: Removed

| ID | WBS | Task | Type | Duration | Start | Finish | Predecessors | Complete | Remaining | Actual start | Total slack | Resources | Work | Actual work | India Ebix Remarks |
| --- | --- | --- | --- | --- | --- | --- | --- | --- | --- | --- | --- | --- | --- | --- | --- |
| 187 | 1.4.14 | **4.14 New Requirement - FAL Masters** |  | 5d | 2015-10-03 A | 2015-10-10 A |  | 100% |  |  |  | India | 96h | 96h |  |
| 188 | 1.4.14.1 | 2.14.1 iTrack #23 | manual | 7d | 2015-10-03 A | 2015-10-10 A |  | 100% |  |  |  | India | 56h | 56h |  |
| 189 | 1.5 | **5 Iterative Development and Testing** |  | 305d | 2014-05-22 A | 2015-07-22 | 96 | 48% | 157.68d |  |  | India | 31984h | 14938.7h |  |
| 190 | 1.5.1 | **5.1 System Admin** |  | 240d | 2014-07-01 | 2015-06-01 |  | 75% | 60.66d | 2014-05-22 |  | India | 7968h | 5667.91h |  |
| 191 | 1.5.1.1 | **5.1.1 Upload Main Menu** |  | 129d | 2014-09-09 A | 2015-03-06 | 100 | 65% | 45.15d |  | 0d | India | 240h | 104h |  |
| 192 | 1.5.1.1.1 | 5.1.1.1 Vehicle Listing Upload | manual | 10d | 2014-09-09 A | 2014-09-22 | 101 | 80% | 2d |  |  | India | 80h | 64h |  |
| 193 | 1.5.1.1.2 | 5.1.1.2 Bus Captain Listing | manual | 10d | 2015-02-23 A | 2015-03-06 | 102 | 50% | 5d |  |  | India | 80h | 40h | Waiting for functionality |
| 194 | 1.5.1.2 | **5.1.2 User Admin** |  | 212d | 2014-05-22 A | 2015-03-13 | 103 | 99% | 0d |  | 0d | India | 2256h | 1894.64h |  |
| 195 | 1.5.1.2.1 | 5.1.2.1 Entity Details | manual | 10d | 2014-05-22 A | 2014-06-04 A | 104 | 100% |  |  |  | India | 80h | 80h | Requirement revoked and menu removed from Application |
| 196 | 1.5.1.2.2 | 5.1.2.2. User Groups | manual | 10d | 2015-03-02 A | 2015-03-13 A | 105 | 100% |  |  |  | India | 80h | 80h |  |
| 197 | 1.5.1.2.3 | 5.1.2.3 User | manual | 10d | 2015-02-27 A | 2015-03-12 A | 106 | 100% |  |  |  | India | 80h | 80h |  |
| 198 | 1.5.1.2.4 | 5.1.2.4 Department Master | manual | 10d | 2015-02-13 A | 2015-02-26 A | 107 | 100% |  |  |  | India | 80h | 80h |  |
| 199 | 1.5.1.2.5 | 5.1.2.5 Password Setup | manual | 10d | 2015-02-06 A | 2015-02-19 A | 108 | 100% |  |  |  | India | 80h | 80h |  |
| 200 | 1.5.1.2.6 | 5.1.2.6 Release Locked Users | manual | 10d | 2015-02-06 A | 2015-02-19 A | 109 | 100% |  |  |  | India | 80h | 80h |  |
| 201 | 1.5.1.2.7 | 5.1.2.7 Country for User Access | manual | 10d | 2015-02-13 A | 2015-02-26 A | 110 | 100% |  |  |  | India | 80h | 80h | Requirement revoked and menu removed from Application |
| 202 | 1.5.1.3 | **5.1.3 Service Provider** |  | 15d | 2014-11-19 A | 2014-12-09 A |  | 100% |  |  |  | India | 600h | 600h |  |
| 203 | 1.5.1.3.1 | 5.1.3.1 Insurer Master | manual | 10d | 2014-11-19 A | 2014-12-02 A | 112 | 100% |  |  |  | India | 80h | 80h |  |
| 204 | 1.5.1.3.2 | 5.1.3.2 Surveyor Master | manual | 10d | 2014-11-19 A | 2014-12-02 A | 113 | 100% |  |  |  | India | 80h | 80h |  |
| 205 | 1.5.1.3.3 | 5.1.3.3 Lawyer Master | manual | 10d | 2014-11-19 A | 2014-12-02 A | 114 | 100% |  |  |  | India | 80h | 80h |  |
| 206 | 1.5.1.3.4 | 5.1.3.4 Workshop/Dept Master | manual | 10d | 2014-11-25 A | 2014-12-08 A | 115 | 100% |  |  |  | India | 80h | 80h |  |
| 207 | 1.5.1.3.5 | 5.1.3.5 Hospital Master | manual | 10d | 2014-11-26 A | 2014-12-09 A | 116 | 100% |  |  |  | India | 80h | 80h |  |
| 208 | 1.5.1.3.6 | 5.1.3.6 Adjuster Master | manual | 10d | 2014-11-25 A | 2014-12-08 A | 117 | 100% |  |  |  | India | 80h | 80h |  |
| 209 | 1.5.1.4 | 5.1.4 Nature Of Loss | manual | 10d | 2014-06-25 A | 2014-07-08 A | 118 | 100% |  |  |  | India | 80h | 80h |  |
| 210 | 1.5.1.5 | 5.1.5 Type of Loss | manual | 10d | 2014-06-18 A | 2014-07-01 A | 119 | 100% |  |  |  | India | 80h | 80h |  |
| 211 | 1.5.1.6 | 5.1.6 Main Class Business | manual | 10d | 2014-06-18 A | 2014-07-01 A | 120 | 100% |  |  |  | India | 80h | 80h |  |
| 212 | 1.5.1.7 | 5.1.7 Sub Class | manual | 10d | 2014-06-18 A | 2014-07-01 A | 121 | 100% |  |  |  | India | 80h | 80h |  |
| 213 | 1.5.1.8 | 5.1.8 Claims Expense Master | manual | 10d | 2014-06-18 A | 2014-07-01 A | 122 | 100% |  |  |  | India | 80h | 80h |  |
| 214 | 1.5.1.9 | 5.1.9 Claims Close Reason Master | manual | 10d | 2014-06-18 A | 2014-07-01 A | 123 | 100% |  |  |  | India | 80h | 80h |  |
| 215 | 1.5.1.10 | 5.1.10 Currency Master | manual | 10d | 2014-06-18 A | 2014-07-01 A | 124 | 100% |  |  |  | India | 80h | 80h |  |
| 216 | 1.5.1.11 | 5.1.11 Exchange Rate Master | manual | 10d | 2014-06-18 A | 2014-07-01 A | 125 | 100% |  |  |  | India | 80h | 80h |  |
| 217 | 1.5.1.12 | 5.1.12 Vehicle Class | manual | 10d | 2014-06-18 A | 2014-07-01 A | 126 | 100% |  |  |  | India | 80h | 80h |  |
| 218 | 1.5.1.13 | 5.1.13 Vehicle Make | manual | 10d | 2014-06-18 A | 2014-07-01 A | 127 | 100% |  |  |  | India | 80h | 80h |  |
| 219 | 1.5.1.14 | 5.1.14 Vehicle Model | manual | 10d | 2014-06-18 A | 2014-07-01 A | 128 | 100% |  |  |  | India | 80h | 80h |  |
| 220 | 1.5.1.15 | 5.1.15 Insurance Policy | manual | 10d | 2014-06-25 A | 2014-07-08 A | 129 | 100% |  |  |  | India | 80h | 80h |  |
| 221 | 1.5.1.16 | 5.1.16 GST Setting | manual | 10d | 2014-06-18 A | 2014-07-01 A | 130 | 100% |  |  |  | India | 80h | 80h |  |
| 222 | 1.5.1.17 | 5.1.17 Organization | manual | 10d | 2015-01-12 A | 2015-01-23 A | 131 | 100% |  |  |  | India | 80h | 80h |  |
| 223 | 1.5.1.18 | 5.1.18 Claim Officer Duty | manual | 10d | 2014-09-17 A | 2014-09-30 A | 132 | 100% |  |  |  | India | 80h | 80h |  |
| 224 | 1.5.1.19 | 5.1.19 LOU Rate | manual | 10d | 2014-09-24 A | 2014-10-07 A | 133 | 100% |  |  |  | India | 80h | 80h |  |
| 225 | 1.5.1.20 | 5.1.20 Interchange | manual | 10d | 2014-09-24 A | 2014-10-07 A | 134 | 100% |  |  |  | India | 80h | 80h |  |
| 226 | 1.5.1.21 | 5.1.21 Deductible | manual | 124d | 2014-12-29 A | 2015-06-18 | 135 | 8% | 114.17d |  |  | India | 992h | 78.64h |  |
| 227 | 1.5.1.22 | 5.1.22 User Manual | manual | 30d | 2015-02-02 A | 2015-03-13 A |  | 100% |  |  |  | India | 240h | 240h |  |
| 228 | 1.5.1.23 | 5.1.23 Test Approach/Test Cases | manual | 5d | 2015-02-02 A | 2015-02-06 A |  | 100% |  |  |  | India | 40h | 40h |  |
| 229 | 1.5.1.24 | 5.1.24 QA Testing | manual | 20d | 2015-02-11 A | 2015-03-10 A |  | 100% |  |  |  | India | 160h | 160h |  |
| 230 | 1.5.1.25 | 5.1.25 UAT | manual | 20d | 2015-03-10 A | 2015-04-06 |  | 50% | 10d |  |  | Singapore | 160h | 80h |  |

| ID | WBS | Task | Type | Duration | Start | Finish | Predecessors | Complete | Remaining | Actual start | Resources | Work | Actual work | Items Pending at CDGI | India Ebix Remarks |
| --- | --- | --- | --- | --- | --- | --- | --- | --- | --- | --- | --- | --- | --- | --- | --- |
| 231 | 1.5.2 | **5.2 Upload** |  | 76d | 2015-01-30 | 2015-05-15 | 136 | 44% | 42.38d | 2015-02-26 | India | 2872h | 1001.6h |  |  |
| 232 | 1.5.2.1 | 5.2.1 TAC Upload | manual | 57d | 2015-02-26 A | 2015-05-15 | 137 | 90% | 5.7d |  | India | 456h | 410.4h |  |  |
| 233 | 1.5.2.2 | 5.2.2 Claim File Upload | manual | 57d | 2015-02-26 A | 2015-05-15 | 138 | 90% | 5.7d |  | India | 456h | 410.4h |  |  |
| 234 | 1.5.2.3 | 5.2.3 SAP File Upload | manual | 112d | 2015-02-26 | 2015-07-31 | 139 |  |  |  | India | 896h |  | Phase 2 delivery | Phase 2 delivery |
| 235 | 1.5.2.4 | 5.2.4 User Manual | manual | 5d | 2015-04-02 A | 2015-04-08 A | 234 | 100% |  |  | India | 40h | 40h |  |  |
| 236 | 1.5.2.5 | 5.2.5 Test Approach/Test Cases | manual | 2d | 2015-04-01 A | 2015-04-02 A | 139 | 100% |  |  | India | 16h | 16h |  |  |
| 237 | 1.5.2.6 | 5.2.6 QA Testing | manual | 5d | 2015-04-01 | 2015-04-07 | 139 |  |  |  | Singapore | 40h |  |  |  |
| 238 | 1.5.2.7 | 5.2.7 UAT | manual | 10d | 2015-04-08 | 2015-04-21 |  |  |  |  | CDGI | 80h |  |  |  |
| 239 | 1.5.2.8 | 5.2.8 Linking of Unreported Claim | manual | 26d | 2015-04-22 A | 2015-05-27 |  | 60% | 10.4d |  | India | 208h | 124.8h |  |  |
| 240 | 1.5.2.9 | 5.2.9 QA Testing | manual | 3d | 2015-05-27 | 2015-05-29 |  |  |  |  | Sinagpore | 24h |  |  |  |
| 241 | 1.5.2.10 | 5.2.10 User Manual | manual | 4d | 2015-05-29 | 2015-06-03 |  |  |  |  | India | 32h |  |  |  |
| 242 | 1.5.2.11 | 5.2.11 UAT | manual | 2d | 2015-06-03 | 2015-06-04 |  |  |  |  | CDGI | 16h |  |  |  |
| 243 | 1.5.3 | **5.3 Claim** |  | 141d | 2014-11-14 | 2015-05-29 |  | 44% | 78.95d | 2014-10-30 | India | 10960h | 4655.91h |  |  |
| 244 | 1.5.3.1 | **5.3.1 Buses** |  | 92d | 2014-11-14 | 2015-03-23 | 141 | 55% | 41.24d | 2014-10-30 | India | 7312h | 3954.64h |  |  |
| 245 | 1.5.3.1.1 | 5.3.1.1 Accident | manual | 10d | 2014-11-14 A | 2014-11-27 A | 142 | 100% |  |  | India | 80h | 80h |  |  |
| 246 | 1.5.3.1.2 | 5.3.1.2 Claim | manual | 12d | 2014-11-14 A | 2014-12-01 A | 143 | 100% |  |  | India | 96h | 96h |  |  |
| 247 | 1.5.3.1.3 | 5.3.1.3 Service Provider | manual | 15d | 2014-11-14 A | 2014-12-04 A | 144 | 100% |  |  | India | 120h | 120h |  |  |
| 248 | 1.5.3.1.4 | 5.3.1.4 Notes | manual | 10d | 2014-11-14 A | 2014-11-27 A | 145 | 100% |  |  | India | 80h | 80h |  |  |
| 249 | 1.5.3.1.5 | 5.3.1.5 Tasks | manual | 12d | 2014-11-14 A | 2014-12-01 A | 146 | 100% |  |  | India | 96h | 96h |  |  |
| 250 | 1.5.3.1.6 | 5.3.1.6 Attachment | manual | 12d | 2014-11-14 A | 2014-12-01 A | 147 | 100% |  |  | India | 96h | 96h |  |  |
| 251 | 1.5.3.1.7 | 5.3.1.7 Dairy | manual | 20d | 2014-11-14 A | 2014-12-11 A | 148 | 100% |  |  | India | 160h | 160h |  |  |
| 252 | 1.5.3.1.8 | 5.3.1.8 Reassigned Dairy | manual | 10d | 2014-11-14 A | 2014-11-27 A | 149 | 100% |  |  | India | 80h | 80h |  |  |
| 253 | 1.5.3.1.9 | 5.3.1.9 Reserve | manual | 96d | 2015-01-02 A | 2015-05-15 | 150 | 95% | 4.8d |  | India | 768h | 729.6h |  |  |
| 254 | 1.5.3.1.10 | 5.3.1.10 Reserve History | manual | 92d | 2015-01-16 A | 2015-05-24 | 253 | 23% | 70.5d |  | India | 736h | 172h |  |  |
| 255 | 1.5.3.1.11 | 5.3.1.11 Mandate | manual | 96d | 2015-01-02 A | 2015-05-15 | 152 | 60% | 38.4d |  | India | 768h | 460.8h |  |  |
| 256 | 1.5.3.1.12 | 5.3.1.12 Mandate History | manual | 92d | 2015-01-16 A | 2015-05-24 | 255 |  | 92d |  | India | 736h |  |  |  |
| 257 | 1.5.3.1.13 | 5.3.1.13 Payment | manual | 85d | 2015-01-19 A | 2015-05-15 | 154 | 30% | 59.5d |  | India | 680h | 204h |  |  |
| 258 | 1.5.3.1.14 | 5.3.1.14 Payment History | manual | 61d | 2015-03-02 A | 2015-05-24 A | 257 | 100% |  |  | India | 488h | 488h |  | Requirement revoked and menu removed from Application |
| 259 | 1.5.3.1.15 | 5.3.1.15 Recovery | manual | 93d | 2015-02-10 A | 2015-06-18 | 156 | 25% | 69.3d |  | India | 744h | 189.6h |  |  |
| 260 | 1.5.3.1.16 | 5.3.1.16 Transaction History | manual | 38d | 2014-10-30 A | 2014-12-22 A | 157 | 100% |  |  | India | 304h | 304h |  |  |
| 261 | 1.5.3.1.17 | 5.3.1.17 Alert Indicator for Deductible | manual | 68d | 2015-02-24 A | 2015-05-28 |  | 50% | 34d |  | India | 544h | 272h |  | Dependant on claim flow development |
| 262 | 1.5.3.2 | 5.3.2 Trains | manual | 127d | 2014-11-14 A | 2015-05-11 | 159 | 32% | 86.17d |  | India | 1016h | 326.64h |  | Phase 2 delivery |
| 263 | 1.5.3.3 | 5.3.3 Taxis | manual | 53d | 2015-04-07 | 2015-06-18 | 160 |  |  |  | India | 424h |  |  | Phase 2 delivery |
| 264 | 1.5.3.4 | 5.3.4 Rental Cars | manual | 30d | 2015-05-08 | 2015-06-18 | 161 |  |  |  | India | 240h |  |  | Phase 2 delivery |
| 265 | 1.5.3.5 | 5.3.5 Private Cars | manual | 30d | 2015-05-08 | 2015-06-18 | 162 |  |  |  | India | 240h |  |  | Phase 2 delivery |
| 266 | 1.5.3.6 | 5.3.6 User Manual | manual | 30d | 2015-05-11 A | 2015-06-19 |  | 20% | 24d |  | India | 240h | 48h |  |  |
| 267 | 1.5.3.7 | 5.3.7 Test Approach/Test Cases | manual | 5d | 2015-05-22 A | 2015-05-28 |  |  | 5d |  | India | 40h |  |  |  |
| 268 | 1.5.3.8 | 5.3.8 QA Testing | manual | 25d | 2015-05-28 A | 2015-07-01 |  |  | 25d |  | Singapore | 200h |  |  |  |
| 269 | 1.5.3.9 | 5.3.9 UAT | manual | 15d | 2015-07-02 | 2015-07-22 | 268 |  |  |  | CDGI | 120h |  |  |  |

| ID | WBS | Task | Type | Duration | Start | Finish | Predecessors | Complete | Remaining | Actual start | Resources | Work | Actual work | Items Pending at CDGI |
| --- | --- | --- | --- | --- | --- | --- | --- | --- | --- | --- | --- | --- | --- | --- |
| 270 | 1.5.4 | **5.4 Dashboard** |  | 34d | 2015-02-12 A | 2015-03-31 |  | 11% | 30.18d |  | India | 2976h | 304h |  |
| 271 | 1.5.4.1 | 5.4.1 Sections of Dashboard per User Group | manual | 76d | 2015-02-12 A | 2015-05-28 |  | 50% | 38d |  | India | 608h | 304h | waiting To Get Details |
| 272 | 1.5.4.2 | 5.4.2 User Manual | manual | 68d | 2015-02-26 | 2015-05-30 | 271 |  |  |  | India | 544h |  |  |
| 273 | 1.5.4.3 | 5.4.3 Test Approach/Test Cases | manual | 68d | 2015-02-26 | 2015-05-30 | 271 |  |  |  | India | 544h |  |  |
| 274 | 1.5.4.4 | 5.4.4 QA Testing | manual | 68d | 2015-02-26 | 2015-06-01 | 271 |  |  |  | Singapore | 544h |  |  |
| 275 | 1.5.4.5 | 5.4.5 UAT | manual | 58d | 2015-03-12 | 2015-06-01 | 272 |  |  |  | CDGI | 464h |  |  |
| 276 | 1.5.5 | **5.5 Diary Listing** |  | 27d | 2015-02-24 A | 2015-04-01 A |  | 100% |  |  | India | 672h | 672h |  |
| 277 | 1.5.5.1 | 5.5.1 Diary Items | manual | 10d | 2015-02-24 A | 2015-03-09 A | 166 | 100% |  |  | India | 80h | 80h |  |
| 278 | 1.5.5.2 | 5.5.2 Assigned Tasks | manual | 10d | 2015-02-24 A | 2015-03-09 A | 167 | 100% |  |  | India | 80h | 80h |  |
| 279 | 1.5.5.3 | 5.5.3 Escalation Tasks | manual | 17d | 2015-02-24 A | 2015-03-18 A | 168 | 100% |  |  | India | 136h | 136h |  |
| 280 | 1.5.5.4 | 5.5.4 User Manual | manual | 5d | 2015-03-19 A | 2015-03-25 A | 279 | 100% |  |  | India | 40h | 40h |  |
| 281 | 1.5.5.5 | 5.5.5 Test Approach/Test Cases | manual | 5d | 2015-03-26 A | 2015-04-01 A | 280 | 100% |  |  | India | 40h | 40h |  |
| 282 | 1.5.5.6 | 5.5.6 QA Testing | manual | 5d | 2015-03-26 A | 2015-04-01 A | 280 | 100% |  |  | Singapore | 40h | 40h |  |
| 283 | 1.5.5.7 | 5.5.7 UAT | manual | 5d | 2015-03-25 A | 2015-03-31 A | 280 | 100% |  |  | CDGI | 40h | 40h |  |
| 284 | 1.5.6 | **5.6 Claim Enquiry** |  | 67d | 2015-03-11 | 2015-06-11 | 169 | 37% | 42.32d | 2015-01-07 | India | 1144h | 224h |  |
| 285 | 1.5.6.1 | 5.6.1 Claims | manual | 56d | 2015-03-12 A | 2015-05-28 | 170 | 50% | 28d |  | India | 448h | 224h |  |
| 286 | 1.5.6.2 | 5.6.2 User Manual | manual | 5d | 2015-05-26 | 2015-05-30 | 287 |  |  |  | India | 40h |  |  |
| 287 | 1.5.6.3 | 5.6.3 Test Approach/Test Cases | manual | 5d | 2015-05-26 | 2015-05-30 |  |  |  |  | India | 40h |  |  |
| 288 | 1.5.6.4 | 5.6.4 QA Testing | manual | 5d | 2015-01-06 | 2015-01-13 | 287 |  |  |  | Singapore | 40h |  |  |
| 289 | 1.5.6.5 | 5.6.5 UAT | manual | 5d | 2015-01-06 | 2015-01-13 | 288 |  |  |  | CDGI | 40h |  |  |
| 290 | 1.5.7 | **5.7 Document Generation Module** |  | 27d | 2015-04-23 | 2015-05-29 |  |  |  |  | India | 496h |  |  |
| 291 | 1.5.7.1 | 5.7.1 Document Generation Criteria | manual | 15d | 2015-04-23 | 2015-05-13 | 174 |  |  |  | India | 120h |  |  |
| 292 | 1.5.7.2 | 5.7.2 User Manual | manual | 5d | 2015-05-14 | 2015-05-20 | 291 |  |  |  | India | 40h |  | waiting To Get Details |
| 293 | 1.5.7.3 | 5.7.3 Test Approach/Test Cases | manual | 5d | 2015-05-21 | 2015-05-27 | 291 |  |  |  | India | 40h |  | waiting To Get Details |
| 294 | 1.5.7.4 | 5.7.4 QA Testing | manual | 5d | 2015-05-21 | 2015-05-27 | 291 |  |  |  | Singapore | 40h |  | waiting To Get Details |
| 295 | 1.5.7.5 | 5.7.5 UAT | manual | 5d | 2015-05-25 | 2015-05-29 | 292 |  |  |  | CDGI | 40h |  | waiting To Get Details |

Notes:
- 270: India Ebix Remarks: Waiting for functionality
- 271: India Ebix Remarks: pending for requirement detail
- 277: India Ebix Remarks: Requirement revoked and menu removed from Application
- 278: India Ebix Remarks: Requirement revoked and menu removed from Application
- 279: India Ebix Remarks: Requirement revoked and menu removed from Application
- 280: India Ebix Remarks: Requirement revoked and menu removed from Application
- 281: India Ebix Remarks: Requirement revoked and menu removed from Application
- 282: India Ebix Remarks: Requirement revoked and menu removed from Application
- 283: India Ebix Remarks: Requirement revoked and menu removed from Application
- 290: India Ebix Remarks: On hold due to requirement not yet gathered , as per communication these tasks will be completed after completion of all screens of MCAS application
- 291: India Ebix Remarks: On hold due to requirement not yet gathered , as per communication these tasks will be completed after completion of all screens of MCAS application
- 292: India Ebix Remarks: On hold due to requirement not yet gathered , as per communication these tasks will be completed after completion of all screens of MCAS application
- 293: India Ebix Remarks: On hold due to requirement not yet gathered , as per communication these tasks will be completed after completion of all screens of MCAS application
- 294: India Ebix Remarks: On hold due to requirement not yet gathered , as per communication these tasks will be completed after completion of all screens of MCAS application
- 295: India Ebix Remarks: On hold due to requirement not yet gathered , as per communication these tasks will be completed after completion of all screens of MCAS application

| ID | WBS | Task | Type | Duration | Start | Finish | Predecessors | Complete | Remaining | Total slack | Resources | Work | Actual work | Items Pending at CDGI | Description |
| --- | --- | --- | --- | --- | --- | --- | --- | --- | --- | --- | --- | --- | --- | --- | --- |
| 296 | 1.5.8 | **5.8 Document Print** |  | 25d | 2015-05-06 | 2015-06-09 |  |  |  |  | India | 560h |  |  |  |
| 297 | 1.5.8.1 | 5.8.1 Claim Payment Document Printing | manual | 10d | 2015-05-06 | 2015-05-19 | 176 |  |  |  | India | 80h |  | waiting To Get Details |  |
| 298 | 1.5.8.2 | 5.8.2 Claim Registration Document Printing | manual | 10d | 2015-05-06 | 2015-05-19 | 177 |  |  |  | India | 80h |  | waiting To Get Details |  |
| 299 | 1.5.8.3 | 5.8.3 User Manual | manual | 5d | 2015-05-20 | 2015-05-26 | 298 |  |  |  | India | 40h |  | waiting To Get Details | on Going |
| 300 | 1.5.8.4 | 5.8.4 Test Approach/Test Cases | manual | 5d | 2015-05-20 | 2015-05-26 | 298 |  |  |  | India | 40h |  | waiting To Get Details |  |
| 301 | 1.5.8.5 | 5.8.5 QA Testing | manual | 5d | 2015-05-20 | 2015-05-26 | 298 |  |  |  | Singapore | 40h |  | waiting To Get Details |  |
| 302 | 1.5.8.6 | 5.8.6 UAT | manual | 10d | 2015-05-27 | 2015-06-09 | 299 |  |  |  | CDGI | 80h |  | waiting To Get Details |  |
| 303 | 1.5.9 | **5.9 Unreported Claim Menu** |  | 49d | 2015-01-30 A | 2015-04-08 A |  | 100% |  |  | India | 712h | 712h |  |  |
| 304 | 1.5.9.1 | 5.9.1 UI and functionality implementation | manual | 10d | 2015-02-19 A | 2015-03-04 A | 178 | 100% |  |  | India | 80h | 80h |  |  |
| 305 | 1.5.9.2 | 5.9.2 User Manual | manual | 10d | 2015-03-05 A | 2015-03-18 A | 304 | 100% |  |  | India | 80h | 80h |  |  |
| 306 | 1.5.9.3 | 5.9.3 Test Approach/Test Cases | manual | 5d | 2015-03-19 A | 2015-03-25 A | 304 | 100% |  |  | India | 40h | 40h |  |  |
| 307 | 1.5.9.4 | 5.9.4 QA Testing | manual | 5d | 2015-03-19 A | 2015-03-25 A | 305 | 100% |  |  | Singapore | 40h | 40h |  |  |
| 308 | 1.5.9.5 | 5.9.5 UAT | manual | 10d | 2015-03-26 A | 2015-04-08 A | 305 | 100% |  |  | CDGI | 80h | 80h |  |  |
| 309 | 1.5.10 | **5.10 Security Management System** |  | 86d | 2014-12-01 A | 2015-03-30 |  | 26% | 63.81d |  | India | 1184h | 366.64h |  |  |
| 310 | 1.5.10.1 | 5.7.1 Permission Screen UI and Functionality | manual | 10d | 2014-12-01 A | 2014-12-12 A | 180 | 100% |  |  |  | 80h | 80h | waiting To Get Details |  |
| 311 | 1.5.10.2 | 5.7.2 User Manual | manual | 30d | 2015-02-02 | 2015-03-13 |  |  |  |  | India | 240h |  | waiting To Get Details | On Going |
| 312 | 1.5.10.3 | 5.7.3 Test Approach/Test Cases | manual | 5d | 2015-02-02 A | 2015-02-06 | 310 |  | 5d |  | India | 40h |  | waiting To Get Details |  |
| 313 | 1.5.10.4 | 5.7.4 QA Testing | manual | 6d | 2014-12-15 A | 2014-12-22 A | 310 | 100% |  |  | Singapore | 48h | 48h | waiting To Get Details |  |
| 314 | 1.5.10.5 | 5.7.5 UAT | manual | 11d | 2015-03-16 | 2015-03-30 | 311 |  |  |  | CDGI | 88h |  | waiting To Get Details |  |
| 315 | 1.5.11 | **5.11 New Requirement - New Master Tables** |  | 49d | 2015-03-03 A | 2015-05-08 |  | 86% | 6.98d | 0d |  |  |  |  |  |
| 316 | 1.5.11.1 | 5.11.1 iTrack #2 | manual | 39d | 2015-03-03 A | 2015-04-24 A |  | 100% |  |  |  |  |  |  |  |
| 317 | 1.5.11.2 | 5.11.2 User Manual | manual | 6d | 2015-04-28 A | 2015-05-05 A |  | 100% |  |  |  |  |  |  |  |
| 318 | 1.5.11.3 | 5.11.3 Test Approach/Test Cases | manual | 3d | 2015-04-24 A | 2015-04-28 |  | 69% | 0.92d |  |  |  |  |  |  |
| 319 | 1.5.11.4 | 5.11.4 QA Testing | manual | 3d | 2015-04-28 A | 2015-04-30 |  | 3% | 2.92d |  |  |  |  |  |  |
| 320 | 1.5.11.5 | 5.11.5 UAT | manual | 4d | 2015-05-05 | 2015-05-08 |  |  |  |  |  |  |  |  |  |

Notes:
- 296: India Ebix Remarks: On hold due to requirement not yet gathered , as per communication these tasks will be completed after completion of all screens of MCAS application
- 297: India Ebix Remarks: On hold due to requirement not yet gathered , as per communication these tasks will be completed after completion of all screens of MCAS application
- 298: India Ebix Remarks: On hold due to requirement not yet gathered , as per communication these tasks will be completed after completion of all screens of MCAS application
- 299: India Ebix Remarks: On hold due to requirement not yet gathered , as per communication these tasks will be completed after completion of all screens of MCAS application
- 300: India Ebix Remarks: On hold due to requirement not yet gathered , as per communication these tasks will be completed after completion of all screens of MCAS application
- 301: India Ebix Remarks: On hold due to requirement not yet gathered , as per communication these tasks will be completed after completion of all screens of MCAS application
- 302: India Ebix Remarks: On hold due to requirement not yet gathered , as per communication these tasks will be completed after completion of all screens of MCAS application
- 304: India Ebix Remarks: similar to 5.3 Claim task and need to be strike through
- 305: India Ebix Remarks: similar to 5.3 Claim task and need to be strike through
- 306: India Ebix Remarks: similar to 5.3 Claim task and need to be strike through
- 307: India Ebix Remarks: similar to 5.3 Claim task and need to be strike through
- 308: India Ebix Remarks: similar to 5.3 Claim task and need to be strike through
- 309: India Ebix Remarks: similar to 5.3 Claim task and need to be strike through
- 310: India Ebix Remarks: Waiting for functionality

| ID | WBS | Task | Type | Duration | Start | Finish | Predecessors | Complete | Remaining | Total slack | Resources | Work |
| --- | --- | --- | --- | --- | --- | --- | --- | --- | --- | --- | --- | --- |
| 321 | 1.5.12 | **5.12 New Requirement - LOG Request** |  | 49d | 2015-03-03 A | 2015-05-08 |  | 82% | 8.91d | 0d |  |  |
| 322 | 1.5.12.1 | 5.12.1 iTrack #10 | manual | 39d | 2015-03-03 A | 2015-04-24 A |  | 100% |  |  |  |  |
| 323 | 1.5.12.2 | 5.12.2 User Manual | manual | 6d | 2015-04-28 A | 2015-05-05 A |  | 100% |  |  |  |  |
| 324 | 1.5.12.3 | 5.12.3 Test Approach/Test Cases | manual | 3d | 2015-04-24 | 2015-04-28 |  |  |  |  |  |  |
| 325 | 1.5.12.4 | 5.12.4 QA Testing | manual | 3d | 2015-04-28 | 2015-04-30 |  |  |  |  |  |  |
| 326 | 1.5.12.5 | 5.12.5 UAT | manual | 4d | 2015-05-05 | 2015-05-08 |  |  |  |  |  |  |
| 327 | 1.5.13 | **5.13 New Requirement - FAL Masters** |  | 49d | 2015-03-03 A | 2015-05-08 |  | 86% | 6.98d |  |  |  |
| 328 | 1.5.13.1 | 5.13.1 iTrack #23 | manual | 39d | 2015-03-03 A | 2015-04-24 A |  | 100% |  |  |  |  |
| 329 | 1.5.13.2 | 5.13.2 User Manual | manual | 6d | 2015-04-28 A | 2015-05-05 A |  | 100% |  |  |  |  |
| 330 | 1.5.13.3 | 5.13.3 Test Approach/Test Cases | manual | 3d | 2015-04-24 A | 2015-04-28 |  | 69% | 0.92d |  |  |  |
| 331 | 1.5.13.4 | 5.13.4 QA Testing | manual | 3d | 2015-04-28 A | 2015-04-30 |  | 3% | 2.92d |  |  |  |
| 332 | 1.5.13.5 | 5.13.5 UAT | manual | 4d | 2015-05-05 | 2015-05-08 |  |  |  |  |  |  |
| 333 | 1.6 | **6 QA Test Scripts** |  | 20d | 2015-07-23 | 2015-08-19 | 189 |  |  |  | India | 320h |
| 334 | 1.6.1 | 6.1 Testing Approach Development/Confirmation | manual | 5d | 2015-07-23 | 2015-07-29 |  |  |  |  | India | 40h |
| 335 | 1.6.2 | 6.2 Test Condition Development | manual | 5d | 2015-08-06 | 2015-08-12 | 334 |  |  |  | India | 40h |
| 336 | 1.6.3 | 6.3 Test Script Development | manual | 5d | 2015-08-20 | 2015-08-26 | 335 |  |  |  | India | 40h |
| 337 | 1.6.4 | 6.4 Expected Results Development | manual | 5d | 2015-09-03 | 2015-09-09 | 336 |  |  |  | India | 40h |
| 338 | 1.7 | **7 QA Testing** |  | 20d | 2015-09-09 | 2015-10-06 | 337 |  |  |  | India | 320h |
| 339 | 1.7.1 | 7.1 QA Testing | manual | 10d | 2015-09-09 | 2015-09-22 | 337 |  |  |  | India | 80h |
| 340 | 1.7.2 | 7.2 Review results | manual | 10d | 2015-09-23 | 2015-10-06 | 339 |  |  |  | India | 80h |
| 341 | 1.8 | **8 End-to-end UAT** |  | 20d | 2015-10-07 | 2015-11-03 | 340 |  |  |  | Singapore | 320h |
| 342 | 1.8.1 | 8.1 Access to UAT Environment | manual | 10d | 2015-10-07 | 2015-10-20 | 340 |  |  |  | Singapore | 80h |
| 343 | 1.8.2 | 8.2 Product Testing | manual | 10d | 2015-10-21 | 2015-11-03 | 342 |  |  |  | Singapore | 80h |
| 344 | 1.9 | **9 Client UAT** |  | 20d | 2015-10-07 | 2015-11-03 |  |  |  |  | CDGI | 320h |
| 345 | 1.9.1 | 9.1 Access to UAT Environment | manual | 10d | 2015-10-07 | 2015-10-20 |  |  |  |  | CDGI | 80h |
| 346 | 1.9.2 | 9.2 Product Testing | manual | 10d | 2015-10-21 | 2015-11-03 |  |  |  |  | CDGI | 80h |

| ID | WBS | Task | Type | Duration | Start | Finish | Predecessors | Resources | Work |
| --- | --- | --- | --- | --- | --- | --- | --- | --- | --- |
| 347 | 1.10 | **10 Deployment** |  | 26d | 2015-11-04 | 2015-12-09 |  | Singapore | 416h |
| 348 | 1.10.1 | 10.1 Deployment Approach | manual | 5d | 2015-11-04 | 2015-11-10 |  | Singapore | 40h |
| 349 | 1.10.2 | 10.2 Platform Readiness | manual | 5d | 2015-11-11 | 2015-11-17 | 348 | Singapore | 40h |
| 350 | 1.10.3 | 10.3 Software Installation | manual | 5d | 2015-11-18 | 2015-11-24 | 349 | Singapore | 40h |
| 351 | 1.10.4 | 10.4 UAT Sign-off | manual | 1d | 2015-11-25 | 2015-11-25 | 350 | Singapore | 8h |
| 352 | 1.10.5 | 10.5 Go Live Preparation | manual | 5d | 2015-11-26 | 2015-12-02 | 351 | Singapore | 40h |
| 353 | 1.10.6 | 10.6 Support Kick Off | manual | 5d | 2015-12-03 | 2015-12-09 | 352 | Singapore | 40h |
