# New Project plan V1

Schedule from MS Project, 2014-01-01 to 2015-12-09, A marks actual dates.

## Calendars

- Standard: Mon-Fri 08:00-12:00, 13:00-17:00; Sat-Sun off.

## Resources

| Resource |
| --- |
| Singapore |
| India |
| CDGI |
| I |
| Sina |
| Sinagpore |

## Schedule

| ID | WBS | Task | Type | Duration | Start | Finish | Complete | Remaining | Actual finish | Resources | Work | Actual work | India Ebix Remarks | Items Pending at Singapore |
| --- | --- | --- | --- | --- | --- | --- | --- | --- | --- | --- | --- | --- | --- | --- |
| 1 | 1 | **MCAS Project** |  | 506d | 2014-01-01 A | 2015-12-09 | 99% | 2.42d |  |  | 87136h | 87136h |  |  |
| 2 | 1.1 | **PHASE 1** |  | 506d | 2014-01-01 A | 2015-12-09 A | 100% |  |  |  | 87136h | 87136h |  |  |
| 3 | 1.1.1 | **1 Project Initiation** |  | 262d | 2014-01-01 A | 2015-01-01 A | 100% |  |  | Singapore | 8384h | 8384h |  |  |
| 4 | 1.1.1.1 | 1.1 Project Scope Definition | manual | 262d | 2014-01-01 A | 2015-01-01 A | 100% |  |  | Singapore | 2096h | 2096h |  |  |
| 5 | 1.1.1.2 | 1.2 Project Plan Development | manual | 262d | 2014-01-01 A | 2015-01-01 A | 100% |  |  | Singapore | 2096h | 2096h |  |  |
| 6 | 1.1.1.3 | 1.3 Project Scope Completed | manual | 262d | 2014-01-01 A | 2015-01-01 A | 100% |  |  | Singapore | 2096h | 2096h |  |  |
| 7 | 1.1.2 | **2 Requirement Gathering** |  | 122d | 2015-01-01 A | 2015-06-19 | 100% |  | 2015-06-30 | Singapore | 17600h | 17600h |  |  |
| 8 | 1.1.2.1 | **2.1 System Admin Requirements** |  | 32d | 2015-01-01 A | 2015-02-13 A | 100% |  |  | Singapore | 7872h | 7872h |  |  |
| 9 | 1.1.2.1.1 | **2.1.1 Upload Main Menu** |  | 32d | 2015-01-01 A | 2015-02-13 A | 100% |  |  | Singapore | 768h | 768h |  |  |
| 10 | 1.1.2.1.1.1 | 2.1.1.1 Vehicle Listing Upload | manual | 32d | 2015-01-01 A | 2015-02-13 A | 100% |  |  | Singapore | 256h | 256h |  |  |
| 11 | 1.1.2.1.1.2 | 2.1.1.2 Bus Captain Listing | manual | 32d | 2015-01-01 A | 2015-02-13 A | 100% |  |  | Singapore | 256h | 256h | Waiting for sample upload file |  |
| 12 | 1.1.2.1.2 | **2.1.2 User Admin** |  | 32d | 2015-01-01 A | 2015-02-13 A | 100% |  |  | Singapore | 2048h | 2048h |  |  |
| 13 | 1.1.2.1.2.1 | 2.1.2.1 Entity Details | manual | 32d | 2015-01-01 A | 2015-02-13 A | 100% |  |  | Singapore | 256h | 256h |  | Singapore ebix to Provide functional details |
| 14 | 1.1.2.1.2.2 | 2.1.2.2. User Groups | manual | 32d | 2015-01-01 A | 2015-02-13 A | 100% |  |  | Singapore | 256h | 256h |  | Singapore ebix to Provide functional details |
| 15 | 1.1.2.1.2.3 | 2.1.2.3 User | manual | 32d | 2015-01-01 A | 2015-02-13 A | 100% |  |  | Singapore | 256h | 256h |  |  |
| 16 | 1.1.2.1.2.4 | 2.1.2.4 Department Master | manual | 32d | 2015-01-01 A | 2015-02-13 A | 100% |  |  | Singapore | 256h | 256h |  | Singapore ebix to Provide functional details |
| 17 | 1.1.2.1.2.5 | 2.1.2.5 Password Setup | manual | 32d | 2015-01-01 A | 2015-02-13 A | 100% |  |  | Singapore | 256h | 256h |  | Singapore ebix to Provide functional details |
| 18 | 1.1.2.1.2.6 | 2.1.2.6 Release Locked Users | manual | 32d | 2015-01-01 A | 2015-02-13 A | 100% |  |  | Singapore | 256h | 256h |  | Singapore ebix to Provide functional details |
| 19 | 1.1.2.1.2.7 | 2.1.2.7 Country for User Access | manual | 32d | 2015-01-01 A | 2015-02-13 A | 100% |  |  | Singapore | 256h | 256h |  | Singapore ebix to Provide functional details |
| 20 | 1.1.2.1.3 | **2.1.3 Service Provider** |  | 22d | 2015-01-01 A | 2015-01-30 A | 100% |  |  | Singapore | 1232h | 1232h |  |  |
| 21 | 1.1.2.1.3.1 | 2.1.3.1 Insurer Master | manual | 22d | 2015-01-01 A | 2015-01-30 A | 100% |  |  | Singapore | 176h | 176h |  |  |
| 22 | 1.1.2.1.3.2 | 2.1.3.2 Surveyor Master | manual | 22d | 2015-01-01 A | 2015-01-30 A | 100% |  |  | Singapore | 176h | 176h |  |  |
| 23 | 1.1.2.1.3.3 | 2.1.3.3 Lawyer Master | manual | 22d | 2015-01-01 A | 2015-01-30 A | 100% |  |  | Singapore | 176h | 176h |  |  |
| 24 | 1.1.2.1.3.4 | 2.1.3.4 Workshop/Dept Master | manual | 22d | 2015-01-01 A | 2015-01-30 A | 100% |  |  | Singapore | 176h | 176h |  |  |
| 25 | 1.1.2.1.3.5 | 2.1.3.5 Hospital Master | manual | 22d | 2015-01-01 A | 2015-01-30 A | 100% |  |  | Singapore | 176h | 176h |  |  |
| 26 | 1.1.2.1.3.6 | 2.1.3.6 Adjuster Master | manual | 22d | 2015-01-01 A | 2015-01-30 A | 100% |  |  | Singapore | 176h | 176h |  |  |
| 27 | 1.1.2.1.4 | 2.1.4 Nature Of Loss | manual | 22d | 2015-01-01 A | 2015-01-30 A | 100% |  |  | Singapore | 176h | 176h |  |  |
| 28 | 1.1.2.1.5 | 2.1.5 Type of Loss | manual | 22d | 2015-01-01 A | 2015-01-30 A | 100% |  |  | Singapore | 176h | 176h |  |  |
| 29 | 1.1.2.1.6 | 2.1.6 Main Class Business | manual | 22d | 2015-01-01 A | 2015-01-30 A | 100% |  |  | Singapore | 176h | 176h |  |  |
| 30 | 1.1.2.1.7 | 2.1.7 Sub Class | manual | 22d | 2015-01-01 A | 2015-01-30 A | 100% |  |  | Singapore | 176h | 176h |  |  |
| 31 | 1.1.2.1.8 | 2.1.8 Claims Expense Master | manual | 22d | 2015-01-01 A | 2015-01-30 A | 100% |  |  | Singapore | 176h | 176h |  |  |
| 32 | 1.1.2.1.9 | 2.1.9 Claims Close Reason Master | manual | 22d | 2015-01-01 A | 2015-01-30 A | 100% |  |  | Singapore | 176h | 176h |  |  |
| 33 | 1.1.2.1.10 | 2.1.10 Currency Master | manual | 22d | 2015-01-01 A | 2015-01-30 A | 100% |  |  | Singapore | 176h | 176h |  |  |
| 34 | 1.1.2.1.11 | 2.1.11 Exchange Rate Master | manual | 22d | 2015-01-01 A | 2015-01-30 A | 100% |  |  | Singapore | 176h | 176h |  |  |
| 35 | 1.1.2.1.12 | 2.1.12 Vehicle Class | manual | 32d | 2015-01-01 A | 2015-02-13 A | 100% |  |  | Singapore | 256h | 256h |  |  |
| 36 | 1.1.2.1.13 | 2.1.13 Vehicle Make | manual | 32d | 2015-01-01 A | 2015-02-13 A | 100% |  |  | Singapore | 256h | 256h |  |  |
| 37 | 1.1.2.1.14 | 2.1.14 Vehicle Model | manual | 32d | 2015-01-01 A | 2015-02-13 A | 100% |  |  | Singapore | 256h | 256h |  |  |
| 38 | 1.1.2.1.15 | 2.1.15 Insurance Policy | manual | 22d | 2015-01-01 A | 2015-01-30 A | 100% |  |  | Singapore | 176h | 176h |  |  |
| 39 | 1.1.2.1.16 | 2.1.16 GST Setting | manual | 22d | 2015-01-01 A | 2015-01-30 A | 100% |  |  | Singapore | 176h | 176h |  |  |
| 40 | 1.1.2.1.17 | 2.1.17 Organization | manual | 22d | 2015-01-01 A | 2015-01-30 A | 100% |  |  | Singapore | 176h | 176h |  |  |
| 41 | 1.1.2.1.18 | 2.1.18 Claim Officer Duty | manual | 22d | 2015-01-01 A | 2015-01-30 A | 100% |  |  | Singapore | 176h | 176h |  |  |
| 42 | 1.1.2.1.19 | 2.1.19 LOU Rate | manual | 22d | 2015-01-01 A | 2015-01-30 A | 100% |  |  | Singapore | 176h | 176h |  |  |
| 43 | 1.1.2.1.20 | 2.1.20 Interchange | manual | 32d | 2015-01-01 A | 2015-02-13 A | 100% |  |  | Singapore | 256h | 256h |  |  |
| 44 | 1.1.2.1.21 | 2.1.21 Deductible | manual | 32d | 2015-01-01 A | 2015-02-13 A | 100% |  |  | Singapore | 256h | 256h |  |  |

| ID | WBS | Task | Type | Duration | Start | Finish | Complete | Actual finish | Resources | Work | Actual work | Items Pending at CDGI | India Ebix Remarks |
| --- | --- | --- | --- | --- | --- | --- | --- | --- | --- | --- | --- | --- | --- |
| 45 | 1.1.2.2 | **2.2 Upload Requirements** |  | 17d | 2015-01-29 A | 2015-02-20 | 100% | 2015-06-30 | Singapore | 584h | 584h |  |  |
| 46 | 1.1.2.2.1 | 2.2.1 TAC Upload | manual | 17d | 2015-01-29 A | 2015-02-20 A | 100% |  | Singapore | 136h | 136h |  |  |
| 47 | 1.1.2.2.2 | 2.2.2 Claim File Upload | manual | 17d | 2015-01-29 A | 2015-02-20 A | 100% |  | Singapore | 136h | 136h |  |  |
| 48 | 1.1.2.2.3 | 2.2.3 SAP File Upload | manual | 22d | 2015-06-01 A | 2015-06-30 A | 100% |  | Singapore | 176h | 176h | Phase 2 delivery | Phase 2 delivery |
| 49 | 1.1.2.3 | **2.3 Claim Requirements** |  | 22d | 2015-01-01 A | 2015-01-30 | 100% | 2015-06-12 | Singapore | 3792h | 3792h |  |  |
| 50 | 1.1.2.3.1 | **2.3.1 Buses** |  | 22d | 2015-01-01 A | 2015-01-30 | 100% | 2015-02-13 | Singapore | 2912h | 2912h |  |  |
| 51 | 1.1.2.3.1.1 | 2.3.1.1 Accident | manual | 22d | 2015-01-01 A | 2015-01-30 A | 100% |  | Singapore | 176h | 176h |  |  |
| 52 | 1.1.2.3.1.2 | 2.3.1.2 Claim | manual | 22d | 2015-01-01 A | 2015-01-30 A | 100% |  | Singapore | 176h | 176h |  |  |
| 53 | 1.1.2.3.1.3 | 2.3.1.3 Service Provider | manual | 22d | 2015-01-01 A | 2015-01-30 A | 100% |  | Singapore | 176h | 176h |  |  |
| 54 | 1.1.2.3.1.4 | 2.3.1.4 Notes | manual | 22d | 2015-01-01 A | 2015-01-30 A | 100% |  | Singapore | 176h | 176h |  |  |
| 55 | 1.1.2.3.1.5 | 2.3.1.5 Tasks | manual | 22d | 2015-01-01 A | 2015-01-30 A | 100% |  | Singapore | 176h | 176h |  |  |
| 56 | 1.1.2.3.1.6 | 2.3.1.6 Attachment | manual | 22d | 2015-01-01 A | 2015-01-30 A | 100% |  | Singapore | 176h | 176h |  |  |
| 57 | 1.1.2.3.1.7 | 2.3.1.7 Dairy | manual | 22d | 2015-01-01 A | 2015-01-30 A | 100% |  | Singapore | 176h | 176h |  |  |
| 58 | 1.1.2.3.1.8 | 2.3.1.8 Reassigned Dairy | manual | 22d | 2015-01-01 A | 2015-01-30 A | 100% |  | Singapore | 176h | 176h |  |  |
| 59 | 1.1.2.3.1.9 | 2.3.1.9 Reserve | manual | 22d | 2015-01-01 A | 2015-01-30 A | 100% |  | Singapore | 176h | 176h |  |  |
| 60 | 1.1.2.3.1.10 | 2.3.1.10 Reserve History | manual | 22d | 2015-01-01 A | 2015-01-30 A | 100% |  | Singapore | 176h | 176h |  |  |
| 61 | 1.1.2.3.1.11 | 2.3.1.11 Mandate | manual | 22d | 2015-01-01 A | 2015-01-30 A | 100% |  | Singapore | 176h | 176h |  |  |
| 62 | 1.1.2.3.1.12 | 2.3.1.12 Mandate History | manual | 22d | 2015-01-01 A | 2015-01-30 A | 100% |  | Singapore | 176h | 176h |  |  |
| 63 | 1.1.2.3.1.13 | 2.3.1.13 Payment | manual | 22d | 2015-01-01 A | 2015-01-30 A | 100% |  | Singapore | 176h | 176h |  |  |
| 64 | 1.1.2.3.1.14 | 2.3.1.14 Payment History | manual | 22d | 2015-01-01 A | 2015-01-30 A | 100% |  | Singapore | 176h | 176h |  |  |
| 65 | 1.1.2.3.1.15 | 2.3.1.15 Recovery | manual | 32d | 2015-01-01 A | 2015-02-13 A | 100% |  | Singapore | 256h | 256h |  |  |
| 66 | 1.1.2.3.1.16 | 2.3.1.16 Transaction History | manual | 1d? | 2015-01-01 A | 2015-01-01 A | 100% |  | Singapore | 8h | 8h |  |  |
| 67 | 1.1.2.3.1.17 | 2.3.1.17 Alert Indicator for Deductible | manual | 1d? | 2015-01-01 A | 2015-01-01 A | 100% |  | Singapore | 8h | 8h |  |  |
| 68 | 1.1.2.3.2 | 2.3.2 Trains | manual | 22d | 2015-02-16 A | 2015-03-17 A | 100% |  | Singapore | 176h | 176h |  | Phase 2 delivery |
| 69 | 1.1.2.3.3 | 2.3.3 Taxis | manual | 22d | 2015-03-17 A | 2015-04-15 A | 100% |  | Singapore | 176h | 176h |  | Phase 2 delivery |
| 70 | 1.1.2.3.4 | 2.3.4 Rental Cars | manual | 22d | 2015-04-15 A | 2015-05-14 A | 100% |  | Singapore | 176h | 176h |  | Phase 2 delivery |
| 71 | 1.1.2.3.5 | 2.3.5 Private Cars | manual | 22d | 2015-05-14 A | 2015-06-12 A | 100% |  | Singapore | 176h | 176h |  | Phase 2 delivery |
| 72 | 1.1.2.4 | 2.4 Dashboard Requirements | manual | 37d | 2015-01-01 A | 2015-02-20 A | 100% |  | Singapore | 296h | 296h | Pending clarification from CDGI | UI of permission start development |

| ID | WBS | Task | Type | Duration | Start | Finish | Complete | Actual start | Resources | Work | Actual work | India Ebix Remarks | Description | Items Pending at CDGI |
| --- | --- | --- | --- | --- | --- | --- | --- | --- | --- | --- | --- | --- | --- | --- |
| 73 | 1.1.2.5 | **2.5 Diary Listing** |  | 37d | 2015-01-01 A | 2015-02-20 A | 100% |  | Singapore | 1184h | 1184h | Requirement revoked and menu removed from Application |  |  |
| 74 | 1.1.2.5.1 | 2.5.1 Diary Items | manual | 37d | 2015-01-01 A | 2015-02-20 A | 100% |  | Singapore | 296h | 296h | Requirement revoked and menu removed from Application |  |  |
| 75 | 1.1.2.5.2 | 2.5.2 Assigned Tasks | manual | 37d | 2015-01-01 A | 2015-02-20 A | 100% |  | Singapore | 296h | 296h | Requirement revoked and menu removed from Application |  |  |
| 76 | 1.1.2.5.3 | 2.5.3 Escalation Tasks | manual | 37d | 2015-01-01 A | 2015-02-20 A | 100% |  | Singapore | 296h | 296h | Requirement revoked and menu removed from Application |  |  |
| 77 | 1.1.2.6 | **2.6 Claim Enquiry Requirements** |  | 27d | 2015-01-29 A | 2015-03-06 A | 100% |  | Singapore | 864h | 864h |  |  |  |
| 78 | 1.1.2.6.1 | 2.6.1 Claims | manual | 27d | 2015-01-29 A | 2015-03-06 A | 100% |  | Singapore | 216h | 216h |  |  |  |
| 79 | 1.1.2.6.2 | 2.6.2 Claim Documents Printing | manual | 27d | 2015-01-29 A | 2015-03-06 A | 100% |  | Singapore | 216h | 216h |  |  |  |
| 80 | 1.1.2.6.3 | 2.6.3 Job Schedule Enquiry | manual | 27d | 2015-01-29 A | 2015-03-06 A | 100% |  | Singapore | 216h | 216h |  |  |  |
| 81 | 1.1.2.7 | **2.7 Document Generation Module** |  | 27d | 2015-01-29 A | 2015-03-06 A | 100% |  | Singapore | 432h | 432h | Phase 2 delivery |  |  |
| 82 | 1.1.2.7.1 | 2.7.1 Document Generation Criteria | manual | 27d | 2015-01-29 A | 2015-03-06 A | 100% |  | Singapore | 216h | 216h | Phase 2 delivery | new Task added |  |
| 83 | 1.1.2.8 | **2.8 Document Print** |  | 27d | 2015-01-29 A | 2015-03-06 A | 100% |  | Singapore | 648h | 648h | Phase 2 delivery |  |  |
| 84 | 1.1.2.8.1 | 2.7.1 Claim Payment Document Printing | manual | 27d | 2015-01-29 A | 2015-03-06 A | 100% |  | Singapore | 216h | 216h | Phase 2 delivery |  |  |
| 85 | 1.1.2.8.2 | 2.7.2 Claim Registration Document Printing | manual | 27d | 2015-01-29 A | 2015-03-06 A | 100% |  | Singapore | 216h | 216h | Phase 2 delivery |  |  |
| 86 | 1.1.2.9 | 2.9 Unreported Claim | manual | 27d | 2015-01-29 A | 2015-03-06 A | 100% |  | Singapore | 216h | 216h |  |  |  |
| 87 | 1.1.2.10 | **2.10 Security Management System** |  | 27d | 2015-01-29 A | 2015-03-06 A | 100% |  | Singapore | 648h | 648h |  |  |  |
| 88 | 1.1.2.10.1 | 2.10.1 Permission Screen UI | manual | 27d | 2015-01-29 A | 2015-03-06 A | 100% |  | Singapore | 216h | 216h |  | New Task added | waiting To Get Details |
| 89 | 1.1.2.10.2 | 2.10.2 Permission screen functionality | manual | 27d | 2015-01-29 A | 2015-03-06 A | 100% |  | Singapore | 216h | 216h |  |  | waiting To Get Details |
| 90 | 1.1.2.11 | **2.11 Requirements signed off by client** |  | 5d | 2015-06-15 | 2015-06-19 A | 100% | 2015-01-01 | Singapore | 56h | 56h |  |  |  |
| 91 | 1.1.2.11.1 | **2.12 New Requirement - New Master Tables** |  | 1d? | 2015-01-01 A | 2015-01-01 A | 100% |  | Singapore | 16h | 16h |  |  |  |
| 92 | 1.1.2.11.1.1 | 2.12.1 iTrack #2 | manual | 1d? | 2015-01-01 A | 2015-01-01 A | 100% |  | Singapore | 8h | 8h |  |  |  |
| 93 | 1.1.2.12 | **2.13 New Requirement - LOG Request** |  | 1d? | 2015-01-01 A | 2015-01-01 A | 100% |  | Singapore | 16h | 16h |  |  |  |
| 94 | 1.1.2.12.1 | 2.13.1 iTrack #10 | manual | 1d? | 2015-01-01 A | 2015-01-01 A | 100% |  | Singapore | 8h | 8h |  |  |  |
| 95 | 1.1.2.13 | **2.14 New Requirement - FAL Masters** |  | 1d? | 2015-01-01 A | 2015-01-01 A | 100% |  | Singapore | 16h | 16h |  |  |  |
| 96 | 1.1.2.13.1 | 2.14.1 iTrack #23 | manual | 1d? | 2015-01-01 A | 2015-01-01 A | 100% |  | Singapore | 8h | 8h |  |  |  |

| ID | WBS | Task | Type | Duration | Start | Finish | Predecessors | Complete | Actual start | Actual finish | Constraint | Resources | Work | Actual work | Items Pending at CDGI | India Ebix Remarks | Items Pending at Singapore |
| --- | --- | --- | --- | --- | --- | --- | --- | --- | --- | --- | --- | --- | --- | --- | --- | --- | --- |
| 97 | 1.1.3 | **3 Requirements Finalized in TFS** |  | 392d | 2014-03-03 A | 2015-09-01 A |  | 100% |  |  |  | India | 6272h | 6272h |  |  |  |
| 98 | 1.1.3.1 | 3.1 Document Upload in TFS | manual | 392d | 2014-03-03 A | 2015-09-01 A |  | 100% |  |  |  | India | 3136h | 3136h |  |  |  |
| 99 | 1.1.4 | **4 Design UI and Functionality** |  | 299d | 2014-05-01 A | 2015-06-23 |  | 100% |  | 2015-10-10 |  | India | 21200h | 21200h |  |  |  |
| 100 | 1.1.4.1 | **4.1 System Admin Requirements** |  | 307d | 2014-05-01 A | 2015-07-03 A |  | 100% |  |  |  | India | 8648h | 8648h | Pending clarification from CDGI |  |  |
| 101 | 1.1.4.1.1 | **4.1.1 Upload Main Menu** |  | 192d | 2014-06-01 | 2015-02-23 A |  | 100% | 2014-05-05 |  |  | India | 1616h | 1616h |  |  |  |
| 102 | 1.1.4.1.1.1 | 4.1.1.1 Vehicle Listing Upload |  | 20d | 2014-05-05 A | 2014-07-02 A |  | 100% |  |  | finish no earlier than 2014-07-02 | India | 160h | 160h |  |  |  |
| 103 | 1.1.4.1.1.2 | 4.1.1.2 Bus Captain Listing | manual | 10d | 2015-02-10 A | 2015-02-23 A | 11 | 100% |  |  |  | India | 80h | 80h |  | Waiting to get upload sample filel |  |
| 104 | 1.1.4.1.2 | **4.1.2 User Admin** |  | 217d | 2014-05-01 A | 2015-02-27 A | 12 | 100% |  |  |  | India | 2416h | 2416h |  |  |  |
| 105 | 1.1.4.1.2.1 | 4.1.2.1 Entity Details | manual | 15d | 2014-05-01 A | 2014-05-21 A | 13 | 100% |  |  |  | India | 120h | 120h |  | Requirement revoked and menu removed from Application | Singapore ebix to Provide functional details |
| 106 | 1.1.4.1.2.2 | 4.1.2.2. User Groups | manual | 20d | 2015-02-02 A | 2015-02-27 A | 14 | 100% |  |  |  | India | 160h | 160h |  |  | Singapore ebix to Provide functional details |
| 107 | 1.1.4.1.2.3 | 4.1.2.3 User | manual | 20d | 2015-01-30 A | 2015-02-26 A | 15 | 100% |  |  |  | India | 160h | 160h |  |  |  |
| 108 | 1.1.4.1.2.4 | 4.1.2.4 Department Master | manual | 10d | 2015-01-30 A | 2015-02-12 A | 16 | 100% |  |  |  | India | 80h | 80h |  |  | Singapore ebix to Provide functional details |
| 109 | 1.1.4.1.2.5 | 4.1.2.5 Password Setup | manual | 5d | 2015-01-30 A | 2015-02-05 A | 17 | 100% |  |  |  | India | 40h | 40h |  |  | Singapore ebix to Provide functional details |
| 110 | 1.1.4.1.2.6 | 4.1.2.6 Release Locked Users | manual | 5d | 2015-01-30 A | 2015-02-05 A | 18 | 100% |  |  |  | India | 40h | 40h |  |  | Singapore ebix to Provide functional details |
| 111 | 1.1.4.1.2.7 | 4.1.2.7 Country for User Access | manual | 10d | 2015-01-30 A | 2015-02-12 A | 19 | 100% |  |  |  | India | 80h | 80h |  | Requirement revoked and menu removed from Application | Singapore ebix to Provide functional details |
| 112 | 1.1.4.1.3 | **4.1.3 Service Provider** |  | 10d | 2014-11-05 A | 2014-11-18 A |  | 100% |  |  |  | India | 560h | 560h |  |  |  |
| 113 | 1.1.4.1.3.1 | 4.1.3.1 Insurer Master | manual | 10d | 2014-11-05 A | 2014-11-18 A |  | 100% |  |  |  | India | 80h | 80h |  |  |  |
| 114 | 1.1.4.1.3.2 | 4.1.3.2 Surveyor Master | manual | 10d | 2014-11-05 A | 2014-11-18 A |  | 100% |  |  |  | India | 80h | 80h |  |  |  |
| 115 | 1.1.4.1.3.3 | 4.1.3.3 Lawyer Master | manual | 10d | 2014-11-05 A | 2014-11-18 A |  | 100% |  |  |  | India | 80h | 80h |  |  |  |
| 116 | 1.1.4.1.3.4 | 4.1.3.4 Workshop/Dept Master | manual | 10d | 2014-11-05 A | 2014-11-18 A |  | 100% |  |  |  | India | 80h | 80h |  |  |  |
| 117 | 1.1.4.1.3.5 | 4.1.3.5 Hospital Master | manual | 10d | 2014-11-05 A | 2014-11-18 A |  | 100% |  |  |  | India | 80h | 80h |  |  |  |
| 118 | 1.1.4.1.3.6 | 4.1.3.6 Adjuster Master | manual | 10d | 2014-11-05 A | 2014-11-18 A |  | 100% |  |  |  | India | 80h | 80h |  |  |  |
| 119 | 1.1.4.1.4 | 4.1.4 Nature Of Loss | manual | 15d | 2014-06-04 A | 2014-06-24 A |  | 100% |  |  |  | India | 120h | 120h |  |  |  |
| 120 | 1.1.4.1.5 | 4.1.5 Type of Loss | manual | 10d | 2014-06-04 A | 2014-06-17 A |  | 100% |  |  |  | India | 80h | 80h |  | Waiting for functionality |  |
| 121 | 1.1.4.1.6 | 4.1.6 Main Class Business | manual | 10d | 2014-06-04 A | 2014-06-17 A |  | 100% |  |  |  | India | 80h | 80h |  | Waiting for functionality |  |
| 122 | 1.1.4.1.7 | 4.1.7 Sub Class | manual | 10d | 2014-06-04 A | 2014-06-17 A |  | 100% |  |  |  | India | 80h | 80h |  | Waiting for functionality |  |
| 123 | 1.1.4.1.8 | 4.1.8 Claims Expense Master | manual | 10d | 2014-06-04 A | 2014-06-17 A |  | 100% |  |  |  | India | 80h | 80h |  | Waiting for functionality |  |
| 124 | 1.1.4.1.9 | 4.1.9 Claims Close Reason Master | manual | 10d | 2014-06-04 A | 2014-06-17 A |  | 100% |  |  |  | India | 80h | 80h |  | Waiting for functionality |  |
| 125 | 1.1.4.1.10 | 4.1.10 Currency Master | manual | 10d | 2014-06-04 A | 2014-06-17 A |  | 100% |  |  |  | India | 80h | 80h |  |  |  |
| 126 | 1.1.4.1.11 | 4.1.11 Exchange Rate Master | manual | 10d | 2014-06-04 A | 2014-06-17 A |  | 100% |  |  |  | India | 80h | 80h |  |  |  |
| 127 | 1.1.4.1.12 | 4.1.12 Vehicle Class | manual | 10d | 2014-06-04 A | 2014-06-17 A |  | 100% |  |  |  | India | 80h | 80h |  |  |  |
| 128 | 1.1.4.1.13 | 4.1.13 Vehicle Make | manual | 10d | 2014-06-04 A | 2014-06-17 A |  | 100% |  |  |  | India | 80h | 80h |  |  |  |
| 129 | 1.1.4.1.14 | 4.1.14 Vehicle Model | manual | 10d | 2014-06-04 A | 2014-06-17 A |  | 100% |  |  |  | India | 80h | 80h |  |  |  |
| 130 | 1.1.4.1.15 | 4.1.15 Insurance Policy | manual | 15d | 2014-06-04 A | 2014-06-24 A |  | 100% |  |  |  | India | 120h | 120h |  |  |  |
| 131 | 1.1.4.1.16 | 4.1.16 GST Setting | manual | 10d | 2014-06-04 A | 2014-06-17 A |  | 100% |  |  |  | India | 80h | 80h |  | Waiting for functionality |  |
| 132 | 1.1.4.1.17 | 4.1.17 Organization | manual | 20d | 2014-12-15 A | 2015-01-09 A |  | 100% |  |  |  | India | 160h | 160h |  |  |  |
| 133 | 1.1.4.1.18 | 4.1.18 Claim Officer Duty | manual | 10d | 2014-09-03 A | 2014-09-16 A |  | 100% |  |  |  | India | 80h | 80h | Pending clarification from CDGI |  |  |
| 134 | 1.1.4.1.19 | 4.1.19 LOU Rate | manual | 10d | 2014-09-10 A | 2014-09-23 A |  | 100% |  |  |  | India | 80h | 80h |  |  |  |
| 135 | 1.1.4.1.20 | 4.1.20 Interchange | manual | 10d | 2014-09-10 A | 2014-09-23 A |  | 100% |  |  |  | India | 80h | 80h |  |  |  |
| 136 | 1.1.4.1.21 | 4.1.21 Deductible | manual | 10d | 2014-12-15 A | 2014-12-26 A |  | 100% |  |  |  | India | 80h | 80h |  |  |  |

| ID | WBS | Task | Type | Duration | Start | Finish | Complete | Resources | Work | Actual work | Items Pending at CDGI | India Ebix Remarks |
| --- | --- | --- | --- | --- | --- | --- | --- | --- | --- | --- | --- | --- |
| 137 | 1.1.4.2 | **4.2 Upload** |  | 20d | 2015-01-29 A | 2015-02-25 A | 100% | India | 640h | 640h |  |  |
| 138 | 1.1.4.2.1 | 4.2.1 TAC Upload | manual | 20d | 2015-01-29 A | 2015-02-25 A | 100% | India | 160h | 160h |  |  |
| 139 | 1.1.4.2.2 | 4.2.2 Claim File Upload | manual | 20d | 2015-01-29 A | 2015-02-25 A | 100% | India | 160h | 160h |  |  |
| 140 | 1.1.4.2.3 | 4.2.3 SAP File Upload | manual | 20d | 2015-01-29 A | 2015-02-25 A | 100% | India | 160h | 160h | Phase 2 delivery | Phase 2 delivery |
| 141 | 1.1.4.3 | **4.3 Claim** |  | 156d | 2014-10-02 A | 2015-05-07 A | 100% | India | 6632h | 6632h |  |  |
| 142 | 1.1.4.3.1 | **4.3.1 Buses** |  | 96d | 2014-10-02 A | 2015-02-12 A | 100% | India | 4656h | 4656h |  |  |
| 143 | 1.1.4.3.1.1 | 4.3.1.1 Accident | manual | 31d | 2014-10-02 A | 2014-11-13 A | 100% | India | 248h | 248h |  |  |
| 144 | 1.1.4.3.1.2 | 4.3.1.2 Claim | manual | 31d | 2014-10-02 A | 2014-11-13 A | 100% | India | 248h | 248h |  |  |
| 145 | 1.1.4.3.1.3 | 4.3.1.3 Service Provider | manual | 31d | 2014-10-02 A | 2014-11-13 A | 100% | India | 248h | 248h |  |  |
| 146 | 1.1.4.3.1.4 | 4.3.1.4 Notes | manual | 31d | 2014-10-02 A | 2014-11-13 A | 100% | India | 248h | 248h |  |  |
| 147 | 1.1.4.3.1.5 | 4.3.1.5 Tasks | manual | 31d | 2014-10-02 A | 2014-11-13 A | 100% | India | 248h | 248h |  |  |
| 148 | 1.1.4.3.1.6 | 4.3.1.6 Attachment | manual | 31d | 2014-10-02 A | 2014-11-13 A | 100% | India | 248h | 248h |  |  |
| 149 | 1.1.4.3.1.7 | 4.3.1.7 Dairy | manual | 31d | 2014-10-02 A | 2014-11-13 A | 100% | India | 248h | 248h |  |  |
| 150 | 1.1.4.3.1.8 | 4.3.1.8 Reassigned Dairy | manual | 31d | 2014-10-02 A | 2014-11-13 A | 100% | India | 248h | 248h |  |  |
| 151 | 1.1.4.3.1.9 | 4.3.1.9 Reserve |  | 31d | 2014-11-21 A | 2015-01-02 A | 100% | India | 248h | 248h |  |  |
| 152 | 1.1.4.3.1.10 | 4.3.1.10 Reserve History | manual | 31d | 2014-11-21 A | 2015-01-02 A | 100% | India | 248h | 248h |  |  |
| 153 | 1.1.4.3.1.11 | 4.3.1.11 Mandate | manual | 31d | 2014-11-21 A | 2015-01-02 A | 100% | India | 248h | 248h |  |  |
| 154 | 1.1.4.3.1.12 | 4.3.1.12 Mandate History | manual | 31d | 2014-11-21 A | 2015-01-02 A | 100% | India | 248h | 248h |  |  |
| 155 | 1.1.4.3.1.13 | 4.3.1.13 Payment | manual | 31d | 2014-12-05 A | 2015-01-16 A | 100% | India | 248h | 248h |  |  |
| 156 | 1.1.4.3.1.14 | 4.3.1.14 Payment History | manual | 31d | 2014-12-05 A | 2015-01-16 A | 100% | India | 248h | 248h |  | Requirement revoked and menu removed from Application |
| 157 | 1.1.4.3.1.15 | 4.3.1.15 Recovery | manual | 31d | 2015-01-01 A | 2015-02-12 A | 100% | India | 248h | 248h |  | Waiting for functionality |
| 158 | 1.1.4.3.1.16 | 4.3.1.16 Transaction History | manual | 20d | 2014-10-02 A | 2014-10-29 A | 100% | India | 160h | 160h |  |  |
| 159 | 1.1.4.3.1.17 | 4.3.1.17 Alert Indicator for Deductible | manual | 1d | 2014-10-02 A | 2014-10-02 A | 100% | India | 8h | 8h |  |  |
| 160 | 1.1.4.3.2 | 4.3.2 Trains | manual | 31d | 2014-10-02 A | 2014-11-13 A | 100% | India | 248h | 248h |  |  |
| 161 | 1.1.4.3.3 | 4.3.3 Taxis | manual | 20d | 2015-03-10 A | 2015-04-06 A | 100% | India | 160h | 160h |  | Phase 2 delivery |
| 162 | 1.1.4.3.4 | 4.3.4 Rental Cars | manual | 20d | 2015-04-10 A | 2015-05-07 A | 100% | India | 160h | 160h |  | Phase 2 delivery |
| 163 | 1.1.4.3.5 | 4.3.5 Private Cars | manual | 20d | 2015-04-10 A | 2015-05-07 A | 100% | India | 160h | 160h |  | Phase 2 delivery |

| ID | WBS | Task | Type | Duration | Start | Finish | Complete | Resources | Work | Actual work | Items Pending at CDGI | India Ebix Remarks | Description |
| --- | --- | --- | --- | --- | --- | --- | --- | --- | --- | --- | --- | --- | --- |
| 164 | 1.1.4.4 | **4.4 Dashboard** |  | 15d | 2015-02-10 A | 2015-03-02 A | 100% | India | 240h | 240h |  |  |  |
| 165 | 1.1.4.4.1 | 4.4.1 Sections of Dashboard as per User Group | manual | 15d | 2015-02-10 A | 2015-03-02 A | 100% | India | 120h | 120h | Pending clarification from CDGI | Waiting for functionality |  |
| 166 | 1.1.4.5 | **4.5 Diary Listing** |  | 10d | 2015-02-10 A | 2015-02-23 A | 100% | India | 320h | 320h |  | Requirement revoked and menu removed from Application |  |
| 167 | 1.1.4.5.1 | 4.5.1 Diary Items | manual | 10d | 2015-02-10 A | 2015-02-23 A | 100% | India | 80h | 80h |  | Requirement revoked and menu removed from Application |  |
| 168 | 1.1.4.5.2 | 4.5.2 Assigned Tasks | manual | 10d | 2015-02-10 A | 2015-02-23 A | 100% | India | 80h | 80h |  | Requirement revoked and menu removed from Application |  |
| 169 | 1.1.4.5.3 | 4.5.3 Escalation Tasks | manual | 10d | 2015-02-10 A | 2015-02-23 A | 100% | India | 80h | 80h |  | Requirement revoked and menu removed from Application |  |
| 170 | 1.1.4.6 | **4.6 Claim Enquiry** |  | 70d | 2015-01-29 A | 2015-05-06 A | 100% | India | 1120h | 1120h |  |  |  |
| 171 | 1.1.4.6.1 | 4.6.1 Claims | manual | 30d | 2015-01-29 A | 2015-03-11 A | 100% | India | 240h | 240h |  |  |  |
| 172 | 1.1.4.6.2 | 4.6.2 Claim Documents Printing | manual | 30d | 2015-03-20 A | 2015-04-30 A | 100% | India | 240h | 240h |  |  |  |
| 173 | 1.1.4.6.3 | 4.6.3 Job Schedule Enquiry | manual | 10d | 2015-01-29 A | 2015-02-11 A | 100% | India | 80h | 80h |  |  |  |
| 174 | 1.1.4.7 | **4.7 Document Generation Module** |  | 30d | 2015-03-02 A | 2015-04-10 A | 100% | India | 480h | 480h |  | Phase 2 delivery |  |
| 175 | 1.1.4.7.1 | 4.7.1 Document Generation Criteria | manual | 30d | 2015-03-02 A | 2015-04-10 A | 100% | India | 240h | 240h |  | Phase 2 delivery | new Task added |
| 176 | 1.1.4.8 | **4.8 Document Print** |  | 30d | 2015-03-25 A | 2015-05-05 A | 100% | India | 720h | 720h |  | Phase 2 delivery |  |
| 177 | 1.1.4.8.1 | 4.8.1 Claim Payment Document Printing | manual | 30d | 2015-03-25 A | 2015-05-05 A | 100% | India | 240h | 240h |  | Phase 2 delivery |  |
| 178 | 1.1.4.8.2 | 4.8.2 Claim Registration Document Printing | manual | 30d | 2015-03-25 A | 2015-05-05 A | 100% | India | 240h | 240h |  | Phase 2 delivery |  |
| 179 | 1.1.4.9 | 4.9 Unreported Claim | manual | 10d | 2015-02-05 A | 2015-02-18 A | 100% | India | 80h | 80h | Removed | Removed |  |
| 180 | 1.1.4.10 | **4.10 Security Management System** |  | 30d | 2014-11-10 A | 2014-12-19 A | 100% | India | 480h | 480h |  |  |  |
| 181 | 1.1.4.10.1 | 4.10.1 Permission Screen UI | manual | 15d | 2014-11-10 A | 2014-11-28 A | 100% | India | 120h | 120h | waiting To Get Details |  | New Task added |
| 182 | 1.1.4.10.2 | 4.10.2 Permission screen functionality | manual | 15d | 2014-11-10 A | 2014-11-28 A | 100% | India | 120h | 120h | waiting To Get Details |  |  |
| 183 | 1.1.4.11 | 4.11 UI and Design signed off by client | manual | 5d | 2014-06-17 A | 2014-06-23 A | 100% | India | 40h | 40h |  |  |  |
| 184 | 1.1.4.12 | **4.12 New Requirement - New Master Tables** |  | 6d | 2015-03-03 A | 2015-03-10 A | 100% | India | 96h | 96h |  |  |  |
| 185 | 1.1.4.12.1 | 4.12.1 iTrack #2 | manual | 6d | 2015-03-03 A | 2015-03-10 A | 100% | India | 48h | 48h |  |  |  |
| 186 | 1.1.4.13 | **4.13 New Requirement - LOG Request** |  | 5d | 2015-10-03 A | 2015-10-10 A | 100% | India | 96h | 96h |  |  |  |
| 187 | 1.1.4.13.1 | 2.13.1 iTrack #10 | manual | 7d | 2015-10-03 A | 2015-10-10 A | 100% | India | 56h | 56h |  |  |  |

| ID | WBS | Task | Type | Duration | Start | Finish | Predecessors | Complete | Actual start | Actual finish | Resources | Work | Actual work | India Ebix Remarks |
| --- | --- | --- | --- | --- | --- | --- | --- | --- | --- | --- | --- | --- | --- | --- |
| 188 | 1.1.4.14 | **4.14 New Requirement - FAL Masters** |  | 5d | 2015-10-03 A | 2015-10-10 A |  | 100% |  |  | India | 96h | 96h |  |
| 189 | 1.1.4.14.1 | 2.14.1 iTrack #23 | manual | 7d | 2015-10-03 A | 2015-10-10 A |  | 100% |  |  | India | 56h | 56h |  |
| 190 | 1.1.5 | **5 Iterative Development and Testing** |  | 305d | 2014-05-22 A | 2015-07-22 | 97 | 100% |  | 2015-07-31 | India | 31984h | 31984h |  |
| 191 | 1.1.5.1 | **5.1 System Admin** |  | 240d | 2014-07-01 | 2015-06-01 |  | 100% | 2014-05-22 | 2015-06-18 | India | 7968h | 7968h |  |
| 192 | 1.1.5.1.1 | **5.1.1 Upload Main Menu** |  | 129d | 2014-09-09 A | 2015-03-06 A | 101 | 100% |  |  | India | 240h | 240h |  |
| 193 | 1.1.5.1.1.1 | 5.1.1.1 Vehicle Listing Upload | manual | 10d | 2014-09-09 A | 2014-09-22 A | 102 | 100% |  |  | India | 80h | 80h |  |
| 194 | 1.1.5.1.1.2 | 5.1.1.2 Bus Captain Listing | manual | 10d | 2015-02-23 A | 2015-03-06 A | 103 | 100% |  |  | India | 80h | 80h | Waiting for functionality |
| 195 | 1.1.5.1.2 | **5.1.2 User Admin** |  | 212d | 2014-05-22 A | 2015-03-13 A | 104 | 100% |  |  | India | 2256h | 2256h |  |
| 196 | 1.1.5.1.2.1 | 5.1.2.1 Entity Details | manual | 10d | 2014-05-22 A | 2014-06-04 A | 105 | 100% |  |  | India | 80h | 80h | Requirement revoked and menu removed from Application |
| 197 | 1.1.5.1.2.2 | 5.1.2.2. User Groups | manual | 10d | 2015-03-02 A | 2015-03-13 A | 106 | 100% |  |  | India | 80h | 80h |  |
| 198 | 1.1.5.1.2.3 | 5.1.2.3 User | manual | 10d | 2015-02-27 A | 2015-03-12 A | 107 | 100% |  |  | India | 80h | 80h |  |
| 199 | 1.1.5.1.2.4 | 5.1.2.4 Department Master | manual | 10d | 2015-02-13 A | 2015-02-26 A | 108 | 100% |  |  | India | 80h | 80h |  |
| 200 | 1.1.5.1.2.5 | 5.1.2.5 Password Setup | manual | 10d | 2015-02-06 A | 2015-02-19 A | 109 | 100% |  |  | India | 80h | 80h |  |
| 201 | 1.1.5.1.2.6 | 5.1.2.6 Release Locked Users | manual | 10d | 2015-02-06 A | 2015-02-19 A | 110 | 100% |  |  | India | 80h | 80h |  |
| 202 | 1.1.5.1.2.7 | 5.1.2.7 Country for User Access | manual | 10d | 2015-02-13 A | 2015-02-26 A | 111 | 100% |  |  | India | 80h | 80h | Requirement revoked and menu removed from Application |
| 203 | 1.1.5.1.3 | **5.1.3 Service Provider** |  | 15d | 2014-11-19 A | 2014-12-09 A |  | 100% |  |  | India | 600h | 600h |  |
| 204 | 1.1.5.1.3.1 | 5.1.3.1 Insurer Master | manual | 10d | 2014-11-19 A | 2014-12-02 A | 113 | 100% |  |  | India | 80h | 80h |  |
| 205 | 1.1.5.1.3.2 | 5.1.3.2 Surveyor Master | manual | 10d | 2014-11-19 A | 2014-12-02 A | 114 | 100% |  |  | India | 80h | 80h |  |
| 206 | 1.1.5.1.3.3 | 5.1.3.3 Lawyer Master | manual | 10d | 2014-11-19 A | 2014-12-02 A | 115 | 100% |  |  | India | 80h | 80h |  |
| 207 | 1.1.5.1.3.4 | 5.1.3.4 Workshop/Dept Master | manual | 10d | 2014-11-25 A | 2014-12-08 A | 116 | 100% |  |  | India | 80h | 80h |  |
| 208 | 1.1.5.1.3.5 | 5.1.3.5 Hospital Master | manual | 10d | 2014-11-26 A | 2014-12-09 A | 117 | 100% |  |  | India | 80h | 80h |  |
| 209 | 1.1.5.1.3.6 | 5.1.3.6 Adjuster Master | manual | 10d | 2014-11-25 A | 2014-12-08 A | 118 | 100% |  |  | India | 80h | 80h |  |
| 210 | 1.1.5.1.4 | 5.1.4 Nature Of Loss | manual | 10d | 2014-06-25 A | 2014-07-08 A | 119 | 100% |  |  | India | 80h | 80h |  |
| 211 | 1.1.5.1.5 | 5.1.5 Type of Loss | manual | 10d | 2014-06-18 A | 2014-07-01 A | 120 | 100% |  |  | India | 80h | 80h |  |
| 212 | 1.1.5.1.6 | 5.1.6 Main Class Business | manual | 10d | 2014-06-18 A | 2014-07-01 A | 121 | 100% |  |  | India | 80h | 80h |  |
| 213 | 1.1.5.1.7 | 5.1.7 Sub Class | manual | 10d | 2014-06-18 A | 2014-07-01 A | 122 | 100% |  |  | India | 80h | 80h |  |
| 214 | 1.1.5.1.8 | 5.1.8 Claims Expense Master | manual | 10d | 2014-06-18 A | 2014-07-01 A | 123 | 100% |  |  | India | 80h | 80h |  |
| 215 | 1.1.5.1.9 | 5.1.9 Claims Close Reason Master | manual | 10d | 2014-06-18 A | 2014-07-01 A | 124 | 100% |  |  | India | 80h | 80h |  |
| 216 | 1.1.5.1.10 | 5.1.10 Currency Master | manual | 10d | 2014-06-18 A | 2014-07-01 A | 125 | 100% |  |  | India | 80h | 80h |  |
| 217 | 1.1.5.1.11 | 5.1.11 Exchange Rate Master | manual | 10d | 2014-06-18 A | 2014-07-01 A | 126 | 100% |  |  | India | 80h | 80h |  |
| 218 | 1.1.5.1.12 | 5.1.12 Vehicle Class | manual | 10d | 2014-06-18 A | 2014-07-01 A | 127 | 100% |  |  | India | 80h | 80h |  |
| 219 | 1.1.5.1.13 | 5.1.13 Vehicle Make | manual | 10d | 2014-06-18 A | 2014-07-01 A | 128 | 100% |  |  | India | 80h | 80h |  |
| 220 | 1.1.5.1.14 | 5.1.14 Vehicle Model | manual | 10d | 2014-06-18 A | 2014-07-01 A | 129 | 100% |  |  | India | 80h | 80h |  |
| 221 | 1.1.5.1.15 | 5.1.15 Insurance Policy | manual | 10d | 2014-06-25 A | 2014-07-08 A | 130 | 100% |  |  | India | 80h | 80h |  |
| 222 | 1.1.5.1.16 | 5.1.16 GST Setting | manual | 10d | 2014-06-18 A | 2014-07-01 A | 131 | 100% |  |  | India | 80h | 80h |  |
| 223 | 1.1.5.1.17 | 5.1.17 Organization | manual | 10d | 2015-01-12 A | 2015-01-23 A | 132 | 100% |  |  | India | 80h | 80h |  |
| 224 | 1.1.5.1.18 | 5.1.18 Claim Officer Duty | manual | 10d | 2014-09-17 A | 2014-09-30 A | 133 | 100% |  |  | India | 80h | 80h |  |
| 225 | 1.1.5.1.19 | 5.1.19 LOU Rate | manual | 10d | 2014-09-24 A | 2014-10-07 A | 134 | 100% |  |  | India | 80h | 80h |  |
| 226 | 1.1.5.1.20 | 5.1.20 Interchange | manual | 10d | 2014-09-24 A | 2014-10-07 A | 135 | 100% |  |  | India | 80h | 80h |  |
| 227 | 1.1.5.1.21 | 5.1.21 Deductible | manual | 124d | 2014-12-29 A | 2015-06-18 A | 136 | 100% |  |  | India | 992h | 992h |  |
| 228 | 1.1.5.1.22 | 5.1.22 User Manual | manual | 30d | 2015-02-02 A | 2015-03-13 A |  | 100% |  |  | India | 240h | 240h |  |
| 229 | 1.1.5.1.23 | 5.1.23 Test Approach/Test Cases | manual | 5d | 2015-02-02 A | 2015-02-06 A |  | 100% |  |  | India | 40h | 40h |  |
| 230 | 1.1.5.1.24 | 5.1.24 QA Testing | manual | 20d | 2015-02-11 A | 2015-03-10 A |  | 100% |  |  | India | 160h | 160h |  |
| 231 | 1.1.5.1.25 | 5.1.25 UAT | manual | 20d | 2015-03-10 A | 2015-04-06 A |  | 100% |  |  | Singapore | 160h | 160h |  |

| ID | WBS | Task | Type | Duration | Start | Finish | Predecessors | Complete | Actual start | Actual finish | Resources | Work | Actual work | Items Pending at CDGI | India Ebix Remarks |
| --- | --- | --- | --- | --- | --- | --- | --- | --- | --- | --- | --- | --- | --- | --- | --- |
| 232 | 1.1.5.2 | **5.2 Upload** |  | 76d | 2015-01-30 A | 2015-05-15 | 137 | 100% |  | 2015-07-31 | India | 2872h | 2872h |  |  |
| 233 | 1.1.5.2.1 | 5.2.1 TAC Upload | manual | 57d | 2015-02-26 A | 2015-05-15 A | 138 | 100% |  |  | India | 456h | 456h |  |  |
| 234 | 1.1.5.2.2 | 5.2.2 Claim File Upload | manual | 57d | 2015-02-26 A | 2015-05-15 A | 139 | 100% |  |  | India | 456h | 456h |  |  |
| 235 | 1.1.5.2.3 | 5.2.3 SAP File Upload | manual | 112d | 2015-02-26 A | 2015-07-31 A | 140 | 100% |  |  | India | 896h | 896h | Phase 2 delivery | Phase 2 delivery |
| 236 | 1.1.5.2.4 | 5.2.4 User Manual | manual | 5d | 2015-04-02 A | 2015-04-08 A | 235 | 100% |  |  | India | 40h | 40h |  |  |
| 237 | 1.1.5.2.5 | 5.2.5 Test Approach/Test Cases | manual | 2d | 2015-04-01 A | 2015-04-02 A | 140 | 100% |  |  | India | 16h | 16h |  |  |
| 238 | 1.1.5.2.6 | 5.2.6 QA Testing | manual | 5d | 2015-04-01 A | 2015-04-07 A | 140 | 100% |  |  | Singapore | 40h | 40h |  |  |
| 239 | 1.1.5.2.7 | 5.2.7 UAT | manual | 10d | 2015-04-08 A | 2015-04-21 A |  | 100% |  |  | CDGI | 80h | 80h |  |  |
| 240 | 1.1.5.2.8 | 5.2.8 Linking of Unreported Claim | manual | 26d | 2015-04-22 A | 2015-05-27 A |  | 100% |  |  | India | 208h | 208h |  |  |
| 241 | 1.1.5.2.9 | 5.2.9 QA Testing | manual | 3d | 2015-05-27 A | 2015-05-29 A |  | 100% |  |  | Sinagpore | 24h | 24h |  |  |
| 242 | 1.1.5.2.10 | 5.2.10 User Manual | manual | 4d | 2015-05-29 A | 2015-06-03 A |  | 100% |  |  | India | 32h | 32h |  |  |
| 243 | 1.1.5.2.11 | 5.2.11 UAT | manual | 2d | 2015-06-03 A | 2015-06-04 A |  | 100% |  |  | CDGI | 16h | 16h |  |  |
| 244 | 1.1.5.3 | **5.3 Claim** |  | 141d | 2014-11-14 | 2015-05-29 |  | 100% | 2014-10-30 | 2015-07-22 | India | 10960h | 10960h |  |  |
| 245 | 1.1.5.3.1 | **5.3.1 Buses** |  | 92d | 2014-11-14 | 2015-03-23 | 142 | 100% | 2014-10-30 | 2015-06-18 | India | 7312h | 7312h |  |  |
| 246 | 1.1.5.3.1.1 | 5.3.1.1 Accident | manual | 10d | 2014-11-14 A | 2014-11-27 A | 143 | 100% |  |  | India | 80h | 80h |  |  |
| 247 | 1.1.5.3.1.2 | 5.3.1.2 Claim | manual | 12d | 2014-11-14 A | 2014-12-01 A | 144 | 100% |  |  | India | 96h | 96h |  |  |
| 248 | 1.1.5.3.1.3 | 5.3.1.3 Service Provider | manual | 15d | 2014-11-14 A | 2014-12-04 A | 145 | 100% |  |  | India | 120h | 120h |  |  |
| 249 | 1.1.5.3.1.4 | 5.3.1.4 Notes | manual | 10d | 2014-11-14 A | 2014-11-27 A | 146 | 100% |  |  | India | 80h | 80h |  |  |
| 250 | 1.1.5.3.1.5 | 5.3.1.5 Tasks | manual | 12d | 2014-11-14 A | 2014-12-01 A | 147 | 100% |  |  | India | 96h | 96h |  |  |
| 251 | 1.1.5.3.1.6 | 5.3.1.6 Attachment | manual | 12d | 2014-11-14 A | 2014-12-01 A | 148 | 100% |  |  | India | 96h | 96h |  |  |
| 252 | 1.1.5.3.1.7 | 5.3.1.7 Dairy | manual | 20d | 2014-11-14 A | 2014-12-11 A | 149 | 100% |  |  | India | 160h | 160h |  |  |
| 253 | 1.1.5.3.1.8 | 5.3.1.8 Reassigned Dairy | manual | 10d | 2014-11-14 A | 2014-11-27 A | 150 | 100% |  |  | India | 80h | 80h |  |  |
| 254 | 1.1.5.3.1.9 | 5.3.1.9 Reserve | manual | 96d | 2015-01-02 A | 2015-05-15 A | 151 | 100% |  |  | India | 768h | 768h |  |  |
| 255 | 1.1.5.3.1.10 | 5.3.1.10 Reserve History | manual | 92d | 2015-01-16 A | 2015-05-24 A | 254 | 100% |  |  | India | 736h | 736h |  |  |
| 256 | 1.1.5.3.1.11 | 5.3.1.11 Mandate | manual | 96d | 2015-01-02 A | 2015-05-15 A | 153 | 100% |  |  | India | 768h | 768h |  |  |
| 257 | 1.1.5.3.1.12 | 5.3.1.12 Mandate History | manual | 92d | 2015-01-16 A | 2015-05-24 A | 256 | 100% |  |  | India | 736h | 736h |  |  |
| 258 | 1.1.5.3.1.13 | 5.3.1.13 Payment | manual | 85d | 2015-01-19 A | 2015-05-15 A | 155 | 100% |  |  | India | 680h | 680h |  |  |
| 259 | 1.1.5.3.1.14 | 5.3.1.14 Payment History | manual | 61d | 2015-03-02 A | 2015-05-24 A | 258 | 100% |  |  | India | 488h | 488h |  | Requirement revoked and menu removed from Application |
| 260 | 1.1.5.3.1.15 | 5.3.1.15 Recovery | manual | 93d | 2015-02-10 A | 2015-06-18 A | 157 | 100% |  |  | India | 744h | 744h |  |  |
| 261 | 1.1.5.3.1.16 | 5.3.1.16 Transaction History | manual | 38d | 2014-10-30 A | 2014-12-22 A | 158 | 100% |  |  | India | 304h | 304h |  |  |
| 262 | 1.1.5.3.1.17 | 5.3.1.17 Alert Indicator for Deductible | manual | 68d | 2015-02-24 A | 2015-05-28 A |  | 100% |  |  | India | 544h | 544h |  | Dependant on claim flow development |
| 263 | 1.1.5.3.2 | 5.3.2 Trains | manual | 127d | 2014-11-14 A | 2015-05-11 A | 160 | 100% |  |  | India | 1016h | 1016h |  |  |
| 264 | 1.1.5.3.3 | 5.3.3 Taxis | manual | 53d | 2015-04-07 A | 2015-06-18 A | 161 | 100% |  |  | India | 424h | 424h |  | Phase 2 delivery |
| 265 | 1.1.5.3.4 | 5.3.4 Rental Cars | manual | 30d | 2015-05-08 A | 2015-06-18 A | 162 | 100% |  |  | India | 240h | 240h |  | Phase 2 delivery |
| 266 | 1.1.5.3.5 | 5.3.5 Private Cars | manual | 30d | 2015-05-08 A | 2015-06-18 A | 163 | 100% |  |  | India | 240h | 240h |  | Phase 2 delivery |
| 267 | 1.1.5.3.6 | 5.3.6 User Manual | manual | 30d | 2015-05-11 A | 2015-06-19 A |  | 100% |  |  | India | 240h | 240h |  |  |
| 268 | 1.1.5.3.7 | 5.3.7 Test Approach/Test Cases | manual | 5d | 2015-05-22 A | 2015-05-28 A |  | 100% |  |  | India | 40h | 40h |  |  |
| 269 | 1.1.5.3.8 | 5.3.8 QA Testing | manual | 25d | 2015-05-28 A | 2015-07-01 A |  | 100% |  |  | Singapore | 200h | 200h |  |  |
| 270 | 1.1.5.3.9 | 5.3.9 UAT | manual | 15d | 2015-07-02 A | 2015-07-22 A | 269 | 100% |  |  | CDGI | 120h | 120h |  |  |

| ID | WBS | Task | Type | Duration | Start | Finish | Predecessors | Complete | Actual start | Actual finish | Resources | Work | Actual work | India Ebix Remarks | Items Pending at CDGI |
| --- | --- | --- | --- | --- | --- | --- | --- | --- | --- | --- | --- | --- | --- | --- | --- |
| 271 | 1.1.5.4 | **5.4 Dashboard** |  | 34d | 2015-02-12 A | 2015-03-31 |  | 100% |  | 2015-06-01 | India | 2976h | 2976h | Waiting for functionality |  |
| 272 | 1.1.5.4.1 | 5.4.1 Sections of Dashboard per User Group | manual | 76d | 2015-02-12 A | 2015-05-28 A |  | 100% |  |  | India | 608h | 608h | pending for requirement detail | waiting To Get Details |
| 273 | 1.1.5.4.2 | 5.4.2 User Manual | manual | 68d | 2015-02-26 A | 2015-05-30 A | 272 | 100% |  |  | India | 544h | 544h |  |  |
| 274 | 1.1.5.4.3 | 5.4.3 Test Approach/Test Cases | manual | 68d | 2015-02-26 A | 2015-05-30 A | 272 | 100% |  |  | India | 544h | 544h |  |  |
| 275 | 1.1.5.4.4 | 5.4.4 QA Testing | manual | 68d | 2015-02-26 A | 2015-06-01 A | 272 | 100% |  |  | Singapore | 544h | 544h |  |  |
| 276 | 1.1.5.4.5 | 5.4.5 UAT | manual | 58d | 2015-03-12 A | 2015-06-01 A | 273 | 100% |  |  | CDGI | 464h | 464h |  |  |
| 277 | 1.1.5.5 | **5.5 Diary Listing** |  | 27d | 2015-02-24 A | 2015-04-01 A |  | 100% |  |  | India | 672h | 672h |  |  |
| 278 | 1.1.5.5.1 | 5.5.1 Diary Items | manual | 10d | 2015-02-24 A | 2015-03-09 A | 167 | 100% |  |  | India | 80h | 80h | Requirement revoked and menu removed from Application |  |
| 279 | 1.1.5.5.2 | 5.5.2 Assigned Tasks | manual | 10d | 2015-02-24 A | 2015-03-09 A | 168 | 100% |  |  | India | 80h | 80h | Requirement revoked and menu removed from Application |  |
| 280 | 1.1.5.5.3 | 5.5.3 Escalation Tasks | manual | 17d | 2015-02-24 A | 2015-03-18 A | 169 | 100% |  |  | India | 136h | 136h | Requirement revoked and menu removed from Application |  |
| 281 | 1.1.5.5.4 | 5.5.4 User Manual | manual | 5d | 2015-03-19 A | 2015-03-25 A | 280 | 100% |  |  | India | 40h | 40h | Requirement revoked and menu removed from Application |  |
| 282 | 1.1.5.5.5 | 5.5.5 Test Approach/Test Cases | manual | 5d | 2015-03-26 A | 2015-04-01 A | 281 | 100% |  |  | India | 40h | 40h | Requirement revoked and menu removed from Application |  |
| 283 | 1.1.5.5.6 | 5.5.6 QA Testing | manual | 5d | 2015-03-26 A | 2015-04-01 A | 281 | 100% |  |  | Singapore | 40h | 40h | Requirement revoked and menu removed from Application |  |
| 284 | 1.1.5.5.7 | 5.5.7 UAT | manual | 5d | 2015-03-25 A | 2015-03-31 A | 281 | 100% |  |  | CDGI | 40h | 40h | Requirement revoked and menu removed from Application |  |
| 285 | 1.1.5.6 | **5.6 Claim Enquiry** |  | 67d | 2015-03-11 | 2015-06-11 A | 170 | 100% | 2015-01-07 |  | India | 1144h | 1144h |  |  |
| 286 | 1.1.5.6.1 | 5.6.1 Claims | manual | 56d | 2015-03-12 A | 2015-05-28 A | 171 | 100% |  |  | India | 448h | 448h |  |  |
| 287 | 1.1.5.6.2 | 5.6.2 User Manual | manual | 5d | 2015-05-26 A | 2015-05-30 A | 288 | 100% |  |  | India | 40h | 40h |  |  |
| 288 | 1.1.5.6.3 | 5.6.3 Test Approach/Test Cases | manual | 5d | 2015-05-26 A | 2015-05-30 A |  | 100% |  |  | India | 40h | 40h |  |  |
| 289 | 1.1.5.6.4 | 5.6.4 QA Testing | manual | 5d | 2015-01-06 | 2015-01-13 A | 288 | 100% | 2015-01-07 |  | Singapore | 40h | 40h |  |  |
| 290 | 1.1.5.6.5 | 5.6.5 UAT | manual | 5d | 2015-01-06 | 2015-01-13 A | 289 | 100% | 2015-01-07 |  | CDGI | 40h | 40h |  |  |
| 291 | 1.1.5.7 | **5.7 Document Generation Module** |  | 27d | 2015-04-23 A | 2015-05-29 A |  | 100% |  |  | India | 496h | 496h | Phase 2 delivery |  |
| 292 | 1.1.5.7.1 | 5.7.1 Document Generation Criteria | manual | 15d | 2015-04-23 A | 2015-05-13 A | 175 | 100% |  |  | India | 120h | 120h | Phase 2 delivery |  |
| 293 | 1.1.5.7.2 | 5.7.2 User Manual | manual | 5d | 2015-05-14 A | 2015-05-20 A | 292 | 100% |  |  | India | 40h | 40h | Phase 2 delivery |  |
| 294 | 1.1.5.7.3 | 5.7.3 Test Approach/Test Cases | manual | 5d | 2015-05-21 A | 2015-05-27 A | 292 | 100% |  |  | India | 40h | 40h | Phase 2 delivery |  |
| 295 | 1.1.5.7.4 | 5.7.4 QA Testing | manual | 5d | 2015-05-21 A | 2015-05-27 A | 292 | 100% |  |  | Singapore | 40h | 40h | Phase 2 delivery |  |
| 296 | 1.1.5.7.5 | 5.7.5 UAT | manual | 5d | 2015-05-25 A | 2015-05-29 A | 293 | 100% |  |  | CDGI | 40h | 40h | Phase 2 delivery |  |

| ID | WBS | Task | Type | Duration | Start | Finish | Predecessors | Complete | Resources | Work | Actual work | India Ebix Remarks | Description | Items Pending at CDGI |
| --- | --- | --- | --- | --- | --- | --- | --- | --- | --- | --- | --- | --- | --- | --- |
| 297 | 1.1.5.8 | **5.8 Document Print** |  | 25d | 2015-05-06 A | 2015-06-09 A |  | 100% | India | 560h | 560h | Phase 2 delivery |  |  |
| 298 | 1.1.5.8.1 | 5.8.1 Claim Payment Document Printing | manual | 10d | 2015-05-06 A | 2015-05-19 A | 177 | 100% | India | 80h | 80h | Phase 2 delivery |  |  |
| 299 | 1.1.5.8.2 | 5.8.2 Claim Registration Document Printing | manual | 10d | 2015-05-06 A | 2015-05-19 A | 178 | 100% | India | 80h | 80h | Phase 2 delivery |  |  |
| 300 | 1.1.5.8.3 | 5.8.3 User Manual | manual | 5d | 2015-05-20 A | 2015-05-26 A | 299 | 100% | India | 40h | 40h | Phase 2 delivery | on Going |  |
| 301 | 1.1.5.8.4 | 5.8.4 Test Approach/Test Cases | manual | 5d | 2015-05-20 A | 2015-05-26 A | 299 | 100% | India | 40h | 40h | Phase 2 delivery |  |  |
| 302 | 1.1.5.8.5 | 5.8.5 QA Testing | manual | 5d | 2015-05-20 A | 2015-05-26 A | 299 | 100% | Singapore | 40h | 40h | Phase 2 delivery |  |  |
| 303 | 1.1.5.8.6 | 5.8.6 UAT | manual | 10d | 2015-05-27 A | 2015-06-09 A | 300 | 100% | CDGI | 80h | 80h | Phase 2 delivery |  |  |
| 304 | 1.1.5.9 | **5.9 Unreported Claim Menu** |  | 49d | 2015-01-30 A | 2015-04-08 A |  | 100% | India | 712h | 712h |  |  |  |
| 305 | 1.1.5.9.1 | 5.9.1 UI and functionality implementation | manual | 10d | 2015-02-19 A | 2015-03-04 A | 179 | 100% | India | 80h | 80h | similar to 5.3 Claim task and need to be strike through |  |  |
| 306 | 1.1.5.9.2 | 5.9.2 User Manual | manual | 10d | 2015-03-05 A | 2015-03-18 A | 305 | 100% | India | 80h | 80h | similar to 5.3 Claim task and need to be strike through |  |  |
| 307 | 1.1.5.9.3 | 5.9.3 Test Approach/Test Cases | manual | 5d | 2015-03-19 A | 2015-03-25 A | 305 | 100% | India | 40h | 40h | similar to 5.3 Claim task and need to be strike through |  |  |
| 308 | 1.1.5.9.4 | 5.9.4 QA Testing | manual | 5d | 2015-03-19 A | 2015-03-25 A | 306 | 100% | Singapore | 40h | 40h | similar to 5.3 Claim task and need to be strike through |  |  |
| 309 | 1.1.5.9.5 | 5.9.5 UAT | manual | 10d | 2015-03-26 A | 2015-04-08 A | 306 | 100% | CDGI | 80h | 80h | similar to 5.3 Claim task and need to be strike through |  |  |
| 310 | 1.1.5.10 | **5.10 Security Management System** |  | 86d | 2014-12-01 A | 2015-03-30 A |  | 100% | India | 1184h | 1184h | similar to 5.3 Claim task and need to be strike through |  |  |
| 311 | 1.1.5.10.1 | 5.7.1 Permission Screen UI and Functionality | manual | 10d | 2014-12-01 A | 2014-12-12 A | 181 | 100% |  | 80h | 80h | Waiting for functionality |  | waiting To Get Details |
| 312 | 1.1.5.10.2 | 5.7.2 User Manual | manual | 30d | 2015-02-02 A | 2015-03-13 A |  | 100% | India | 240h | 240h |  | On Going | waiting To Get Details |
| 313 | 1.1.5.10.3 | 5.7.3 Test Approach/Test Cases | manual | 5d | 2015-02-02 A | 2015-02-06 A | 311 | 100% | India | 40h | 40h |  |  | waiting To Get Details |
| 314 | 1.1.5.10.4 | 5.7.4 QA Testing | manual | 6d | 2014-12-15 A | 2014-12-22 A | 311 | 100% | Singapore | 48h | 48h |  |  | waiting To Get Details |
| 315 | 1.1.5.10.5 | 5.7.5 UAT | manual | 11d | 2015-03-16 A | 2015-03-30 A | 312 | 100% | CDGI | 88h | 88h |  |  | waiting To Get Details |
| 316 | 1.1.5.11 | **5.11 New Requirement - New Master Tables** |  | 49d | 2015-03-03 A | 2015-05-08 A |  | 100% |  |  |  |  |  |  |
| 317 | 1.1.5.11.1 | 5.11.1 iTrack #2 | manual | 39d | 2015-03-03 A | 2015-04-24 A |  | 100% |  |  |  |  |  |  |
| 318 | 1.1.5.11.2 | 5.11.2 User Manual | manual | 6d | 2015-04-28 A | 2015-05-05 A |  | 100% |  |  |  |  |  |  |
| 319 | 1.1.5.11.3 | 5.11.3 Test Approach/Test Cases | manual | 3d | 2015-04-24 A | 2015-04-28 A |  | 100% |  |  |  |  |  |  |
| 320 | 1.1.5.11.4 | 5.11.4 QA Testing | manual | 3d | 2015-04-28 A | 2015-04-30 A |  | 100% |  |  |  |  |  |  |
| 321 | 1.1.5.11.5 | 5.11.5 UAT | manual | 4d | 2015-05-05 A | 2015-05-08 A |  | 100% |  |  |  |  |  |  |

| ID | WBS | Task | Type | Duration | Start | Finish | Predecessors | Complete | Actual finish | Resources | Work | Actual work |
| --- | --- | --- | --- | --- | --- | --- | --- | --- | --- | --- | --- | --- |
| 322 | 1.1.5.12 | **5.12 New Requirement - LOG Request** |  | 49d | 2015-03-03 A | 2015-05-08 A |  | 100% |  |  |  |  |
| 323 | 1.1.5.12.1 | 5.12.1 iTrack #10 | manual | 39d | 2015-03-03 A | 2015-04-24 A |  | 100% |  |  |  |  |
| 324 | 1.1.5.12.2 | 5.12.2 User Manual | manual | 6d | 2015-04-28 A | 2015-05-05 A |  | 100% |  |  |  |  |
| 325 | 1.1.5.12.3 | 5.12.3 Test Approach/Test Cases | manual | 3d | 2015-04-24 A | 2015-04-28 A |  | 100% |  |  |  |  |
| 326 | 1.1.5.12.4 | 5.12.4 QA Testing | manual | 3d | 2015-04-28 A | 2015-04-30 A |  | 100% |  |  |  |  |
| 327 | 1.1.5.12.5 | 5.12.5 UAT | manual | 4d | 2015-05-05 A | 2015-05-08 A |  | 100% |  |  |  |  |
| 328 | 1.1.5.13 | **5.13 New Requirement - FAL Masters** |  | 49d | 2015-03-03 A | 2015-05-08 A |  | 100% |  |  |  |  |
| 329 | 1.1.5.13.1 | 5.13.1 iTrack #23 | manual | 39d | 2015-03-03 A | 2015-04-24 A |  | 100% |  |  |  |  |
| 330 | 1.1.5.13.2 | 5.13.2 User Manual | manual | 6d | 2015-04-28 A | 2015-05-05 A |  | 100% |  |  |  |  |
| 331 | 1.1.5.13.3 | 5.13.3 Test Approach/Test Cases | manual | 3d | 2015-04-24 A | 2015-04-28 A |  | 100% |  |  |  |  |
| 332 | 1.1.5.13.4 | 5.13.4 QA Testing | manual | 3d | 2015-04-28 A | 2015-04-30 A |  | 100% |  |  |  |  |
| 333 | 1.1.5.13.5 | 5.13.5 UAT | manual | 4d | 2015-05-05 A | 2015-05-08 A |  | 100% |  |  |  |  |
| 334 | 1.1.6 | **6 QA Test Scripts** |  | 20d | 2015-07-23 A | 2015-08-19 | 190 | 100% | 2015-09-09 | India | 320h | 320h |
| 335 | 1.1.6.1 | 6.1 Testing Approach Development/Confirmation | manual | 5d | 2015-07-23 A | 2015-07-29 A |  | 100% |  | India | 40h | 40h |
| 336 | 1.1.6.2 | 6.2 Test Condition Development | manual | 5d | 2015-08-06 A | 2015-08-12 A | 335 | 100% |  | India | 40h | 40h |
| 337 | 1.1.6.3 | 6.3 Test Script Development | manual | 5d | 2015-08-20 A | 2015-08-26 A | 336 | 100% |  | India | 40h | 40h |
| 338 | 1.1.6.4 | 6.4 Expected Results Development | manual | 5d | 2015-09-03 A | 2015-09-09 A | 337 | 100% |  | India | 40h | 40h |
| 339 | 1.1.7 | **7 QA Testing** |  | 20d | 2015-09-09 A | 2015-10-06 A | 338 | 100% |  | India | 320h | 320h |
| 340 | 1.1.7.1 | 7.1 QA Testing | manual | 10d | 2015-09-09 A | 2015-09-22 A | 338 | 100% |  | India | 80h | 80h |
| 341 | 1.1.7.2 | 7.2 Review results | manual | 10d | 2015-09-23 A | 2015-10-06 A | 340 | 100% |  | India | 80h | 80h |
| 342 | 1.1.8 | **8 End-to-end UAT** |  | 20d | 2015-10-07 A | 2015-11-03 A | 341 | 100% |  | Singapore | 320h | 320h |
| 343 | 1.1.8.1 | 8.1 Access to UAT Environment | manual | 10d | 2015-10-07 A | 2015-10-20 A | 341 | 100% |  | Singapore | 80h | 80h |
| 344 | 1.1.8.2 | 8.2 Product Testing | manual | 10d | 2015-10-21 A | 2015-11-03 A | 343 | 100% |  | Singapore | 80h | 80h |
| 345 | 1.1.9 | **9 Client UAT** |  | 20d | 2015-10-07 A | 2015-11-03 A |  | 100% |  | CDGI | 320h | 320h |
| 346 | 1.1.9.1 | 9.1 Access to UAT Environment | manual | 10d | 2015-10-07 A | 2015-10-20 A |  | 100% |  | CDGI | 80h | 80h |
| 347 | 1.1.9.2 | 9.2 Product Testing | manual | 10d | 2015-10-21 A | 2015-11-03 A |  | 100% |  | CDGI | 80h | 80h |

| ID | WBS | Task | Type | Duration | Start | Finish | Predecessors | Complete | Total slack | Resources | Work | Actual work |
| --- | --- | --- | --- | --- | --- | --- | --- | --- | --- | --- | --- | --- |
| 348 | 1.1.10 | **10 Deployment** |  | 26d | 2015-11-04 A | 2015-12-09 A |  | 100% |  | Singapore | 416h | 416h |
| 349 | 1.1.10.1 | 10.1 Deployment Approach | manual | 5d | 2015-11-04 A | 2015-11-10 A |  | 100% |  | Singapore | 40h | 40h |
| 350 | 1.1.10.2 | 10.2 Platform Readiness | manual | 5d | 2015-11-11 A | 2015-11-17 A | 349 | 100% |  | Singapore | 40h | 40h |
| 351 | 1.1.10.3 | 10.3 Software Installation | manual | 5d | 2015-11-18 A | 2015-11-24 A | 350 | 100% |  | Singapore | 40h | 40h |
| 352 | 1.1.10.4 | 10.4 UAT Sign-off | manual | 1d | 2015-11-25 A | 2015-11-25 A | 351 | 100% |  | Singapore | 8h | 8h |
| 353 | 1.1.10.5 | 10.5 Go Live Preparation | manual | 5d | 2015-11-26 A | 2015-12-02 A | 352 | 100% |  | Singapore | 40h | 40h |
| 354 | 1.1.10.6 | 10.6 Support Kick Off | manual | 5d | 2015-12-03 A | 2015-12-09 A | 353 | 100% |  | Singapore | 40h | 40h |
| 355 | 1.2 | **PHASE 2** |  | 1d? | 2014-01-01 | 2014-01-01 |  |  | 0d |  |  |  |
| 356 | 1.2.1 | **1 Requirement Gathering** |  | 1d? | 2014-01-01 | 2014-01-01 |  |  | 0d |  |  |  |
| 357 | 1.2.1.1 | Document Generation Specification | manual | 1d? | 2014-01-01 | 2014-01-01 |  |  |  |  |  |  |
| 358 | 1.2.1.2 | Doument Print Specification | manual | 1d? | 2014-01-01 | 2014-01-01 |  |  |  |  |  |  |
| 359 | 1.2.1.3 | **Claim Registration Specification** |  | 1d? | 2014-01-01 | 2014-01-01 |  |  | 0d |  |  |  |
| 360 | 1.2.1.3.1 | Taxis | manual | 1d? | 2014-01-01 | 2014-01-01 |  |  |  |  |  |  |
| 361 | 1.2.1.3.2 | Rental Cars | manual | 1d? | 2014-01-01 | 2014-01-01 |  |  |  |  |  |  |
| 362 | 1.2.1.3.3 | Private Cars | manual | 1d? | 2014-01-01 | 2014-01-01 |  |  |  |  |  |  |
| 363 | 1.2.1.4 | Migration | manual | 1d? | 2014-01-01 | 2014-01-01 |  |  |  |  |  |  |
| 364 | 1.2.2 | **2 Requirements Finalized in TFS** |  | 1d? | 2014-01-01 | 2014-01-01 |  |  | 0d |  |  |  |
| 365 | 1.2.2.1 | Document Generation Specification | manual | 1d? | 2014-01-01 | 2014-01-01 |  |  |  |  |  |  |
| 366 | 1.2.2.2 | Doument Print Specification | manual | 1d? | 2014-01-01 | 2014-01-01 |  |  |  |  |  |  |
| 367 | 1.2.2.3 | **Claim Registration Specification** |  | 1d? | 2014-01-01 | 2014-01-01 |  |  | 0d |  |  |  |
| 368 | 1.2.2.3.1 | Taxis | manual | 1d? | 2014-01-01 | 2014-01-01 |  |  |  |  |  |  |
| 369 | 1.2.2.3.2 | Rental Cars | manual | 1d? | 2014-01-01 | 2014-01-01 |  |  |  |  |  |  |
| 370 | 1.2.2.3.3 | Private Cars | manual | 1d? | 2014-01-01 | 2014-01-01 |  |  |  |  |  |  |
| 371 | 1.2.2.4 | Migration | manual | 1d? | 2014-01-01 | 2014-01-01 |  |  |  |  |  |  |

| ID | WBS | Task | Type | Duration | Start | Finish | Total slack |
| --- | --- | --- | --- | --- | --- | --- | --- |
| 372 | 1.2.3 | **3 Design UI and Fuctionality** |  | 1d? | 2014-01-01 | 2014-01-01 | 0d |
| 373 | 1.2.3.1 | Document Generation | manual | 1d? | 2014-01-01 | 2014-01-01 |  |
| 374 | 1.2.3.2 | Doument Print | manual | 1d? | 2014-01-01 | 2014-01-01 |  |
| 375 | 1.2.3.3 | **Claim Registration** |  | 1d? | 2014-01-01 | 2014-01-01 | 0d |
| 376 | 1.2.3.3.1 | Taxis | manual | 1d? | 2014-01-01 | 2014-01-01 |  |
| 377 | 1.2.3.3.2 | Rental Cars | manual | 1d? | 2014-01-01 | 2014-01-01 |  |
| 378 | 1.2.3.3.3 | Private Cars | manual | 1d? | 2014-01-01 | 2014-01-01 |  |
| 379 | 1.2.3.4 | Migration | manual | 1d? | 2014-01-01 | 2014-01-01 |  |
| 380 | 1.2.4 | **4 Iterative Development, Testing & Deployment** |  | 1d? | 2014-01-01 | 2014-01-01 | 0d |
| 381 | 1.2.4.1 | **Document Generation** |  | 1d? | 2014-01-01 | 2014-01-01 | 0d |
| 382 | 1.2.4.1.1 | Development | manual | 1d? | 2014-01-01 | 2014-01-01 |  |
| 383 | 1.2.4.1.2 | Testing | manual | 1d? | 2014-01-01 | 2014-01-01 |  |
| 384 | 1.2.4.1.3 | Deployment | manual | 1d? | 2014-01-01 | 2014-01-01 |  |
| 385 | 1.2.4.2 | **Doument Print** |  | 1d? | 2014-01-01 | 2014-01-01 | 0d |
| 386 | 1.2.4.2.1 | Development | manual | 1d? | 2014-01-01 | 2014-01-01 |  |
| 387 | 1.2.4.2.2 | Testing | manual | 1d? | 2014-01-01 | 2014-01-01 |  |
| 388 | 1.2.4.2.3 | Deployment | manual | 1d? | 2014-01-01 | 2014-01-01 |  |
| 389 | 1.2.4.3 | **Claim Registration** |  | 1d? | 2014-01-01 | 2014-01-01 | 0d |
| 390 | 1.2.4.3.1 | **Taxis** |  | 1d? | 2014-01-01 | 2014-01-01 | 0d |
| 391 | 1.2.4.3.1.1 | Development | manual | 1d? | 2014-01-01 | 2014-01-01 |  |
| 392 | 1.2.4.3.1.2 | Testing | manual | 1d? | 2014-01-01 | 2014-01-01 |  |
| 393 | 1.2.4.3.1.3 | Deployment | manual | 1d? | 2014-01-01 | 2014-01-01 |  |
| 394 | 1.2.4.3.2 | **Rental Cars** |  | 1d? | 2014-01-01 | 2014-01-01 | 0d |
| 395 | 1.2.4.3.2.1 | Development | manual | 1d? | 2014-01-01 | 2014-01-01 |  |
| 396 | 1.2.4.3.2.2 | Testing | manual | 1d? | 2014-01-01 | 2014-01-01 |  |
| 397 | 1.2.4.3.2.3 | Deployment | manual | 1d? | 2014-01-01 | 2014-01-01 |  |

| ID | WBS | Task | Type | Duration | Start | Finish | Total slack |
| --- | --- | --- | --- | --- | --- | --- | --- |
| 398 | 1.2.4.3.3 | **Private Cars** |  | 1d? | 2014-01-01 | 2014-01-01 | 0d |
| 399 | 1.2.4.3.3.1 | Development | manual | 1d? | 2014-01-01 | 2014-01-01 |  |
| 400 | 1.2.4.3.3.2 | Testing | manual | 1d? | 2014-01-01 | 2014-01-01 |  |
| 401 | 1.2.4.3.3.3 | Deployment | manual | 1d? | 2014-01-01 | 2014-01-01 |  |
| 402 | 1.2.4.4 | Migration | manual | 1d | 2014-01-01 | 2014-01-01 |  |
