# New Project plan V1

Schedule from MS Project, 2014-01-01 to 2016-01-01, A marks actual dates.

## Calendars

- Standard: Mon-Fri 08:00-12:00, 13:00-17:00; Sat-Sun off.

## Resources

| Resource |
| --- |
| Singapore |
| India |
| CDGI |
| I |
| Sina |

## Schedule

| ID | WBS | Task | Type | Duration | Start | Finish | Remaining | Total slack | Resources | Work | Items Pending at CDGI | India Ebix Remarks | Items Pending at Singapore |
| --- | --- | --- | --- | --- | --- | --- | --- | --- | --- | --- | --- | --- | --- |
| 1 | 1 | **1 Project Initiation** |  | 522d | 2014-01-01 | 2015-12-31 |  |  | Singapore | 6776h |  |  |  |
| 2 | 1.1 | 1.1 Project Scope Definition | manual | 32d | 2015-01-01 | 2015-02-13 |  |  | Singapore | 256h |  |  |  |
| 3 | 1.2 | 1.2 Project Plan Development | manual | 32d | 2015-01-01 | 2015-02-13 |  |  | Singapore | 256h |  |  |  |
| 4 | 1.3 | 1.3 Project Scope Completed | manual | 261d | 2015-01-01 | 2015-12-31 |  |  | Singapore | 2088h |  |  |  |
| 5 | 2 | **2 Requirement Gathering** |  | 326d? | 2014-10-02 A | 2015-12-31 | 326d? |  | Singapore | 73512h |  |  |  |
| 6 | 2.1 | **2.1 System Admin Requirements** |  | 326d? | 2014-10-02 | 2015-12-31 |  | 0d | Singapore | 6488h | Pending clarification from CDGI |  |  |
| 7 | 2.1.1 | **2.1.1 Upload Main Menu** |  | 241d | 2015-01-29 | 2015-12-31 |  |  | Singapore | 3864h |  |  |  |
| 8 | 2.1.1.1 | 2.1.1.1 Vehicle Listing Upload | manual | 1d? | 2015-12-31 | 2015-12-31 |  |  | Singapore | 8h | CDGI to check with users |  |  |
| 9 | 2.1.1.2 | 2.1.1.2 Bus Captain Listing | manual | 241d | 2015-01-29 | 2015-12-31 |  |  | Singapore | 1928h | CDGI to check with users | Waiting for sample upload file |  |
| 10 | 2.1.2 | **2.1.2 User Admin** |  | 1d? | 2015-01-29 | 2015-01-29 |  | 0d | Singapore | 16h | Pending clarification from CDGI |  |  |
| 11 | 2.1.2.1 | 2.1.2.1 Entity Details | manual | 1d | 2015-01-29 | 2015-01-29 |  |  | Singapore | 8h |  | Waiting for functionality | Singapore ebix to Provide functional details |
| 12 | 2.1.2.2 | 2.1.2.2. User Groups | manual | 1d? | 2015-01-29 | 2015-01-29 |  |  |  |  |  | completed | Singapore ebix to Provide functional details |
| 13 | 2.1.2.3 | 2.1.2.3 User | manual | 1d? | 2015-01-29 | 2015-01-29 |  |  |  |  |  | completed |  |
| 14 | 2.1.2.4 | 2.1.2.4 Department Master | manual | 1d? | 2015-01-29 | 2015-01-29 |  |  |  |  |  | Waiting for functionality | Singapore ebix to Provide functional details |
| 15 | 2.1.2.5 | 2.1.2.5 Password Setup | manual | 1d? | 2015-01-29 | 2015-01-29 |  |  |  |  |  | Waiting for functionality | Singapore ebix to Provide functional details |
| 16 | 2.1.2.6 | 2.1.2.6 Release Locked Users | manual | 1d? | 2015-01-29 | 2015-01-29 |  |  |  |  |  | Waiting for functionality | Singapore ebix to Provide functional details |
| 17 | 2.1.2.7 | 2.1.2.7 Country for User Access | manual | 1d? | 2015-01-29 | 2015-01-29 |  |  |  |  |  | Waiting for functionality | Singapore ebix to Provide functional details |
| 18 | 2.1.3 | **2.1.3 Service Provider** |  | 1d? | 2014-10-02 | 2014-10-02 |  | 0d |  |  |  |  |  |
| 19 | 2.1.3.1 | 2.1.3.1 Insurer Master | manual | 1d? | 2014-10-02 | 2014-10-02 |  |  |  |  | Completed |  |  |
| 20 | 2.1.3.2 | 2.1.3.2 Surveyor Master | manual | 1d? | 2014-10-02 | 2014-10-02 |  |  |  |  |  |  |  |
| 21 | 2.1.3.3 | 2.1.3.3 Lawyer Master | manual | 1d? | 2014-10-02 | 2014-10-02 |  |  |  |  |  |  |  |
| 22 | 2.1.3.4 | 2.1.3.4 Workshop/Dept Master | manual | 1d? | 2014-10-02 | 2014-10-02 |  |  |  |  |  |  |  |
| 23 | 2.1.3.5 | 2.1.3.5 Hospital Master | manual | 1d? | 2014-10-02 | 2014-10-02 |  |  |  |  |  |  |  |
| 24 | 2.1.3.6 | 2.1.3.6 Adjuster Master | manual | 1d? | 2014-10-02 | 2014-10-02 |  |  |  |  |  |  |  |
| 25 | 2.1.4 | 2.1.4 Nature Of Loss | manual | 1d? | 2014-10-02 | 2014-10-02 |  |  |  |  |  |  |  |
| 26 | 2.1.5 | 2.1.5 Type of Loss | manual | 1d? | 2014-10-02 | 2014-10-02 |  |  |  |  |  |  |  |
| 27 | 2.1.6 | 2.1.6 Main Class Business | manual | 1d? | 2014-10-02 | 2014-10-02 |  |  |  |  |  |  |  |
| 28 | 2.1.7 | 2.1.7 Sub Class | manual | 1d? | 2014-10-02 | 2014-10-02 |  |  |  |  |  |  |  |
| 29 | 2.1.8 | 2.1.8 Claims Expense Master | manual | 1d? | 2014-10-02 | 2014-10-02 |  |  |  |  |  |  |  |
| 30 | 2.1.9 | 2.1.9 Claims Close Reason Master | manual | 1d? | 2014-10-02 | 2014-10-02 |  |  |  |  |  |  |  |
| 31 | 2.1.10 | 2.1.10 Currency Master | manual | 1d? | 2014-10-02 | 2014-10-02 |  |  |  |  |  |  |  |
| 32 | 2.1.11 | 2.1.11 Exchange Rate Master | manual | 1d? | 2014-10-02 | 2014-10-02 |  |  |  |  |  |  |  |
| 33 | 2.1.12 | 2.1.12 Vehicle Class | manual | 1d? | 2014-10-02 | 2014-10-02 |  |  |  |  |  |  |  |
| 34 | 2.1.13 | 2.1.13 Vehicle Make | manual | 1d? | 2014-10-02 | 2014-10-02 |  |  |  |  |  |  |  |
| 35 | 2.1.14 | 2.1.14 Vehicle Model | manual | 1d? | 2014-10-02 | 2014-10-02 |  |  |  |  |  |  |  |
| 36 | 2.1.15 | 2.1.15 Insurance Policy | manual | 1d? | 2014-10-02 | 2014-10-02 |  |  |  |  |  |  |  |
| 37 | 2.1.16 | 2.1.16 GST Setting | manual | 1d? | 2014-10-02 | 2014-10-02 |  |  |  |  |  |  |  |
| 38 | 2.1.17 | 2.1.17 Organization | manual | 1d? | 2014-10-02 | 2014-10-02 |  |  |  |  |  |  |  |
| 39 | 2.1.18 | 2.1.18 Claim Officer Duty | manual | 1d? | 2014-10-02 | 2014-10-02 |  |  |  |  | Pending clarification from CDGI |  |  |
| 40 | 2.1.19 | 2.1.19 LOU Rate | manual | 1d? | 2014-10-02 | 2014-10-02 |  |  |  |  |  |  |  |
| 41 | 2.1.20 | 2.1.20 Interchange | manual | 1d? | 2014-10-02 | 2014-10-02 |  |  |  |  |  |  |  |
| 42 | 2.1.21 | 2.1.21 Deductible | manual | 1d? | 2014-10-02 | 2014-10-02 |  |  |  |  |  |  |  |

| ID | WBS | Task | Type | Duration | Start | Finish | Total slack | Resources | Work | Items Pending at CDGI | India Ebix Remarks |
| --- | --- | --- | --- | --- | --- | --- | --- | --- | --- | --- | --- |
| 43 | 2.2 | **2.2 Upload Requirements** |  | 241d | 2015-01-29 | 2015-12-31 |  | Singapore | 5784h | Pending clarification from CDGI | Ui start development |
| 44 | 2.2.1 | 2.2.1 TAC Upload | manual | 241d | 2015-01-29 | 2015-12-31 |  | Singapore | 1928h | Pending clarification from CDGI | csv file needed |
| 45 | 2.2.2 | 2.2.2 Claim File Upload | manual | 241d | 2015-01-29 | 2015-12-31 |  | Singapore | 1928h | Pending clarification from CDGI | csv file needed |
| 46 | 2.2.3 | 2.2.3 SAP File Upload | manual | 1d? | 2015-01-29 | 2015-01-29 |  |  |  | Pending clarification from CDGI | csv file needed |
| 47 | 2.3 | **2.3 Claim Requirements** |  | 326d | 2014-10-02 | 2015-12-31 | 0d | Singapore | 12408h |  |  |
| 48 | 2.3.1 | **2.3.1 Buses** |  | 36d | 2014-10-02 | 2014-11-20 |  | Singapore | 4008h |  |  |
| 49 | 2.3.1.1 | 2.3.1.1 Accident | manual | 31d | 2014-10-02 | 2014-11-13 |  | Singapore | 248h |  |  |
| 50 | 2.3.1.2 | 2.3.1.2 Claim | manual | 31d | 2014-10-02 | 2014-11-13 |  | Singapore | 248h |  |  |
| 51 | 2.3.1.3 | 2.3.1.3 Service Provider | manual | 31d | 2014-10-02 | 2014-11-13 |  | Singapore | 248h |  |  |
| 52 | 2.3.1.4 | 2.3.1.4 Notes | manual | 31d | 2014-10-02 | 2014-11-13 |  | Singapore | 248h |  |  |
| 53 | 2.3.1.5 | 2.3.1.5 Tasks | manual | 31d | 2014-10-02 | 2014-11-13 |  | Singapore | 248h |  |  |
| 54 | 2.3.1.6 | 2.3.1.6 Attachment | manual | 31d | 2014-10-02 | 2014-11-13 |  | Singapore | 248h |  |  |
| 55 | 2.3.1.7 | 2.3.1.7 Dairy | manual | 31d | 2014-10-02 | 2014-11-13 |  | Singapore | 248h |  |  |
| 56 | 2.3.1.8 | 2.3.1.8 Reassigned Dairy | manual | 31d | 2014-10-02 | 2014-11-13 |  | Singapore | 248h |  |  |
| 57 | 2.3.1.9 | 2.3.1.9 Reserve | manual | 31d | 2014-10-02 | 2014-11-13 |  | Singapore | 248h |  |  |
| 58 | 2.3.1.10 | 2.3.1.10 Reserve History | manual | 31d | 2014-10-02 | 2014-11-13 |  | Singapore | 248h |  |  |
| 59 | 2.3.1.11 | 2.3.1.11 Mandate | manual | 31d | 2014-10-02 | 2014-11-13 |  | Singapore | 248h |  |  |
| 60 | 2.3.1.12 | 2.3.1.12 Mandate History | manual | 31d | 2014-10-02 | 2014-11-13 |  | Singapore | 248h |  |  |
| 61 | 2.3.1.13 | 2.3.1.13 Payment | manual | 31d | 2014-10-02 | 2014-11-13 |  | Singapore | 248h |  |  |
| 62 | 2.3.1.14 | 2.3.1.14 Payment History | manual | 31d | 2014-10-02 | 2014-11-13 |  | Singapore | 248h |  |  |
| 63 | 2.3.1.15 | 2.3.1.15 Recovery | manual | 31d | 2014-10-02 | 2014-11-13 |  | Singapore | 248h |  |  |
| 64 | 2.3.2 | 2.3.2 Trains | manual | 1d | 2015-01-29 | 2015-01-29 |  | Singapore | 8h |  |  |
| 65 | 2.3.3 | 2.3.3 Taxis | manual | 241d | 2015-01-29 | 2015-12-31 |  | Singapore | 1928h |  |  |
| 66 | 2.3.4 | 2.3.4 Rental Cars | manual | 241d | 2015-01-29 | 2015-12-31 |  | Singapore | 1928h |  |  |
| 67 | 2.3.5 | 2.3.5 Private Cars | manual | 241d | 2015-01-29 | 2015-12-31 |  | Singapore | 1928h |  |  |

| ID | WBS | Task | Type | Duration | Start | Finish | Predecessors | Resources | Work | Items Pending at CDGI | India Ebix Remarks | Description |
| --- | --- | --- | --- | --- | --- | --- | --- | --- | --- | --- | --- | --- |
| 68 | 2.4 | **2.4 Dashboard Requirements** |  | 241d | 2015-01-29 | 2015-12-31 |  | Singapore | 9640h | Pending clarification from CDGI | UI of permission start development |  |
| 69 | 2.4.1 | **2.4.1 Diary Listing Requirements** |  | 241d? | 2015-01-29 | 2015-12-31 |  | Singapore | 7712h | Pending clarification from CDGI |  |  |
| 70 | 2.4.1.1 | 2.4.1.1 Diary Items | manual | 241d | 2015-01-29 | 2015-12-31 |  | Singapore | 1928h |  | Pending for requirement detail |  |
| 71 | 2.4.1.2 | 2.4.1.2 Assigned Tasks | manual | 241d | 2015-01-29 | 2015-12-31 |  | Singapore | 1928h |  | pending for requirement detail |  |
| 72 | 2.4.1.3 | 2.4.1.3 Escalation Tasks | manual | 241d | 2015-01-29 | 2015-12-31 |  | Singapore | 1928h |  | pending for requirement detail |  |
| 73 | 2.5 | **2.5 Diary Listing** |  | 240d | 2015-01-30 | 2015-12-31 |  | India | 15352h |  |  |  |
| 74 | 2.5.1 | 2.5.1 Diary Items | manual | 240d | 2015-01-30 | 2015-12-31 |  | India | 1920h | waiting To Get Details |  |  |
| 75 | 2.5.2 | 2.5.2 Assigned Tasks | manual | 240d | 2015-01-30 | 2015-12-31 |  | India | 1920h | waiting To Get Details |  |  |
| 76 | 2.5.3 | 2.5.3 Escalation Tasks | manual | 240d | 2015-01-30 | 2015-12-31 |  | India | 1920h | waiting To Get Details |  |  |
| 77 | 2.5.4 | 2.5.4 User Manual | manual | 240d | 2015-01-30 | 2015-12-31 |  | India | 1920h | waiting To Get Details |  |  |
| 78 | 2.5.5 | 2.5.5 Test Approach/Test Cases | manual | 240d | 2015-01-30 | 2015-12-31 |  | India | 1920h | waiting To Get Details |  |  |
| 79 | 2.5.6 | 2.5.6 QA Testing | manual | 240d | 2015-01-30 | 2015-12-31 |  | India | 1920h | waiting To Get Details |  |  |
| 80 | 2.5.7 | 2.5.7 UAT | manual | 239d | 2015-02-02 | 2015-12-31 | 79 | India | 1912h | waiting To Get Details |  |  |
| 81 | 2.6 | **2.6 Claim Enquiry Requirements** |  | 241d | 2015-01-29 | 2015-12-31 |  | Singapore | 7712h | Pending clarification from CDGI | pending for requirement detail |  |
| 82 | 2.6.1 | 2.6.1 Claims | manual | 241d | 2015-01-29 | 2015-12-31 |  | Singapore | 1928h |  | pending for requirement detail |  |
| 83 | 2.6.2 | 2.6.2 Claim Documents Printing | manual | 241d | 2015-01-29 | 2015-12-31 |  | Singapore | 1928h |  | pending for requirement detail |  |
| 84 | 2.6.3 | 2.6.3 Job Schedule Enquiry | manual | 241d | 2015-01-29 | 2015-12-31 |  | Singapore | 1928h |  | pending for requirement detail |  |
| 85 | 2.7 | **2.7 Document Generation Module** |  | 241d | 2015-01-29 | 2015-12-31 |  | Singapore | 3856h | Pending clarification from CDGI | pending for requirement detail |  |
| 86 | 2.7.1 | 2.7.1 Document Generation Criteria | manual | 241d | 2015-01-29 | 2015-12-31 |  | Singapore | 1928h |  |  | new Task added |
| 87 | 2.8 | **2.8 Document Print** |  | 241d | 2015-01-29 | 2015-12-31 |  | Singapore | 5784h | Pending clarification from CDGI |  |  |
| 88 | 2.8.1 | 2.7.1 Claim Payment Document Printing | manual | 241d | 2015-01-29 | 2015-12-31 |  | Singapore | 1928h | waiting To Get Details |  |  |
| 89 | 2.8.2 | 2.7.2 Claim Registration Document Printing | manual | 241d | 2015-01-29 | 2015-12-31 |  | Singapore | 1928h | waiting To Get Details |  |  |
| 90 | 2.9 | 2.9 Unreported Claim | manual | 241d | 2015-01-29 | 2015-12-31 |  | Singapore | 1928h | Pending clarification from CDGI | pending for requirement detail |  |
| 91 | 2.10 | **2.10 Security Management System** |  | 241d | 2015-01-29 | 2015-12-31 |  | Singapore | 1944h |  |  |  |
| 92 | 2.10.1 | 2.10.1 Permission Screen UI | manual | 1d? | 2015-12-31 | 2015-12-31 |  | Singapore | 8h | waiting To Get Details |  | New Task added |
| 93 | 2.10.2 | 2.10.2 Permission screen functionality | manual | 1d? | 2015-12-31 | 2015-12-31 |  | Singapore | 8h | waiting To Get Details |  |  |
| 94 | 2.11 | 2.11 Requirements signed off by client | manual | 1d? | 2015-12-31 | 2015-12-31 |  | Singapore | 8h |  |  |  |

| ID | WBS | Task | Type | Duration | Start | Finish | Predecessors | Complete | Remaining | Actual start | Total slack | Constraint | Resources | Work | Actual work | Items Pending at CDGI | India Ebix Remarks | Items Pending at Singapore |
| --- | --- | --- | --- | --- | --- | --- | --- | --- | --- | --- | --- | --- | --- | --- | --- | --- | --- | --- |
| 95 | 3 | **3 Requirements Finalized in TFS** |  | 392d | 2014-03-03 A | 2015-09-01 |  | 50% | 196d |  | 0d |  | India | 6272h | 3136h |  |  |  |
| 96 | 3.1 | 3.1 Document Upload in TFS | manual | 392d | 2014-03-03 A | 2015-09-01 |  | 50% | 196d |  |  |  | India | 3136h | 1568h |  |  |  |
| 97 | 4 | **4 Design UI and Functionality** |  | 307d? | 2014-05-01 A | 2015-07-03 | 95 | 69% | 96.39d? |  | 130d |  | India | 21416h | 9542.15h |  |  |  |
| 98 | 4.1 | **4.1 System Admin Requirements** |  | 307d | 2014-05-01 A | 2015-07-03 |  | 80% | 60.51d |  |  |  | India | 8648h | 4092.8h | Pending clarification from CDGI |  |  |
| 99 | 4.1.1 | **4.1.1 Upload Main Menu** |  | 192d | 2014-06-01 | 2015-02-23 |  |  | 192d | 2014-06-26 |  |  | India | 1616h |  |  |  |  |
| 100 | 4.1.1.1 | 4.1.1.1 Vehicle Listing Upload |  | 20d | 2014-05-05 | 2014-07-02 |  |  |  |  | 392d | finish no earlier than 2014-07-02 | Singapore | 160h |  |  |  |  |
| 101 | 4.1.1.2 | 4.1.1.2 Bus Captain Listing | manual | 10d | 2015-02-10 | 2015-02-23 | 9 |  |  |  |  |  | Singapore | 80h |  |  | Waiting to get upload sample filel |  |
| 102 | 4.1.2 | **4.1.2 User Admin** |  | 217d | 2014-05-01 A | 2015-02-27 | 10 | 48% | 112.11d |  | 0d |  | India | 2416h | 1932.81h |  |  |  |
| 103 | 4.1.2.1 | 4.1.2.1 Entity Details | manual | 15d | 2014-05-01 A | 2014-05-21 A | 11 | 100% |  |  |  |  | India | 120h | 120h |  | Waiting for functionality | Singapore ebix to Provide functional details |
| 104 | 4.1.2.2 | 4.1.2.2. User Groups | manual | 20d | 2015-02-02 A | 2015-02-27 | 12 | 18% | 16.49d |  |  |  | India | 160h | 28.11h |  | completed | Singapore ebix to Provide functional details |
| 105 | 4.1.2.3 | 4.1.2.3 User | manual | 20d | 2015-01-30 A | 2015-02-26 | 13 | 23% | 15.49d |  |  |  | India | 160h | 36.12h |  | waiting to get UI details for unwanted fields |  |
| 106 | 4.1.2.4 | 4.1.2.4 Department Master | manual | 10d | 2015-01-30 A | 2015-02-12 | 14 | 45% | 5.49d |  |  |  | India | 80h | 36.12h |  |  | Singapore ebix to Provide functional details |
| 107 | 4.1.2.5 | 4.1.2.5 Password Setup | manual | 5d | 2015-01-30 A | 2015-02-05 | 15 | 90% | 0.49d |  |  |  | India | 40h | 36.12h |  | Waiting for functionality | Singapore ebix to Provide functional details |
| 108 | 4.1.2.6 | 4.1.2.6 Release Locked Users | manual | 5d | 2015-01-30 A | 2015-02-05 | 16 | 90% | 0.49d |  |  |  | India | 40h | 36.12h |  | Waiting for functionality | Singapore ebix to Provide functional details |
| 109 | 4.1.2.7 | 4.1.2.7 Country for User Access | manual | 10d | 2015-01-30 A | 2015-02-12 | 17 | 45% | 5.49d |  |  |  | India | 80h | 36.12h |  | Waiting for functionality | Singapore ebix to Provide functional details |
| 110 | 4.1.3 | **4.1.3 Service Provider** |  | 10d | 2014-11-05 A | 2014-11-18 A |  | 100% |  |  |  |  | India | 560h | 560h |  |  |  |
| 111 | 4.1.3.1 | 4.1.3.1 Insurer Master | manual | 10d | 2014-11-05 A | 2014-11-18 A |  | 100% |  |  |  |  | India | 80h | 80h | Completed |  |  |
| 112 | 4.1.3.2 | 4.1.3.2 Surveyor Master | manual | 10d | 2014-11-05 A | 2014-11-18 A |  | 100% |  |  |  |  | India | 80h | 80h |  |  |  |
| 113 | 4.1.3.3 | 4.1.3.3 Lawyer Master | manual | 10d | 2014-11-05 A | 2014-11-18 A |  | 100% |  |  |  |  | India | 80h | 80h |  |  |  |
| 114 | 4.1.3.4 | 4.1.3.4 Workshop/Dept Master | manual | 10d | 2014-11-05 A | 2014-11-18 A |  | 100% |  |  |  |  | India | 80h | 80h |  |  |  |
| 115 | 4.1.3.5 | 4.1.3.5 Hospital Master | manual | 10d | 2014-11-05 A | 2014-11-18 A |  | 100% |  |  |  |  | India | 80h | 80h |  |  |  |
| 116 | 4.1.3.6 | 4.1.3.6 Adjuster Master | manual | 10d | 2014-11-05 A | 2014-11-18 A |  | 100% |  |  |  |  | India | 80h | 80h |  |  |  |
| 117 | 4.1.4 | 4.1.4 Nature Of Loss | manual | 15d | 2014-06-04 A | 2014-06-24 A |  | 100% |  |  |  |  | India | 120h | 120h |  |  |  |
| 118 | 4.1.5 | 4.1.5 Type of Loss | manual | 10d | 2014-06-04 A | 2014-06-17 A |  | 100% |  |  |  |  | India | 80h | 80h |  | Waiting for functionality |  |
| 119 | 4.1.6 | 4.1.6 Main Class Business | manual | 10d | 2014-06-04 A | 2014-06-17 A |  | 100% |  |  |  |  | India | 80h | 80h |  | Waiting for functionality |  |
| 120 | 4.1.7 | 4.1.7 Sub Class | manual | 10d | 2014-06-04 A | 2014-06-17 A |  | 100% |  |  |  |  | India | 80h | 80h |  | Waiting for functionality |  |
| 121 | 4.1.8 | 4.1.8 Claims Expense Master | manual | 10d | 2014-06-04 A | 2014-06-17 A |  | 100% |  |  |  |  | India | 80h | 80h |  | Waiting for functionality |  |
| 122 | 4.1.9 | 4.1.9 Claims Close Reason Master | manual | 10d | 2014-06-04 A | 2014-06-17 A |  | 100% |  |  |  |  | India | 80h | 80h |  | Waiting for functionality |  |
| 123 | 4.1.10 | 4.1.10 Currency Master | manual | 10d | 2014-06-04 A | 2014-06-17 A |  | 100% |  |  |  |  | India | 80h | 80h |  |  |  |
| 124 | 4.1.11 | 4.1.11 Exchange Rate Master | manual | 10d | 2014-06-04 A | 2014-06-17 A |  | 100% |  |  |  |  | India | 80h | 80h |  |  |  |
| 125 | 4.1.12 | 4.1.12 Vehicle Class | manual | 10d | 2014-06-04 A | 2014-06-17 A |  | 100% |  |  |  |  | India | 80h | 80h |  |  |  |
| 126 | 4.1.13 | 4.1.13 Vehicle Make | manual | 10d | 2014-06-04 A | 2014-06-17 A |  | 100% |  |  |  |  | India | 80h | 80h |  |  |  |
| 127 | 4.1.14 | 4.1.14 Vehicle Model | manual | 10d | 2014-06-04 A | 2014-06-17 A |  | 100% |  |  |  |  | India | 80h | 80h |  |  |  |
| 128 | 4.1.15 | 4.1.15 Insurance Policy | manual | 15d | 2014-06-04 A | 2014-06-24 A |  | 100% |  |  |  |  | India | 120h | 120h |  |  |  |
| 129 | 4.1.16 | 4.1.16 GST Setting | manual | 10d | 2014-06-04 A | 2014-06-17 A |  | 100% |  |  |  |  | India | 80h | 80h |  | Waiting for functionality |  |
| 130 | 4.1.17 | 4.1.17 Organization | manual | 20d | 2014-12-15 A | 2015-01-09 A |  | 100% |  |  |  |  | India | 160h | 160h |  |  |  |
| 131 | 4.1.18 | 4.1.18 Claim Officer Duty | manual | 10d | 2014-09-03 A | 2014-09-16 A |  | 100% |  |  |  |  | India | 80h | 80h | Pending clarification from CDGI |  |  |
| 132 | 4.1.19 | 4.1.19 LOU Rate | manual | 10d | 2014-09-10 A | 2014-09-23 A |  | 100% |  |  |  |  | India | 80h | 80h |  |  |  |
| 133 | 4.1.20 | 4.1.20 Interchange | manual | 10d | 2014-09-10 A | 2014-09-23 A |  | 100% |  |  |  |  | India | 80h | 80h |  |  |  |
| 134 | 4.1.21 | 4.1.21 Deductible | manual | 10d | 2014-12-15 A | 2014-12-26 A |  | 100% |  |  |  |  | India | 80h | 80h |  |  |  |

| ID | WBS | Task | Type | Duration | Start | Finish | Complete | Remaining | Total slack | Resources | Work | Actual work | Items Pending at CDGI | India Ebix Remarks |
| --- | --- | --- | --- | --- | --- | --- | --- | --- | --- | --- | --- | --- | --- | --- |
| 135 | 4.2 | **4.2 Upload** |  | 20d | 2015-01-29 A | 2015-02-25 | 27% | 14.67d |  | India | 640h | 184h | Pending clarification from CDGI | Ui start development |
| 136 | 4.2.1 | 4.2.1 TAC Upload | manual | 20d | 2015-01-29 A | 2015-02-25 | 40% | 12d |  | India | 160h | 64h | Pending clarification from CDGI | Waiting for functionality |
| 137 | 4.2.2 | 4.2.2 Claim File Upload | manual | 20d | 2015-01-29 A | 2015-02-25 | 40% | 12d |  | India | 160h | 64h | Pending clarification from CDGI | Waiting for functionality |
| 138 | 4.2.3 | 4.2.3 SAP File Upload | manual | 20d | 2015-01-29 | 2015-02-25 |  |  |  | India | 160h |  | Pending clarification from CDGI | Waiting for functionality |
| 139 | 4.3 | **4.3 Claim** |  | 156d | 2014-10-02 A | 2015-05-07 | 89% | 17.51d | 0d | India | 6624h | 4366.92h |  |  |
| 140 | 4.3.1 | **4.3.1 Buses** |  | 96d | 2014-10-02 A | 2015-02-12 | 99% | 0.92d |  | India | 4648h | 4118.92h |  |  |
| 141 | 4.3.1.1 | 4.3.1.1 Accident | manual | 31d | 2014-10-02 A | 2014-11-13 A | 100% |  |  | India | 248h | 248h |  |  |
| 142 | 4.3.1.2 | 4.3.1.2 Claim | manual | 31d | 2014-10-02 A | 2014-11-13 A | 100% |  |  | India | 248h | 248h |  |  |
| 143 | 4.3.1.3 | 4.3.1.3 Service Provider | manual | 31d | 2014-10-02 A | 2014-11-13 A | 100% |  |  | India | 248h | 248h |  |  |
| 144 | 4.3.1.4 | 4.3.1.4 Notes | manual | 31d | 2014-10-02 A | 2014-11-13 A | 100% |  |  | India | 248h | 248h |  |  |
| 145 | 4.3.1.5 | 4.3.1.5 Tasks | manual | 31d | 2014-10-02 A | 2014-11-13 A | 100% |  |  | India | 248h | 248h |  |  |
| 146 | 4.3.1.6 | 4.3.1.6 Attachment | manual | 31d | 2014-10-02 A | 2014-11-13 A | 100% |  |  | India | 248h | 248h |  |  |
| 147 | 4.3.1.7 | 4.3.1.7 Dairy | manual | 31d | 2014-10-02 A | 2014-11-13 A | 100% |  |  | India | 248h | 248h |  |  |
| 148 | 4.3.1.8 | 4.3.1.8 Reassigned Dairy | manual | 31d | 2014-10-02 A | 2014-11-13 A | 100% |  |  | India | 248h | 248h |  |  |
| 149 | 4.3.1.9 | 4.3.1.9 Reserve |  | 31d | 2014-11-21 A | 2015-01-02 A | 100% |  |  | India | 248h | 248h |  |  |
| 150 | 4.3.1.10 | 4.3.1.10 Reserve History | manual | 31d | 2014-11-21 A | 2015-01-02 A | 100% |  |  | India | 248h | 248h |  |  |
| 151 | 4.3.1.11 | 4.3.1.11 Mandate | manual | 31d | 2014-11-21 A | 2015-01-02 A | 100% |  |  | India | 248h | 248h |  |  |
| 152 | 4.3.1.12 | 4.3.1.12 Mandate History | manual | 31d | 2014-11-21 A | 2015-01-02 A | 100% |  |  | India | 248h | 248h |  |  |
| 153 | 4.3.1.13 | 4.3.1.13 Payment | manual | 31d | 2014-12-05 A | 2015-01-16 A | 100% |  |  | India | 248h | 248h |  |  |
| 154 | 4.3.1.14 | 4.3.1.14 Payment History | manual | 31d | 2014-12-05 A | 2015-01-16 A | 100% |  |  | India | 248h | 248h |  |  |
| 155 | 4.3.1.15 | 4.3.1.15 Recovery | manual | 31d | 2015-01-01 A | 2015-02-12 | 85% | 4.65d |  | India | 248h | 210.8h |  | Waiting for functionality |
| 156 | 4.3.1.16 | 4.3.1.16 Transaction History | manual | 20d | 2014-10-02 A | 2014-10-29 A | 100% |  |  | India | 160h | 160h |  |  |
| 157 | 4.3.2 | 4.3.2 Trains | manual | 31d | 2014-10-02 A | 2014-11-13 A | 100% |  |  | India | 248h | 248h |  |  |
| 158 | 4.3.3 | 4.3.3 Taxis | manual | 20d | 2015-03-10 | 2015-04-06 |  |  |  | India | 160h |  |  | Waiting for functionality |
| 159 | 4.3.4 | 4.3.4 Rental Cars | manual | 20d | 2015-04-10 | 2015-05-07 |  |  |  | India | 160h |  |  | Waiting for functionality |
| 160 | 4.3.5 | 4.3.5 Private Cars | manual | 20d | 2015-04-10 | 2015-05-07 |  |  |  | India | 160h |  |  | Waiting for functionality |

| ID | WBS | Task | Type | Duration | Start | Finish | Predecessors | Complete | Remaining | Actual start | Total slack | Resources | Work | Actual work | Items Pending at CDGI | India Ebix Remarks | Description |
| --- | --- | --- | --- | --- | --- | --- | --- | --- | --- | --- | --- | --- | --- | --- | --- | --- | --- |
| 161 | 4.4 | **4.4 Dashboard** |  | 15d | 2015-02-10 A | 2015-03-02 |  | 10% | 13.5d |  |  | India | 240h | 12h | Pending clarification from CDGI | UI of permission start development |  |
| 162 | 4.4.1 | 4.4.1 Sections of Dashboard as per User Group | manual | 15d | 2015-02-10 A | 2015-03-02 |  | 10% | 13.5d |  |  | India | 120h | 12h | Pending clarification from CDGI | Waiting for functionality |  |
| 163 | 4.5 | **4.5 Diary Listing** |  | 10d | 2015-02-10 | 2015-02-23 |  |  |  |  | 0d | India | 320h |  |  | Waiting for functionality |  |
| 164 | 4.5.1 | 4.5.1 Diary Items | manual | 10d | 2015-02-10 | 2015-02-23 |  |  |  |  |  | India | 80h |  |  | Waiting for functionality |  |
| 165 | 4.5.2 | 4.5.2 Assigned Tasks | manual | 10d | 2015-02-10 | 2015-02-23 |  |  |  |  |  | India | 80h |  |  | Waiting for functionality |  |
| 166 | 4.5.3 | 4.5.3 Escalation Tasks | manual | 10d | 2015-02-10 | 2015-02-23 |  |  |  |  |  | India | 80h |  |  | Waiting for functionality |  |
| 167 | 4.6 | **4.6 Claim Enquiry** |  | 70d | 2015-01-29 A | 2015-05-06 |  | 39% | 42.5d |  |  | India | 1120h | 404h | Pending clarification from CDGI | Waiting for functionality |  |
| 168 | 4.6.1 | 4.6.1 Claims | manual | 30d | 2015-01-29 A | 2015-03-11 |  | 40% | 18d |  |  | India | 240h | 96h |  | Waiting for functionality |  |
| 169 | 4.6.2 | 4.6.2 Claim Documents Printing | manual | 30d | 2015-03-20 A | 2015-04-30 |  | 25% | 22.5d |  |  | India | 240h | 60h |  | Waiting for functionality |  |
| 170 | 4.6.3 | 4.6.3 Job Schedule Enquiry | manual | 10d | 2015-01-29 A | 2015-02-11 |  | 80% | 2d |  |  | India | 80h | 64h |  | Waiting for functionality |  |
| 171 | 4.7 | **4.7 Document Generation Module** |  | 60d | 2015-03-25 | 2015-06-16 |  |  |  |  |  | India | 960h |  | Pending clarification from CDGI | Waiting for functionality |  |
| 172 | 4.7.1 | 4.7.1 Document Generation Criteria | manual | 60d | 2015-01-29 | 2015-04-22 |  |  |  |  |  | India | 480h |  |  | Waiting for functionality | new Task added |
| 173 | 4.8 | **4.8 Document Print** |  | 30d | 2015-03-25 | 2015-05-05 |  |  |  |  |  | India | 720h |  | Pending clarification from CDGI |  |  |
| 174 | 4.8.1 | 4.8.1 Claim Payment Document Printing | manual | 30d | 2015-03-25 | 2015-05-05 |  |  |  |  |  | India | 240h |  | waiting To Get Details | Waiting for functionality |  |
| 175 | 4.8.2 | 4.8.2 Claim Registration Document Printing | manual | 30d | 2015-03-25 | 2015-05-05 |  |  |  |  |  | India | 240h |  |  | Waiting for functionality |  |
| 176 | 4.9 | 4.9 Unreported Claim | manual | 10d | 2015-02-05 | 2015-02-18 |  |  |  |  |  | India | 80h |  | Pending clarification from CDGI | Waiting for functionality |  |
| 177 | 4.10 | **4.10 Security Management System** |  | 30d | 2014-11-10 A | 2014-12-19 |  | 85% | 4.5d |  |  | India | 480h | 204h |  |  |  |
| 178 | 4.10.1 | 4.10.1 Permission Screen UI | manual | 15d | 2014-11-10 A | 2014-11-28 |  | 85% | 2.25d |  |  | India | 120h | 102h | waiting To Get Details |  | New Task added |
| 179 | 4.10.2 | 4.10.2 Permission screen functionality | manual | 15d | 2014-11-10 A | 2014-11-28 |  | 85% | 2.25d |  |  | India | 120h | 102h | waiting To Get Details |  |  |
| 180 | 4.11 | 4.11 UI and Design signed off by client | manual | 1d? | 2014-05-01 | 2014-05-01 |  |  |  |  |  | India | 8h |  |  |  |  |
| 181 | 5 | **5 Iterative Development and Testing** |  | 309d? | 2014-05-22 A | 2015-07-28 | 95 | 39% | 188.43d? |  | 0d | India | 25624h | 7725.82h |  |  |  |
| 182 | 5.1 | **5.1 System Admin** |  | 240d | 2014-07-01 | 2015-06-01 |  | 88% | 28.56d | 2014-05-22 |  | India | 6976h | 4560h |  |  |  |
| 183 | 5.1.1 | **5.1.1 Upload Main Menu** |  | 129d | 2014-09-09 A | 2015-03-06 | 99 | 75% | 32.25d |  | 0d | India | 240h | 200h |  |  |  |
| 184 | 5.1.1.1 | 5.1.1.1 Vehicle Listing Upload | manual | 10d | 2014-09-09 A | 2014-09-22 A | 100 | 100% |  |  |  | India | 80h | 80h |  |  |  |
| 185 | 5.1.1.2 | 5.1.1.2 Bus Captain Listing | manual | 10d | 2015-02-23 A | 2015-03-06 | 101 | 50% | 5d |  |  | India | 80h | 40h |  | Waiting for functionality |  |

| ID | WBS | Task | Type | Duration | Start | Finish | Predecessors | Complete | Remaining | Resources | Work | Actual work | Items Pending at CDGI |
| --- | --- | --- | --- | --- | --- | --- | --- | --- | --- | --- | --- | --- | --- |
| 186 | 5.1.2 | **5.1.2 User Admin** |  | 212d | 2014-05-22 A | 2015-03-13 A | 102 | 100% |  | India | 2256h | 2256h |  |
| 187 | 5.1.2.1 | 5.1.2.1 Entity Details | manual | 10d | 2014-05-22 A | 2014-06-04 A | 103 | 100% |  | India | 80h | 80h |  |
| 188 | 5.1.2.2 | 5.1.2.2. User Groups | manual | 10d | 2015-03-02 A | 2015-03-13 A | 104 | 100% |  | India | 80h | 80h |  |
| 189 | 5.1.2.3 | 5.1.2.3 User | manual | 10d | 2015-02-27 A | 2015-03-12 A | 105 | 100% |  | India | 80h | 80h |  |
| 190 | 5.1.2.4 | 5.1.2.4 Department Master | manual | 10d | 2015-02-13 A | 2015-02-26 A | 106 | 100% |  | India | 80h | 80h |  |
| 191 | 5.1.2.5 | 5.1.2.5 Password Setup | manual | 10d | 2015-02-06 A | 2015-02-19 A | 107 | 100% |  | India | 80h | 80h |  |
| 192 | 5.1.2.6 | 5.1.2.6 Release Locked Users | manual | 10d | 2015-02-06 A | 2015-02-19 A | 108 | 100% |  | India | 80h | 80h |  |
| 193 | 5.1.2.7 | 5.1.2.7 Country for User Access | manual | 10d | 2015-02-13 A | 2015-02-26 A | 109 | 100% |  | India | 80h | 80h |  |
| 194 | 5.1.3 | **5.1.3 Service Provider** |  | 15d | 2014-11-19 A | 2014-12-09 |  | 99% | 0d | India | 600h | 480h |  |
| 195 | 5.1.3.1 | 5.1.3.1 Insurer Master | manual | 10d | 2014-11-19 A | 2014-12-02 A | 111 | 100% |  | India | 80h | 80h |  |
| 196 | 5.1.3.2 | 5.1.3.2 Surveyor Master | manual | 10d | 2014-11-19 A | 2014-12-02 A | 112 | 100% |  | India | 80h | 80h |  |
| 197 | 5.1.3.3 | 5.1.3.3 Lawyer Master | manual | 10d | 2014-11-19 A | 2014-12-02 A | 113 | 100% |  | India | 80h | 80h |  |
| 198 | 5.1.3.4 | 5.1.3.4 Workshop/Dept Master | manual | 10d | 2014-11-25 A | 2014-12-08 A | 114 | 100% |  | India | 80h | 80h |  |
| 199 | 5.1.3.5 | 5.1.3.5 Hospital Master | manual | 10d | 2014-11-26 A | 2014-12-09 A | 115 | 100% |  | India | 80h | 80h |  |
| 200 | 5.1.3.6 | 5.1.3.6 Adjuster Master | manual | 10d | 2014-11-25 A | 2014-12-08 A | 116 | 100% |  | India | 80h | 80h |  |
| 201 | 5.1.4 | 5.1.4 Nature Of Loss | manual | 10d | 2014-06-25 A | 2014-07-08 A | 117 | 100% |  | India | 80h | 80h |  |
| 202 | 5.1.5 | 5.1.5 Type of Loss | manual | 10d | 2014-06-18 A | 2014-07-01 A | 118 | 100% |  | India | 80h | 80h |  |
| 203 | 5.1.6 | 5.1.6 Main Class Business | manual | 10d | 2014-06-18 A | 2014-07-01 A | 119 | 100% |  | India | 80h | 80h |  |
| 204 | 5.1.7 | 5.1.7 Sub Class | manual | 10d | 2014-06-18 A | 2014-07-01 A | 120 | 100% |  | India | 80h | 80h |  |
| 205 | 5.1.8 | 5.1.8 Claims Expense Master | manual | 10d | 2014-06-18 A | 2014-07-01 A | 121 | 100% |  | India | 80h | 80h |  |
| 206 | 5.1.9 | 5.1.9 Claims Close Reason Master | manual | 10d | 2014-06-18 A | 2014-07-01 A | 122 | 100% |  | India | 80h | 80h |  |
| 207 | 5.1.10 | 5.1.10 Currency Master | manual | 10d | 2014-06-18 A | 2014-07-01 A | 123 | 100% |  | India | 80h | 80h |  |
| 208 | 5.1.11 | 5.1.11 Exchange Rate Master | manual | 10d | 2014-06-18 A | 2014-07-01 A | 124 | 100% |  | India | 80h | 80h |  |
| 209 | 5.1.12 | 5.1.12 Vehicle Class | manual | 10d | 2014-06-18 A | 2014-07-01 A | 125 | 100% |  | India | 80h | 80h |  |
| 210 | 5.1.13 | 5.1.13 Vehicle Make | manual | 10d | 2014-06-18 A | 2014-07-01 A | 126 | 100% |  | India | 80h | 80h |  |
| 211 | 5.1.14 | 5.1.14 Vehicle Model | manual | 10d | 2014-06-18 A | 2014-07-01 A | 127 | 100% |  | India | 80h | 80h |  |
| 212 | 5.1.15 | 5.1.15 Insurance Policy | manual | 10d | 2014-06-25 A | 2014-07-08 A | 128 | 100% |  | India | 80h | 80h |  |
| 213 | 5.1.16 | 5.1.16 GST Setting | manual | 10d | 2014-06-18 A | 2014-07-01 A | 129 | 100% |  | India | 80h | 80h |  |
| 214 | 5.1.17 | 5.1.17 Organization | manual | 10d | 2015-01-12 A | 2015-01-23 A | 130 | 100% |  | India | 80h | 80h |  |
| 215 | 5.1.18 | 5.1.18 Claim Officer Duty | manual | 10d | 2014-09-17 A | 2014-09-30 A | 131 | 100% |  | India | 80h | 80h |  |
| 216 | 5.1.19 | 5.1.19 LOU Rate | manual | 10d | 2014-09-24 A | 2014-10-07 A | 132 | 100% |  | India | 80h | 80h |  |
| 217 | 5.1.20 | 5.1.20 Interchange | manual | 10d | 2014-09-24 A | 2014-10-07 A | 133 | 100% |  | India | 80h | 80h |  |
| 218 | 5.1.21 | 5.1.21 Deductible | manual | 10d | 2014-12-29 A | 2015-01-09 A | 134 | 100% |  | India | 80h | 80h |  |
| 219 | 5.1.22 | 5.1.22 User Manual | manual | 20d | 2015-02-02 A | 2015-02-27 |  | 10% | 18d | India | 160h | 16h | waiting To Get Details |
| 220 | 5.1.23 | 5.1.23 Test Approach/Test Cases | manual | 5d | 2015-02-02 A | 2015-02-06 A |  | 100% |  | India | 40h | 40h | waiting To Get Details |
| 221 | 5.1.24 | 5.1.24 QA Testing | manual | 20d | 2015-02-11 A | 2015-03-10 |  | 80% | 4d | India | 160h | 128h | waiting To Get Details |
| 222 | 5.1.25 | 5.1.25 UAT | manual | 20d | 2015-03-10 | 2015-04-06 |  |  |  | Singapore | 160h |  | waiting To Get Details |

| ID | WBS | Task | Type | Duration | Start | Finish | Predecessors | Complete | Remaining | Actual start | Resources | Work | Actual work | Items Pending at CDGI | India Ebix Remarks |
| --- | --- | --- | --- | --- | --- | --- | --- | --- | --- | --- | --- | --- | --- | --- | --- |
| 223 | 5.2 | **5.2 Upload** |  | 58d | 2015-01-30 | 2015-04-21 | 135 |  |  |  | India | 1240h |  | waiting to get Details |  |
| 224 | 5.2.1 | 5.2.1 TAC Upload | manual | 25d | 2015-02-26 | 2015-04-01 | 136 |  |  |  | India | 200h |  | waiting to get Details | Waiting for functionality |
| 225 | 5.2.2 | 5.2.2 Claim File Upload | manual | 25d | 2015-02-26 | 2015-04-01 | 137 |  |  |  | India | 200h |  |  | Waiting for functionality |
| 226 | 5.2.3 | 5.2.3 SAP File Upload | manual | 25d | 2015-02-26 | 2015-04-01 | 138 |  |  |  | India | 200h |  |  | Waiting for functionality |
| 227 | 5.2.4 | 5.2.4 User Manual | manual | 5d | 2015-04-02 | 2015-04-08 | 226 |  |  |  | India | 40h |  |  |  |
| 228 | 5.2.5 | 5.2.5 Test Approach/Test Cases | manual | 2d | 2015-04-01 | 2015-04-02 | 138 |  |  |  | India | 16h |  |  |  |
| 229 | 5.2.6 | 5.2.6 QA Testing | manual | 5d | 2015-04-01 | 2015-04-07 | 138 |  |  |  | India | 40h |  |  |  |
| 230 | 5.2.7 | 5.2.7 UAT | manual | 10d | 2015-04-08 | 2015-04-21 |  |  |  |  | India | 80h |  |  |  |
| 231 | 5.3 | **5.3 Claim** |  | 183d | 2014-11-14 | 2015-07-28 |  | 45% | 99.85d | 2014-10-30 | India | 6328h | 1748.4h |  |  |
| 232 | 5.3.1 | **5.3.1 Buses** |  | 127d | 2014-11-14 | 2015-05-11 | 140 | 85% | 18.83d | 2014-10-30 | India | 2648h | 1390h |  |  |
| 233 | 5.3.1.1 | 5.3.1.1 Accident | manual | 10d | 2014-11-14 A | 2014-11-27 A | 141 | 100% |  |  | India | 80h | 80h |  |  |
| 234 | 5.3.1.2 | 5.3.1.2 Claim | manual | 12d | 2014-11-14 A | 2014-12-01 A | 142 | 100% |  |  | India | 96h | 96h |  |  |
| 235 | 5.3.1.3 | 5.3.1.3 Service Provider | manual | 15d | 2014-11-14 A | 2014-12-04 A | 143 | 100% |  |  | India | 120h | 120h |  |  |
| 236 | 5.3.1.4 | 5.3.1.4 Notes | manual | 10d | 2014-11-14 A | 2014-11-27 A | 144 | 100% |  |  | India | 80h | 80h |  |  |
| 237 | 5.3.1.5 | 5.3.1.5 Tasks | manual | 12d | 2014-11-14 A | 2014-12-01 A | 145 | 100% |  |  | India | 96h | 96h |  |  |
| 238 | 5.3.1.6 | 5.3.1.6 Attachment | manual | 12d | 2014-11-14 A | 2014-12-01 A | 146 | 100% |  |  | India | 96h | 96h |  |  |
| 239 | 5.3.1.7 | 5.3.1.7 Dairy | manual | 20d | 2014-11-14 A | 2014-12-11 A | 147 | 100% |  |  | India | 160h | 160h |  |  |
| 240 | 5.3.1.8 | 5.3.1.8 Reassigned Dairy | manual | 10d | 2014-11-14 A | 2014-11-27 A | 148 | 100% |  |  | India | 80h | 80h |  |  |
| 241 | 5.3.1.9 | 5.3.1.9 Reserve | manual | 10d | 2015-01-02 A | 2015-01-15 | 149 | 85% | 1.5d |  | India | 80h | 68h |  |  |
| 242 | 5.3.1.10 | 5.3.1.10 Reserve History | manual | 5d | 2015-01-16 A | 2015-01-22 | 241 | 85% | 0.75d |  | India | 40h | 34h |  |  |
| 243 | 5.3.1.11 | 5.3.1.11 Mandate | manual | 10d | 2015-01-02 A | 2015-01-15 | 151 | 85% | 1.5d |  | India | 80h | 68h |  |  |
| 244 | 5.3.1.12 | 5.3.1.12 Mandate History | manual | 5d | 2015-01-16 A | 2015-01-22 | 243 | 30% | 3.5d |  | India | 40h | 12h |  | Waiting for functionality |
| 245 | 5.3.1.13 | 5.3.1.13 Payment | manual | 10d? | 2015-01-19 A | 2015-01-30 | 153 | 40% | 6d? |  | India | 80h | 32h |  | Waiting for functionality |
| 246 | 5.3.1.14 | 5.3.1.14 Payment History | manual | 5d | 2015-02-16 | 2015-02-20 | 154 |  |  |  | India | 40h |  |  | Waiting for functionality |
| 247 | 5.3.1.15 | 5.3.1.15 Recovery | manual | 20d | 2015-02-10 A | 2015-03-09 | 155 | 40% | 12d |  | India | 160h | 64h |  |  |
| 248 | 5.3.1.16 | 5.3.1.16 Transaction History | manual | 38d | 2014-10-30 A | 2014-12-22 A | 156 | 100% |  |  | India | 304h | 304h |  |  |
| 249 | 5.3.2 | 5.3.2 Trains | manual | 127d | 2014-11-14 A | 2015-05-11 | 157 | 35% | 82.2d |  | India | 1016h | 358.4h |  |  |
| 250 | 5.3.3 | 5.3.3 Taxis | manual | 30d | 2015-04-07 | 2015-05-18 | 158 |  |  |  | India | 240h |  |  | Waiting for functionality |
| 251 | 5.3.4 | 5.3.4 Rental Cars | manual | 30d | 2015-05-08 | 2015-06-18 | 159 |  |  |  | India | 240h |  |  | Waiting for functionality |
| 252 | 5.3.5 | 5.3.5 Private Cars | manual | 30d | 2015-05-08 | 2015-06-18 | 160 |  |  |  | India | 240h |  |  | Waiting for functionality |
| 253 | 5.3.6 | 5.3.6 User Manual | manual | 10d | 2015-05-11 | 2015-05-22 |  |  |  |  | India | 80h |  |  | Waiting for functionality |
| 254 | 5.3.7 | 5.3.7 Test Approach/Test Cases | manual | 5d | 2015-05-22 | 2015-05-28 |  |  |  |  | India | 40h |  |  |  |
| 255 | 5.3.8 | 5.3.8 QA Testing | manual | 25d | 2015-05-28 | 2015-07-01 |  |  |  |  | India | 200h |  |  |  |
| 256 | 5.3.9 | 5.3.9 UAT | manual | 20d | 2015-07-01 | 2015-07-28 |  |  |  |  | India | 160h |  |  |  |

| ID | WBS | Task | Type | Duration | Start | Finish | Predecessors | Resources | Work | India Ebix Remarks | Items Pending at CDGI |
| --- | --- | --- | --- | --- | --- | --- | --- | --- | --- | --- | --- |
| 257 | 5.4 | **5.4 Dashboard** |  | 10d | 2015-02-12 | 2015-02-25 |  | India | 160h | Waiting for functionality |  |
| 258 | 5.4.1 | 5.4.1 Sections of Dashboard per User Group | manual | 10d | 2015-02-12 | 2015-02-25 |  | India | 80h | pending for requirement detail | waiting To Get Details |
| 259 | 5.5 | **5.5 Diary Listing** |  | 240d | 2014-07-01 | 2015-06-01 |  | India | 4248h |  |  |
| 260 | 5.5.1 | 5.5.1 Diary Items | manual | 10d | 2015-02-24 | 2015-03-09 | 164 | India | 80h | Waiting for functionality | waiting To Get Details |
| 261 | 5.5.2 | 5.5.2 Assigned Tasks | manual | 10d | 2015-02-24 | 2015-03-09 | 165 | India | 80h | Waiting for functionality | waiting To Get Details |
| 262 | 5.5.3 | 5.5.3 Escalation Tasks | manual | 17d | 2015-02-24 | 2015-03-18 | 166 | India | 136h | Waiting for functionality | waiting To Get Details |
| 263 | 5.5.4 | 5.5.4 User Manual | manual | 5d | 2015-03-19 | 2015-03-25 | 262 | India | 40h | Waiting for functionality | waiting To Get Details |
| 264 | 5.5.5 | 5.5.5 Test Approach/Test Cases | manual | 5d | 2015-03-26 | 2015-04-01 | 263 | India | 40h |  | waiting To Get Details |
| 265 | 5.5.6 | 5.5.6 QA Testing | manual | 5d | 2015-03-26 | 2015-04-01 | 263 | India | 40h |  | waiting To Get Details |
| 266 | 5.5.7 | 5.5.7 UAT | manual | 239d | 2014-07-01 | 2015-05-29 |  | India | 1912h |  | waiting To Get Details |
| 267 | 5.6 | **5.6 Claim Enquiry** |  | 67d | 2015-03-11 | 2015-06-11 | 167 | India | 976h | Waiting for functionality |  |
| 268 | 5.6.1 | 5.6.1 Claims | manual | 15d | 2015-03-12 | 2015-04-01 | 168 | India | 120h | Waiting for functionality | waiting To Get Details |
| 269 | 5.6.2 | 5.6.2 Claim Documents Printing | manual | 10d | 2015-05-01 | 2015-05-14 | 169 | India | 80h | Waiting for functionality | waiting To Get Details |
| 270 | 5.6.3 | 5.6.3 Job Schedule Enquiry | manual | 10d | 2015-05-15 | 2015-05-28 | 269 | India | 80h | Waiting for functionality | waiting To Get Details |
| 271 | 5.6.4 | 5.6.4 User Manual | manual | 5d | 2015-05-29 | 2015-06-04 | 270 | India | 40h |  | waiting To Get Details |
| 272 | 5.6.5 | 5.6.5 Test Approach/Test Cases | manual | 5d | 2015-05-29 | 2015-06-04 | 270 | India | 40h |  | waiting To Get Details |
| 273 | 5.6.6 | 5.6.6 QA Testing | manual | 5d | 2015-05-29 | 2015-06-04 | 270 | India | 40h |  | waiting To Get Details |
| 274 | 5.6.7 | 5.6.7 UAT | manual | 5d | 2015-06-05 | 2015-06-11 | 271 | India | 40h |  | waiting To Get Details |
| 275 | 5.7 | **5.7 Document Generation Module** |  | 30d | 2014-07-01 | 2014-08-11 |  | India | 360h | Waiting for functionality |  |
| 276 | 5.7.1 | 5.7.1 Document Generation Criteria | manual | 15d | 2015-04-23 | 2015-05-13 | 172 |  |  | Waiting for functionality |  |
| 277 | 5.7.2 | 5.7.2 User Manual | manual | 5d | 2015-05-14 | 2015-05-20 | 276 | India | 40h |  | waiting To Get Details |
| 278 | 5.7.3 | 5.7.3 Test Approach/Test Cases | manual | 5d | 2015-05-21 | 2015-05-27 | 276 | India | 40h |  | waiting To Get Details |
| 279 | 5.7.4 | 5.7.4 QA Testing | manual | 5d | 2015-05-21 | 2015-05-27 | 276 | India | 40h |  | waiting To Get Details |
| 280 | 5.7.5 | 5.7.5 UAT | milestone, manual | 0d | 2015-05-25 | 2015-05-25 | 277 | India |  |  | waiting To Get Details |

| ID | WBS | Task | Type | Duration | Start | Finish | Predecessors | Complete | Remaining | Actual start | Resources | Work | Actual work | Items Pending at CDGI | India Ebix Remarks | Description |
| --- | --- | --- | --- | --- | --- | --- | --- | --- | --- | --- | --- | --- | --- | --- | --- | --- |
| 281 | 5.8 | **5.8 Document Print** |  | 240d? | 2014-07-01 | 2015-06-01 |  |  |  |  | India | 2280h |  |  |  |  |
| 282 | 5.8.1 | 5.8.1 Claim Payment Document Printing | manual | 10d | 2015-02-19 | 2015-03-04 | 176 |  |  |  | India | 80h |  | waiting To Get Details | Waiting for functionality |  |
| 283 | 5.8.2 | 5.8.2 Claim Registration Document Printing | manual | 10d | 2014-12-22 | 2015-01-02 | 177 |  |  |  | India | 80h |  | waiting To Get Details | Waiting for functionality |  |
| 284 | 5.8.3 | 5.8.3 User Manual | manual | 5d | 2015-01-05 | 2015-01-09 | 283 |  |  |  | India | 40h |  | waiting To Get Details |  | on Going |
| 285 | 5.8.4 | 5.8.4 Test Approach/Test Cases | manual | 5d | 2015-01-05 | 2015-01-09 | 283 |  |  |  | India | 40h |  | waiting To Get Details |  |  |
| 286 | 5.8.5 | 5.8.5 QA Testing | manual | 5d | 2015-01-05 | 2015-01-09 | 283 |  |  |  | India | 40h |  | waiting To Get Details |  |  |
| 287 | 5.8.6 | 5.8.6 UAT | manual | 10d | 2015-02-03 | 2015-02-16 | 286 |  |  |  | India | 80h |  | waiting To Get Details |  |  |
| 288 | 5.9 | **5.9 Unreported Claim Menu** |  | 0d? | 2015-01-30 | 2015-01-30 |  |  |  |  | India | 280h |  |  |  |  |
| 289 | 5.9.1 | 5.9.1 UI and functionality implementation | manual | 10d | 2015-02-19 | 2015-03-04 | 176 |  |  |  | India | 80h |  | waiting To Get Details | Waiting for functionality |  |
| 290 | 5.9.2 | 5.9.2 User Manual | manual | 5d | 2015-03-05 | 2015-03-11 | 289 |  |  |  | India | 40h |  | waiting To Get Details |  |  |
| 291 | 5.9.3 | 5.9.3 Test Approach/Test Cases | manual | 5d | 2015-03-12 | 2015-03-18 | 290 |  |  |  | India | 40h |  | waiting To Get Details |  |  |
| 292 | 5.9.4 | 5.9.4 QA Testing | manual | 5d | 2015-03-19 | 2015-03-25 | 290 |  |  |  | India | 40h |  | waiting To Get Details |  |  |
| 293 | 5.9.5 | 5.9.5 UAT | manual | 10d | 2015-03-26 | 2015-04-08 | 292 |  |  |  | India | 80h |  | waiting To Get Details |  |  |
| 294 | 5.10 | **5.10 Security Management System** |  | 12d | 2014-07-01 | 2014-07-16 |  | 26% | 8.91d | 2014-12-01 | India | 296h | 72h |  |  |  |
| 295 | 5.10.1 | 5.7.1 Permission Screen UI and Functionality | manual | 10d | 2014-12-01 | 2014-12-12 | 178 |  |  |  |  |  |  | waiting To Get Details | Waiting for functionality |  |
| 296 | 5.10.2 | 5.7.2 User Manual | manual | 5d | 2015-02-09 | 2015-02-13 | 295 |  |  |  | India | 40h |  | waiting To Get Details |  | On Going |
| 297 | 5.10.3 | 5.7.3 Test Approach/Test Cases | manual | 5d | 2015-02-02 A | 2015-02-06 A |  | 100% |  |  | India | 40h | 40h | waiting To Get Details |  |  |
| 298 | 5.10.4 | 5.7.4 QA Testing | manual | 5d | 2015-02-02 A | 2015-02-09 | 297 | 80% | 1d |  | India | 40h | 32h | waiting To Get Details |  |  |
| 299 | 5.10.5 | 5.7.5 UAT | manual | 10d | 2015-02-10 | 2015-02-23 | 297 |  |  |  | India | 80h |  | waiting To Get Details |  |  |
| 300 | 5.11 | 5.11 Functionality Signed off by client | manual | 1d? | 2014-07-01 | 2014-07-01 |  |  |  |  | CDGI | 8h |  |  |  |  |
| 301 | 6 | **6 QA Test Scripts** |  | 30d | 2015-07-01 | 2015-08-11 |  |  |  |  | India | 272h |  |  |  |  |
| 302 | 6.1 | 6.1 Testing Approach Development/Confirmation | manual | 1d | 2015-07-01 | 2015-07-01 |  |  |  |  | India | 8h |  |  |  |  |
| 303 | 6.2 | 6.2 Test Condition Development | manual | 1d | 2015-07-01 | 2015-07-01 |  |  |  |  | India | 8h |  |  |  |  |
| 304 | 6.3 | 6.3 Test Script Development | manual | 1d | 2015-07-01 | 2015-07-01 |  |  |  |  | India | 8h |  |  |  |  |
| 305 | 6.4 | 6.4 Expected Results Development | manual | 1d | 2015-07-01 | 2015-07-01 |  |  |  |  | India | 8h |  |  |  |  |

| ID | WBS | Task | Type | Duration | Start | Finish | Resources | Work |
| --- | --- | --- | --- | --- | --- | --- | --- | --- |
| 306 | 7 | **7 QA Testing** |  | 31d | 2015-08-03 | 2015-09-14 | India | 264h |
| 307 | 7.1 | 7.1 QA Testing | manual | 1d | 2015-08-03 | 2015-08-03 | India | 8h |
| 308 | 7.2 | 7.2 Review results | manual | 1d | 2015-08-03 | 2015-08-03 | India | 8h |
| 309 | 8 | **8 End-to-end UAT** |  | 30d | 2015-10-01 | 2015-11-11 | Singapore | 256h |
| 310 | 8.1 | 8.1 Access to UAT Environment | manual | 1d | 2015-10-01 | 2015-10-01 | Singapore | 8h |
| 311 | 8.2 | 8.2 Product Testing | manual | 1d | 2015-10-01 | 2015-10-01 | Singapore | 8h |
| 312 | 9 | **9 Client UAT** |  | 30d | 2015-11-12 | 2015-12-23 | CDGI | 256h |
| 313 | 9.1 | 9.1 Access to UAT Environment | manual | 1d | 2015-11-12 | 2015-11-12 | CDGI | 8h |
| 314 | 9.2 | 9.2 Product Testing | manual | 1d | 2015-11-12 | 2015-11-12 | CDGI | 8h |
| 315 | 10 | **10 Deployment** |  | 24d | 2015-12-01 | 2016-01-01 | Singapore | 240h |
| 316 | 10.1 | 10.1 Deployment Approach | manual | 1d | 2015-12-31 | 2015-12-31 | Singapore | 8h |
| 317 | 10.2 | 10.2 Platform Readiness | manual | 1d | 2015-12-31 | 2015-12-31 | Singapore | 8h |
| 318 | 10.3 | 10.3 Software Installation | manual | 1d | 2015-12-31 | 2015-12-31 | Singapore | 8h |
| 319 | 10.4 | 10.4 UAT Sign-off | manual | 1d | 2015-12-31 | 2015-12-31 | Singapore | 8h |
| 320 | 10.5 | 10.5 Go Live Preparation | manual | 1d | 2015-12-31 | 2015-12-31 | Singapore | 8h |
| 321 | 10.6 | 10.6 Support Kick Off | manual | 1d | 2015-12-31 | 2015-12-31 | Singapore | 8h |
