# New Project plan V1

Schedule from MS Project, 2014-01-01 to 2015-10-22, A marks actual dates.

## Calendars

- Standard: Mon-Fri 08:00-12:00, 13:00-17:00; Sat-Sun off.

## Resources

| Resource |
| --- |
| Singapore |
| India |
| CDGI |
| I |
| Sina |

## Schedule

| ID | WBS | Task | Type | Duration | Start | Finish | Complete | Remaining | Resources | Work | Actual work | Items Pending at CDGI | India Ebix Remarks | Items Pending at Singapore |
| --- | --- | --- | --- | --- | --- | --- | --- | --- | --- | --- | --- | --- | --- | --- |
| 1 | 1 | **MCAS Project** |  | 472d | 2014-01-01 A | 2015-10-22 | 58% | 198.69d |  | 81936h | 35430h |  |  |  |
| 2 | 1.1 | **1 Project Initiation** |  | 262d | 2014-01-01 A | 2015-01-01 | 75% | 65.5d | Singapore | 8384h | 4716h |  |  |  |
| 3 | 1.1.1 | 1.1 Project Scope Definition | manual | 262d | 2014-01-01 A | 2015-01-01 | 75% | 65.5d | Singapore | 2096h | 1572h |  |  |  |
| 4 | 1.1.2 | 1.2 Project Plan Development | manual | 262d | 2014-01-01 A | 2015-01-01 | 75% | 65.5d | Singapore | 2096h | 1572h |  |  |  |
| 5 | 1.1.3 | 1.3 Project Scope Completed | manual | 262d | 2014-01-01 A | 2015-01-01 | 75% | 65.5d | Singapore | 2096h | 1572h |  |  |  |
| 6 | 1.2 | **2 Requirement Gathering** |  | 42d | 2015-01-01 A | 2015-02-27 | 65% | 14.82d | Singapore | 18056h | 10310h |  |  |  |
| 7 | 1.2.1 | **2.1 System Admin Requirements** |  | 32d | 2015-01-01 A | 2015-02-13 | 71% | 9.13d | Singapore | 7872h | 5128h | Pending clarification from CDGI |  |  |
| 8 | 1.2.1.1 | **2.1.1 Upload Main Menu** |  | 32d | 2015-01-01 A | 2015-02-13 | 44% | 18d | Singapore | 768h | 224h |  |  |  |
| 9 | 1.2.1.1.1 | 2.1.1.1 Vehicle Listing Upload | manual | 32d | 2015-01-01 A | 2015-02-13 | 44% | 18d | Singapore | 256h | 112h | CDGI to check with users |  |  |
| 10 | 1.2.1.1.2 | 2.1.1.2 Bus Captain Listing | manual | 32d | 2015-01-01 A | 2015-02-13 | 44% | 18d | Singapore | 256h | 112h | CDGI to check with users | Waiting for sample upload file |  |
| 11 | 1.2.1.2 | **2.1.2 User Admin** |  | 32d | 2015-01-01 A | 2015-02-13 | 44% | 17.86d | Singapore | 2048h | 792h | Pending clarification from CDGI |  |  |
| 12 | 1.2.1.2.1 | 2.1.2.1 Entity Details | manual | 32d | 2015-01-01 A | 2015-02-13 | 34% | 21d | Singapore | 256h | 88h |  | Waiting for functionality | Singapore ebix to Provide functional details |
| 13 | 1.2.1.2.2 | 2.1.2.2. User Groups | manual | 32d | 2015-01-01 A | 2015-02-13 | 69% | 10d | Singapore | 256h | 176h |  | completed | Singapore ebix to Provide functional details |
| 14 | 1.2.1.2.3 | 2.1.2.3 User | manual | 32d | 2015-01-01 A | 2015-02-13 | 69% | 10d | Singapore | 256h | 176h |  | completed |  |
| 15 | 1.2.1.2.4 | 2.1.2.4 Department Master | manual | 32d | 2015-01-01 A | 2015-02-13 | 34% | 21d | Singapore | 256h | 88h |  | Waiting for functionality | Singapore ebix to Provide functional details |
| 16 | 1.2.1.2.5 | 2.1.2.5 Password Setup | manual | 32d | 2015-01-01 A | 2015-02-13 | 34% | 21d | Singapore | 256h | 88h |  | Waiting for functionality | Singapore ebix to Provide functional details |
| 17 | 1.2.1.2.6 | 2.1.2.6 Release Locked Users | manual | 32d | 2015-01-01 A | 2015-02-13 | 34% | 21d | Singapore | 256h | 88h |  | Waiting for functionality | Singapore ebix to Provide functional details |
| 18 | 1.2.1.2.7 | 2.1.2.7 Country for User Access | manual | 32d | 2015-01-01 A | 2015-02-13 | 34% | 21d | Singapore | 256h | 88h |  | Waiting for functionality | Singapore ebix to Provide functional details |
| 19 | 1.2.1.3 | **2.1.3 Service Provider** |  | 22d | 2015-01-01 A | 2015-01-30 A | 100% |  | Singapore | 1232h | 1232h |  |  |  |
| 20 | 1.2.1.3.1 | 2.1.3.1 Insurer Master | manual | 22d | 2015-01-01 A | 2015-01-30 A | 100% |  | Singapore | 176h | 176h |  |  |  |
| 21 | 1.2.1.3.2 | 2.1.3.2 Surveyor Master | manual | 22d | 2015-01-01 A | 2015-01-30 A | 100% |  | Singapore | 176h | 176h |  |  |  |
| 22 | 1.2.1.3.3 | 2.1.3.3 Lawyer Master | manual | 22d | 2015-01-01 A | 2015-01-30 A | 100% |  | Singapore | 176h | 176h |  |  |  |
| 23 | 1.2.1.3.4 | 2.1.3.4 Workshop/Dept Master | manual | 22d | 2015-01-01 A | 2015-01-30 A | 100% |  | Singapore | 176h | 176h |  |  |  |
| 24 | 1.2.1.3.5 | 2.1.3.5 Hospital Master | manual | 22d | 2015-01-01 A | 2015-01-30 A | 100% |  | Singapore | 176h | 176h |  |  |  |
| 25 | 1.2.1.3.6 | 2.1.3.6 Adjuster Master | manual | 22d | 2015-01-01 A | 2015-01-30 A | 100% |  | Singapore | 176h | 176h |  |  |  |
| 26 | 1.2.1.4 | 2.1.4 Nature Of Loss | manual | 22d | 2015-01-01 A | 2015-01-30 A | 100% |  | Singapore | 176h | 176h |  |  |  |
| 27 | 1.2.1.5 | 2.1.5 Type of Loss | manual | 22d | 2015-01-01 A | 2015-01-30 A | 100% |  | Singapore | 176h | 176h |  |  |  |
| 28 | 1.2.1.6 | 2.1.6 Main Class Business | manual | 22d | 2015-01-01 A | 2015-01-30 A | 100% |  | Singapore | 176h | 176h |  |  |  |
| 29 | 1.2.1.7 | 2.1.7 Sub Class | manual | 22d | 2015-01-01 A | 2015-01-30 A | 100% |  | Singapore | 176h | 176h |  |  |  |
| 30 | 1.2.1.8 | 2.1.8 Claims Expense Master | manual | 22d | 2015-01-01 A | 2015-01-30 A | 100% |  | Singapore | 176h | 176h |  |  |  |
| 31 | 1.2.1.9 | 2.1.9 Claims Close Reason Master | manual | 22d | 2015-01-01 A | 2015-01-30 A | 100% |  | Singapore | 176h | 176h |  |  |  |
| 32 | 1.2.1.10 | 2.1.10 Currency Master | manual | 22d | 2015-01-01 A | 2015-01-30 A | 100% |  | Singapore | 176h | 176h |  |  |  |
| 33 | 1.2.1.11 | 2.1.11 Exchange Rate Master | manual | 22d | 2015-01-01 A | 2015-01-30 A | 100% |  | Singapore | 176h | 176h |  |  |  |
| 34 | 1.2.1.12 | 2.1.12 Vehicle Class | manual | 32d | 2015-01-01 A | 2015-02-13 | 52% | 15.5d | Singapore | 256h | 132h |  |  |  |
| 35 | 1.2.1.13 | 2.1.13 Vehicle Make | manual | 32d | 2015-01-01 A | 2015-02-13 | 52% | 15.5d | Singapore | 256h | 132h |  |  |  |
| 36 | 1.2.1.14 | 2.1.14 Vehicle Model | manual | 32d | 2015-01-01 A | 2015-02-13 | 52% | 15.5d | Singapore | 256h | 132h |  |  |  |
| 37 | 1.2.1.15 | 2.1.15 Insurance Policy | manual | 22d | 2015-01-01 A | 2015-01-30 A | 100% |  | Singapore | 176h | 176h |  |  |  |
| 38 | 1.2.1.16 | 2.1.16 GST Setting | manual | 22d | 2015-01-01 A | 2015-01-30 A | 100% |  | Singapore | 176h | 176h |  |  |  |
| 39 | 1.2.1.17 | 2.1.17 Organization | manual | 22d | 2015-01-01 A | 2015-01-30 A | 100% |  | Singapore | 176h | 176h |  |  |  |
| 40 | 1.2.1.18 | 2.1.18 Claim Officer Duty | manual | 22d | 2015-01-01 A | 2015-01-30 A | 100% |  | Singapore | 176h | 176h | Pending clarification from CDGI |  |  |
| 41 | 1.2.1.19 | 2.1.19 LOU Rate | manual | 22d | 2015-01-01 A | 2015-01-30 A | 100% |  | Singapore | 176h | 176h |  |  |  |
| 42 | 1.2.1.20 | 2.1.20 Interchange | manual | 32d | 2015-01-01 A | 2015-02-13 | 52% | 15.5d | Singapore | 256h | 132h |  |  |  |
| 43 | 1.2.1.21 | 2.1.21 Deductible | manual | 32d | 2015-01-01 A | 2015-02-13 | 25% | 24d | Singapore | 256h | 64h |  |  |  |

| ID | WBS | Task | Type | Duration | Start | Finish | Complete | Remaining | Resources | Work | Actual work | Items Pending at CDGI | India Ebix Remarks |
| --- | --- | --- | --- | --- | --- | --- | --- | --- | --- | --- | --- | --- | --- |
| 44 | 1.2.2 | **2.2 Upload Requirements** |  | 17d | 2015-01-29 A | 2015-02-20 | 50% | 8.5d | Singapore | 544h | 204h | Pending clarification from CDGI | Ui start development |
| 45 | 1.2.2.1 | 2.2.1 TAC Upload | manual | 17d | 2015-01-29 A | 2015-02-20 | 50% | 8.5d | Singapore | 136h | 68h | Pending clarification from CDGI | csv file needed |
| 46 | 1.2.2.2 | 2.2.2 Claim File Upload | manual | 17d | 2015-01-29 A | 2015-02-20 | 50% | 8.5d | Singapore | 136h | 68h | Pending clarification from CDGI | csv file needed |
| 47 | 1.2.2.3 | 2.2.3 SAP File Upload | manual | 17d? | 2015-01-29 A | 2015-02-20 | 50% | 8.5d? | Singapore | 136h | 68h | Pending clarification from CDGI | csv file needed |
| 48 | 1.2.3 | **2.3 Claim Requirements** |  | 22d | 2015-01-01 A | 2015-01-30 | 78% | 4.93d | Singapore | 3776h | 2656h |  |  |
| 49 | 1.2.3.1 | **2.3.1 Buses** |  | 22d | 2015-01-01 A | 2015-01-30 | 98% | 0.52d | Singapore | 2896h | 2656h |  |  |
| 50 | 1.2.3.1.1 | 2.3.1.1 Accident | manual | 22d | 2015-01-01 A | 2015-01-30 A | 100% |  | Singapore | 176h | 176h |  |  |
| 51 | 1.2.3.1.2 | 2.3.1.2 Claim | manual | 22d | 2015-01-01 A | 2015-01-30 A | 100% |  | Singapore | 176h | 176h |  |  |
| 52 | 1.2.3.1.3 | 2.3.1.3 Service Provider | manual | 22d | 2015-01-01 A | 2015-01-30 A | 100% |  | Singapore | 176h | 176h |  |  |
| 53 | 1.2.3.1.4 | 2.3.1.4 Notes | manual | 22d | 2015-01-01 A | 2015-01-30 A | 100% |  | Singapore | 176h | 176h |  |  |
| 54 | 1.2.3.1.5 | 2.3.1.5 Tasks | manual | 22d | 2015-01-01 A | 2015-01-30 A | 100% |  | Singapore | 176h | 176h |  |  |
| 55 | 1.2.3.1.6 | 2.3.1.6 Attachment | manual | 22d | 2015-01-01 A | 2015-01-30 A | 100% |  | Singapore | 176h | 176h |  |  |
| 56 | 1.2.3.1.7 | 2.3.1.7 Dairy | manual | 22d | 2015-01-01 A | 2015-01-30 A | 100% |  | Singapore | 176h | 176h |  |  |
| 57 | 1.2.3.1.8 | 2.3.1.8 Reassigned Dairy | manual | 22d | 2015-01-01 A | 2015-01-30 A | 100% |  | Singapore | 176h | 176h |  |  |
| 58 | 1.2.3.1.9 | 2.3.1.9 Reserve | manual | 22d | 2015-01-01 A | 2015-01-30 A | 100% |  | Singapore | 176h | 176h |  |  |
| 59 | 1.2.3.1.10 | 2.3.1.10 Reserve History | manual | 22d | 2015-01-01 A | 2015-01-30 A | 100% |  | Singapore | 176h | 176h |  |  |
| 60 | 1.2.3.1.11 | 2.3.1.11 Mandate | manual | 22d | 2015-01-01 A | 2015-01-30 A | 100% |  | Singapore | 176h | 176h |  |  |
| 61 | 1.2.3.1.12 | 2.3.1.12 Mandate History | manual | 22d | 2015-01-01 A | 2015-01-30 A | 100% |  | Singapore | 176h | 176h |  |  |
| 62 | 1.2.3.1.13 | 2.3.1.13 Payment | manual | 22d | 2015-01-01 A | 2015-01-30 A | 100% |  | Singapore | 176h | 176h |  |  |
| 63 | 1.2.3.1.14 | 2.3.1.14 Payment History | manual | 22d | 2015-01-01 A | 2015-01-30 A | 100% |  | Singapore | 176h | 176h |  |  |
| 64 | 1.2.3.1.15 | 2.3.1.15 Recovery | manual | 32d | 2015-01-01 A | 2015-02-13 | 75% | 8d | Singapore | 256h | 192h |  |  |
| 65 | 1.2.3.2 | 2.3.2 Trains | manual | 22d | 2015-02-16 | 2015-03-17 |  |  | Singapore | 176h |  |  |  |
| 66 | 1.2.3.3 | 2.3.3 Taxis | manual | 22d | 2015-03-17 | 2015-04-15 |  |  | Singapore | 176h |  |  |  |
| 67 | 1.2.3.4 | 2.3.4 Rental Cars | manual | 22d | 2015-04-15 | 2015-05-14 |  |  | Singapore | 176h |  |  |  |
| 68 | 1.2.3.5 | 2.3.5 Private Cars | manual | 22d | 2015-05-14 | 2015-06-12 |  |  | Singapore | 176h |  |  |  |

| ID | WBS | Task | Type | Duration | Start | Finish | Complete | Remaining | Total slack | Resources | Work | Actual work | Items Pending at CDGI | India Ebix Remarks | Description |
| --- | --- | --- | --- | --- | --- | --- | --- | --- | --- | --- | --- | --- | --- | --- | --- |
| 69 | 1.2.4 | **2.4 Dashboard Requirements** |  | 32d | 2015-01-01 A | 2015-02-13 | 84% | 5d |  | Singapore | 1280h | 1080h | Pending clarification from CDGI | UI of permission start development |  |
| 70 | 1.2.4.1 | **2.4.1 Diary Listing Requirements** |  | 32d | 2015-01-01 A | 2015-02-13 | 84% | 5d |  | Singapore | 1024h | 864h | Pending clarification from CDGI |  |  |
| 71 | 1.2.4.1.1 | 2.4.1.1 Diary Items | manual | 32d | 2015-01-01 A | 2015-02-13 | 84% | 5d |  | Singapore | 256h | 216h |  | Pending for requirement detail |  |
| 72 | 1.2.4.1.2 | 2.4.1.2 Assigned Tasks | manual | 32d | 2015-01-01 A | 2015-02-13 | 84% | 5d |  | Singapore | 256h | 216h |  | pending for requirement detail |  |
| 73 | 1.2.4.1.3 | 2.4.1.3 Escalation Tasks | manual | 32d | 2015-01-01 A | 2015-02-13 | 84% | 5d |  | Singapore | 256h | 216h |  | pending for requirement detail |  |
| 74 | 1.2.5 | **2.5 Diary Listing** |  | 32d | 2015-01-01 A | 2015-02-13 | 84% | 5d |  | Singapore | 1024h | 864h |  |  |  |
| 75 | 1.2.5.1 | 2.5.1 Diary Items | manual | 32d | 2015-01-01 A | 2015-02-13 | 84% | 5d |  | Singapore | 256h | 216h | waiting To Get Details |  |  |
| 76 | 1.2.5.2 | 2.5.2 Assigned Tasks | manual | 32d | 2015-01-01 A | 2015-02-13 | 84% | 5d |  | Singapore | 256h | 216h | waiting To Get Details |  |  |
| 77 | 1.2.5.3 | 2.5.3 Escalation Tasks | manual | 32d | 2015-01-01 A | 2015-02-13 | 84% | 5d |  | Singapore | 256h | 216h | waiting To Get Details |  |  |
| 78 | 1.2.6 | **2.6 Claim Enquiry Requirements** |  | 27d | 2015-01-29 A | 2015-03-06 | 25% | 20.25d |  | Singapore | 864h | 162h | Pending clarification from CDGI | pending for requirement detail |  |
| 79 | 1.2.6.1 | 2.6.1 Claims | manual | 27d | 2015-01-29 A | 2015-03-06 | 25% | 20.25d |  | Singapore | 216h | 54h |  | pending for requirement detail |  |
| 80 | 1.2.6.2 | 2.6.2 Claim Documents Printing | manual | 27d | 2015-01-29 A | 2015-03-06 | 25% | 20.25d |  | Singapore | 216h | 54h |  | pending for requirement detail |  |
| 81 | 1.2.6.3 | 2.6.3 Job Schedule Enquiry | manual | 27d | 2015-01-29 A | 2015-03-06 | 25% | 20.25d |  | Singapore | 216h | 54h |  | pending for requirement detail |  |
| 82 | 1.2.7 | **2.7 Document Generation Module** |  | 27d | 2015-01-29 A | 2015-03-06 | 25% | 20.25d |  | Singapore | 432h | 54h | Pending clarification from CDGI | pending for requirement detail |  |
| 83 | 1.2.7.1 | 2.7.1 Document Generation Criteria | manual | 27d | 2015-01-29 A | 2015-03-06 | 25% | 20.25d |  | Singapore | 216h | 54h |  |  | new Task added |
| 84 | 1.2.8 | **2.8 Document Print** |  | 27d | 2015-01-29 A | 2015-03-06 | 25% | 20.25d |  | Singapore | 648h | 108h | Pending clarification from CDGI |  |  |
| 85 | 1.2.8.1 | 2.7.1 Claim Payment Document Printing | manual | 27d | 2015-01-29 A | 2015-03-06 | 25% | 20.25d |  | Singapore | 216h | 54h | waiting To Get Details |  |  |
| 86 | 1.2.8.2 | 2.7.2 Claim Registration Document Printing | manual | 27d | 2015-01-29 A | 2015-03-06 | 25% | 20.25d |  | Singapore | 216h | 54h | waiting To Get Details |  |  |
| 87 | 1.2.9 | 2.9 Unreported Claim | manual | 27d | 2015-01-29 A | 2015-03-06 | 25% | 20.25d |  | Singapore | 216h | 54h | Pending clarification from CDGI | pending for requirement detail |  |
| 88 | 1.2.10 | **2.10 Security Management System** |  | 27d | 2015-01-29 | 2015-03-06 |  |  |  | Singapore | 648h |  |  |  |  |
| 89 | 1.2.10.1 | 2.10.1 Permission Screen UI | manual | 27d | 2015-01-29 | 2015-03-06 |  |  |  | Singapore | 216h |  | waiting To Get Details |  | New Task added |
| 90 | 1.2.10.2 | 2.10.2 Permission screen functionality | manual | 27d | 2015-01-29 | 2015-03-06 |  |  |  | Singapore | 216h |  | waiting To Get Details |  |  |
| 91 | 1.2.11 | 2.11 Requirements signed off by client | manual | 52d | 2015-01-01 | 2015-03-13 |  |  |  | Singapore | 416h |  |  |  |  |
| 92 | 1.3 | **3 Requirements Finalized in TFS** |  | 392d | 2014-03-03 A | 2015-09-01 | 50% | 196d | 0d | India | 6272h | 3136h |  |  |  |
| 93 | 1.3.1 | 3.1 Document Upload in TFS | manual | 392d | 2014-03-03 A | 2015-09-01 | 50% | 196d |  | India | 3136h | 1568h |  |  |  |

| ID | WBS | Task | Type | Duration | Start | Finish | Predecessors | Complete | Remaining | Actual start | Total slack | Constraint | Resources | Work | Actual work | Items Pending at CDGI | India Ebix Remarks | Items Pending at Singapore |
| --- | --- | --- | --- | --- | --- | --- | --- | --- | --- | --- | --- | --- | --- | --- | --- | --- | --- | --- |
| 94 | 1.4 | **4 Design UI and Functionality** |  | 307d? | 2014-05-01 A | 2015-07-03 |  | 69% | 96.39d? |  | 79d |  | India | 21416h | 9542.15h |  |  |  |
| 95 | 1.4.1 | **4.1 System Admin Requirements** |  | 307d | 2014-05-01 A | 2015-07-03 |  | 80% | 60.51d |  |  |  | India | 8648h | 4092.8h | Pending clarification from CDGI |  |  |
| 96 | 1.4.1.1 | **4.1.1 Upload Main Menu** |  | 192d | 2014-06-01 | 2015-02-23 |  |  | 192d | 2014-06-26 |  |  | India | 1616h |  |  |  |  |
| 97 | 1.4.1.1.1 | 4.1.1.1 Vehicle Listing Upload |  | 20d | 2014-05-05 | 2014-07-02 |  |  |  |  | 391d | finish no earlier than 2014-07-02 | Singapore | 160h |  |  |  |  |
| 98 | 1.4.1.1.2 | 4.1.1.2 Bus Captain Listing | manual | 10d | 2015-02-10 | 2015-02-23 | 10 |  |  |  |  |  | Singapore | 80h |  |  | Waiting to get upload sample filel |  |
| 99 | 1.4.1.2 | **4.1.2 User Admin** |  | 217d | 2014-05-01 A | 2015-02-27 | 11 | 48% | 112.11d |  | 0d |  | India | 2416h | 1932.81h |  |  |  |
| 100 | 1.4.1.2.1 | 4.1.2.1 Entity Details | manual | 15d | 2014-05-01 A | 2014-05-21 A | 12 | 100% |  |  |  |  | India | 120h | 120h |  | Waiting for functionality | Singapore ebix to Provide functional details |
| 101 | 1.4.1.2.2 | 4.1.2.2. User Groups | manual | 20d | 2015-02-02 A | 2015-02-27 | 13 | 18% | 16.49d |  |  |  | India | 160h | 28.11h |  | completed | Singapore ebix to Provide functional details |
| 102 | 1.4.1.2.3 | 4.1.2.3 User | manual | 20d | 2015-01-30 A | 2015-02-26 | 14 | 23% | 15.49d |  |  |  | India | 160h | 36.12h |  | waiting to get UI details for unwanted fields |  |
| 103 | 1.4.1.2.4 | 4.1.2.4 Department Master | manual | 10d | 2015-01-30 A | 2015-02-12 | 15 | 45% | 5.49d |  |  |  | India | 80h | 36.12h |  |  | Singapore ebix to Provide functional details |
| 104 | 1.4.1.2.5 | 4.1.2.5 Password Setup | manual | 5d | 2015-01-30 A | 2015-02-05 | 16 | 90% | 0.49d |  |  |  | India | 40h | 36.12h |  | Waiting for functionality | Singapore ebix to Provide functional details |
| 105 | 1.4.1.2.6 | 4.1.2.6 Release Locked Users | manual | 5d | 2015-01-30 A | 2015-02-05 | 17 | 90% | 0.49d |  |  |  | India | 40h | 36.12h |  | Waiting for functionality | Singapore ebix to Provide functional details |
| 106 | 1.4.1.2.7 | 4.1.2.7 Country for User Access | manual | 10d | 2015-01-30 A | 2015-02-12 | 18 | 45% | 5.49d |  |  |  | India | 80h | 36.12h |  | Waiting for functionality | Singapore ebix to Provide functional details |
| 107 | 1.4.1.3 | **4.1.3 Service Provider** |  | 10d | 2014-11-05 A | 2014-11-18 A |  | 100% |  |  |  |  | India | 560h | 560h |  |  |  |
| 108 | 1.4.1.3.1 | 4.1.3.1 Insurer Master | manual | 10d | 2014-11-05 A | 2014-11-18 A |  | 100% |  |  |  |  | India | 80h | 80h |  |  |  |
| 109 | 1.4.1.3.2 | 4.1.3.2 Surveyor Master | manual | 10d | 2014-11-05 A | 2014-11-18 A |  | 100% |  |  |  |  | India | 80h | 80h |  |  |  |
| 110 | 1.4.1.3.3 | 4.1.3.3 Lawyer Master | manual | 10d | 2014-11-05 A | 2014-11-18 A |  | 100% |  |  |  |  | India | 80h | 80h |  |  |  |
| 111 | 1.4.1.3.4 | 4.1.3.4 Workshop/Dept Master | manual | 10d | 2014-11-05 A | 2014-11-18 A |  | 100% |  |  |  |  | India | 80h | 80h |  |  |  |
| 112 | 1.4.1.3.5 | 4.1.3.5 Hospital Master | manual | 10d | 2014-11-05 A | 2014-11-18 A |  | 100% |  |  |  |  | India | 80h | 80h |  |  |  |
| 113 | 1.4.1.3.6 | 4.1.3.6 Adjuster Master | manual | 10d | 2014-11-05 A | 2014-11-18 A |  | 100% |  |  |  |  | India | 80h | 80h |  |  |  |
| 114 | 1.4.1.4 | 4.1.4 Nature Of Loss | manual | 15d | 2014-06-04 A | 2014-06-24 A |  | 100% |  |  |  |  | India | 120h | 120h |  |  |  |
| 115 | 1.4.1.5 | 4.1.5 Type of Loss | manual | 10d | 2014-06-04 A | 2014-06-17 A |  | 100% |  |  |  |  | India | 80h | 80h |  | Waiting for functionality |  |
| 116 | 1.4.1.6 | 4.1.6 Main Class Business | manual | 10d | 2014-06-04 A | 2014-06-17 A |  | 100% |  |  |  |  | India | 80h | 80h |  | Waiting for functionality |  |
| 117 | 1.4.1.7 | 4.1.7 Sub Class | manual | 10d | 2014-06-04 A | 2014-06-17 A |  | 100% |  |  |  |  | India | 80h | 80h |  | Waiting for functionality |  |
| 118 | 1.4.1.8 | 4.1.8 Claims Expense Master | manual | 10d | 2014-06-04 A | 2014-06-17 A |  | 100% |  |  |  |  | India | 80h | 80h |  | Waiting for functionality |  |
| 119 | 1.4.1.9 | 4.1.9 Claims Close Reason Master | manual | 10d | 2014-06-04 A | 2014-06-17 A |  | 100% |  |  |  |  | India | 80h | 80h |  | Waiting for functionality |  |
| 120 | 1.4.1.10 | 4.1.10 Currency Master | manual | 10d | 2014-06-04 A | 2014-06-17 A |  | 100% |  |  |  |  | India | 80h | 80h |  |  |  |
| 121 | 1.4.1.11 | 4.1.11 Exchange Rate Master | manual | 10d | 2014-06-04 A | 2014-06-17 A |  | 100% |  |  |  |  | India | 80h | 80h |  |  |  |
| 122 | 1.4.1.12 | 4.1.12 Vehicle Class | manual | 10d | 2014-06-04 A | 2014-06-17 A |  | 100% |  |  |  |  | India | 80h | 80h |  |  |  |
| 123 | 1.4.1.13 | 4.1.13 Vehicle Make | manual | 10d | 2014-06-04 A | 2014-06-17 A |  | 100% |  |  |  |  | India | 80h | 80h |  |  |  |
| 124 | 1.4.1.14 | 4.1.14 Vehicle Model | manual | 10d | 2014-06-04 A | 2014-06-17 A |  | 100% |  |  |  |  | India | 80h | 80h |  |  |  |
| 125 | 1.4.1.15 | 4.1.15 Insurance Policy | manual | 15d | 2014-06-04 A | 2014-06-24 A |  | 100% |  |  |  |  | India | 120h | 120h |  |  |  |
| 126 | 1.4.1.16 | 4.1.16 GST Setting | manual | 10d | 2014-06-04 A | 2014-06-17 A |  | 100% |  |  |  |  | India | 80h | 80h |  | Waiting for functionality |  |
| 127 | 1.4.1.17 | 4.1.17 Organization | manual | 20d | 2014-12-15 A | 2015-01-09 A |  | 100% |  |  |  |  | India | 160h | 160h |  |  |  |
| 128 | 1.4.1.18 | 4.1.18 Claim Officer Duty | manual | 10d | 2014-09-03 A | 2014-09-16 A |  | 100% |  |  |  |  | India | 80h | 80h | Pending clarification from CDGI |  |  |
| 129 | 1.4.1.19 | 4.1.19 LOU Rate | manual | 10d | 2014-09-10 A | 2014-09-23 A |  | 100% |  |  |  |  | India | 80h | 80h |  |  |  |
| 130 | 1.4.1.20 | 4.1.20 Interchange | manual | 10d | 2014-09-10 A | 2014-09-23 A |  | 100% |  |  |  |  | India | 80h | 80h |  |  |  |
| 131 | 1.4.1.21 | 4.1.21 Deductible | manual | 10d | 2014-12-15 A | 2014-12-26 A |  | 100% |  |  |  |  | India | 80h | 80h |  |  |  |

| ID | WBS | Task | Type | Duration | Start | Finish | Complete | Remaining | Total slack | Resources | Work | Actual work | Items Pending at CDGI | India Ebix Remarks |
| --- | --- | --- | --- | --- | --- | --- | --- | --- | --- | --- | --- | --- | --- | --- |
| 132 | 1.4.2 | **4.2 Upload** |  | 20d | 2015-01-29 A | 2015-02-25 | 27% | 14.67d |  | India | 640h | 184h | Pending clarification from CDGI | Ui start development |
| 133 | 1.4.2.1 | 4.2.1 TAC Upload | manual | 20d | 2015-01-29 A | 2015-02-25 | 40% | 12d |  | India | 160h | 64h | Pending clarification from CDGI | Waiting for functionality |
| 134 | 1.4.2.2 | 4.2.2 Claim File Upload | manual | 20d | 2015-01-29 A | 2015-02-25 | 40% | 12d |  | India | 160h | 64h | Pending clarification from CDGI | Waiting for functionality |
| 135 | 1.4.2.3 | 4.2.3 SAP File Upload | manual | 20d | 2015-01-29 | 2015-02-25 |  |  |  | India | 160h |  | Pending clarification from CDGI | Waiting for functionality |
| 136 | 1.4.3 | **4.3 Claim** |  | 156d | 2014-10-02 A | 2015-05-07 | 89% | 17.51d | 0d | India | 6624h | 4366.92h |  |  |
| 137 | 1.4.3.1 | **4.3.1 Buses** |  | 96d | 2014-10-02 A | 2015-02-12 | 99% | 0.92d |  | India | 4648h | 4118.92h |  |  |
| 138 | 1.4.3.1.1 | 4.3.1.1 Accident | manual | 31d | 2014-10-02 A | 2014-11-13 A | 100% |  |  | India | 248h | 248h |  |  |
| 139 | 1.4.3.1.2 | 4.3.1.2 Claim | manual | 31d | 2014-10-02 A | 2014-11-13 A | 100% |  |  | India | 248h | 248h |  |  |
| 140 | 1.4.3.1.3 | 4.3.1.3 Service Provider | manual | 31d | 2014-10-02 A | 2014-11-13 A | 100% |  |  | India | 248h | 248h |  |  |
| 141 | 1.4.3.1.4 | 4.3.1.4 Notes | manual | 31d | 2014-10-02 A | 2014-11-13 A | 100% |  |  | India | 248h | 248h |  |  |
| 142 | 1.4.3.1.5 | 4.3.1.5 Tasks | manual | 31d | 2014-10-02 A | 2014-11-13 A | 100% |  |  | India | 248h | 248h |  |  |
| 143 | 1.4.3.1.6 | 4.3.1.6 Attachment | manual | 31d | 2014-10-02 A | 2014-11-13 A | 100% |  |  | India | 248h | 248h |  |  |
| 144 | 1.4.3.1.7 | 4.3.1.7 Dairy | manual | 31d | 2014-10-02 A | 2014-11-13 A | 100% |  |  | India | 248h | 248h |  |  |
| 145 | 1.4.3.1.8 | 4.3.1.8 Reassigned Dairy | manual | 31d | 2014-10-02 A | 2014-11-13 A | 100% |  |  | India | 248h | 248h |  |  |
| 146 | 1.4.3.1.9 | 4.3.1.9 Reserve |  | 31d | 2014-11-21 A | 2015-01-02 A | 100% |  |  | India | 248h | 248h |  |  |
| 147 | 1.4.3.1.10 | 4.3.1.10 Reserve History | manual | 31d | 2014-11-21 A | 2015-01-02 A | 100% |  |  | India | 248h | 248h |  |  |
| 148 | 1.4.3.1.11 | 4.3.1.11 Mandate | manual | 31d | 2014-11-21 A | 2015-01-02 A | 100% |  |  | India | 248h | 248h |  |  |
| 149 | 1.4.3.1.12 | 4.3.1.12 Mandate History | manual | 31d | 2014-11-21 A | 2015-01-02 A | 100% |  |  | India | 248h | 248h |  |  |
| 150 | 1.4.3.1.13 | 4.3.1.13 Payment | manual | 31d | 2014-12-05 A | 2015-01-16 A | 100% |  |  | India | 248h | 248h |  |  |
| 151 | 1.4.3.1.14 | 4.3.1.14 Payment History | manual | 31d | 2014-12-05 A | 2015-01-16 A | 100% |  |  | India | 248h | 248h |  |  |
| 152 | 1.4.3.1.15 | 4.3.1.15 Recovery | manual | 31d | 2015-01-01 A | 2015-02-12 | 85% | 4.65d |  | India | 248h | 210.8h |  | Waiting for functionality |
| 153 | 1.4.3.1.16 | 4.3.1.16 Transaction History | manual | 20d | 2014-10-02 A | 2014-10-29 A | 100% |  |  | India | 160h | 160h |  |  |
| 154 | 1.4.3.2 | 4.3.2 Trains | manual | 31d | 2014-10-02 A | 2014-11-13 A | 100% |  |  | India | 248h | 248h |  |  |
| 155 | 1.4.3.3 | 4.3.3 Taxis | manual | 20d | 2015-03-10 | 2015-04-06 |  |  |  | India | 160h |  |  | Waiting for functionality |
| 156 | 1.4.3.4 | 4.3.4 Rental Cars | manual | 20d | 2015-04-10 | 2015-05-07 |  |  |  | India | 160h |  |  | Waiting for functionality |
| 157 | 1.4.3.5 | 4.3.5 Private Cars | manual | 20d | 2015-04-10 | 2015-05-07 |  |  |  | India | 160h |  |  | Waiting for functionality |

| ID | WBS | Task | Type | Duration | Start | Finish | Predecessors | Complete | Remaining | Actual start | Total slack | Resources | Work | Actual work | Items Pending at CDGI | India Ebix Remarks | Description |
| --- | --- | --- | --- | --- | --- | --- | --- | --- | --- | --- | --- | --- | --- | --- | --- | --- | --- |
| 158 | 1.4.4 | **4.4 Dashboard** |  | 15d | 2015-02-10 A | 2015-03-02 |  | 10% | 13.5d |  |  | India | 240h | 12h | Pending clarification from CDGI | UI of permission start development |  |
| 159 | 1.4.4.1 | 4.4.1 Sections of Dashboard as per User Group | manual | 15d | 2015-02-10 A | 2015-03-02 |  | 10% | 13.5d |  |  | India | 120h | 12h | Pending clarification from CDGI | Waiting for functionality |  |
| 160 | 1.4.5 | **4.5 Diary Listing** |  | 10d | 2015-02-10 | 2015-02-23 |  |  |  |  | 0d | India | 320h |  |  | Waiting for functionality |  |
| 161 | 1.4.5.1 | 4.5.1 Diary Items | manual | 10d | 2015-02-10 | 2015-02-23 |  |  |  |  |  | India | 80h |  |  | Waiting for functionality |  |
| 162 | 1.4.5.2 | 4.5.2 Assigned Tasks | manual | 10d | 2015-02-10 | 2015-02-23 |  |  |  |  |  | India | 80h |  |  | Waiting for functionality |  |
| 163 | 1.4.5.3 | 4.5.3 Escalation Tasks | manual | 10d | 2015-02-10 | 2015-02-23 |  |  |  |  |  | India | 80h |  |  | Waiting for functionality |  |
| 164 | 1.4.6 | **4.6 Claim Enquiry** |  | 70d | 2015-01-29 A | 2015-05-06 |  | 39% | 42.5d |  |  | India | 1120h | 404h | Pending clarification from CDGI | Waiting for functionality |  |
| 165 | 1.4.6.1 | 4.6.1 Claims | manual | 30d | 2015-01-29 A | 2015-03-11 |  | 40% | 18d |  |  | India | 240h | 96h |  | Waiting for functionality |  |
| 166 | 1.4.6.2 | 4.6.2 Claim Documents Printing | manual | 30d | 2015-03-20 A | 2015-04-30 |  | 25% | 22.5d |  |  | India | 240h | 60h |  | Waiting for functionality |  |
| 167 | 1.4.6.3 | 4.6.3 Job Schedule Enquiry | manual | 10d | 2015-01-29 A | 2015-02-11 |  | 80% | 2d |  |  | India | 80h | 64h |  | Waiting for functionality |  |
| 168 | 1.4.7 | **4.7 Document Generation Module** |  | 60d | 2015-03-25 | 2015-06-16 |  |  |  |  |  | India | 960h |  | Pending clarification from CDGI | Waiting for functionality |  |
| 169 | 1.4.7.1 | 4.7.1 Document Generation Criteria | manual | 60d | 2015-01-29 | 2015-04-22 |  |  |  |  |  | India | 480h |  |  | Waiting for functionality | new Task added |
| 170 | 1.4.8 | **4.8 Document Print** |  | 30d | 2015-03-25 | 2015-05-05 |  |  |  |  |  | India | 720h |  | Pending clarification from CDGI |  |  |
| 171 | 1.4.8.1 | 4.8.1 Claim Payment Document Printing | manual | 30d | 2015-03-25 | 2015-05-05 |  |  |  |  |  | India | 240h |  | waiting To Get Details | Waiting for functionality |  |
| 172 | 1.4.8.2 | 4.8.2 Claim Registration Document Printing | manual | 30d | 2015-03-25 | 2015-05-05 |  |  |  |  |  | India | 240h |  |  | Waiting for functionality |  |
| 173 | 1.4.9 | 4.9 Unreported Claim | manual | 10d | 2015-02-05 | 2015-02-18 |  |  |  |  |  | India | 80h |  | Pending clarification from CDGI | Waiting for functionality |  |
| 174 | 1.4.10 | **4.10 Security Management System** |  | 30d | 2014-11-10 A | 2014-12-19 |  | 85% | 4.5d |  |  | India | 480h | 204h |  |  |  |
| 175 | 1.4.10.1 | 4.10.1 Permission Screen UI | manual | 15d | 2014-11-10 A | 2014-11-28 |  | 85% | 2.25d |  |  | India | 120h | 102h | waiting To Get Details |  | New Task added |
| 176 | 1.4.10.2 | 4.10.2 Permission screen functionality | manual | 15d | 2014-11-10 A | 2014-11-28 |  | 85% | 2.25d |  |  | India | 120h | 102h | waiting To Get Details |  |  |
| 177 | 1.4.11 | 4.11 UI and Design signed off by client | manual | 1d? | 2014-05-01 | 2014-05-01 |  |  |  |  |  | India | 8h |  |  |  |  |
| 178 | 1.5 | **5 Iterative Development and Testing** |  | 309d? | 2014-05-22 A | 2015-07-28 | 92 | 39% | 188.35d? |  | 0d | India | 25616h | 7725.82h |  |  |  |
| 179 | 1.5.1 | **5.1 System Admin** |  | 240d | 2014-07-01 | 2015-06-01 |  | 88% | 28.56d | 2014-05-22 |  | India | 6976h | 4560h |  |  |  |
| 180 | 1.5.1.1 | **5.1.1 Upload Main Menu** |  | 129d | 2014-09-09 A | 2015-03-06 | 96 | 75% | 32.25d |  | 0d | India | 240h | 200h |  |  |  |
| 181 | 1.5.1.1.1 | 5.1.1.1 Vehicle Listing Upload | manual | 10d | 2014-09-09 A | 2014-09-22 A | 97 | 100% |  |  |  | India | 80h | 80h |  |  |  |
| 182 | 1.5.1.1.2 | 5.1.1.2 Bus Captain Listing | manual | 10d | 2015-02-23 A | 2015-03-06 | 98 | 50% | 5d |  |  | India | 80h | 40h |  | Waiting for functionality |  |

| ID | WBS | Task | Type | Duration | Start | Finish | Predecessors | Complete | Remaining | Resources | Work | Actual work | Items Pending at CDGI |
| --- | --- | --- | --- | --- | --- | --- | --- | --- | --- | --- | --- | --- | --- |
| 183 | 1.5.1.2 | **5.1.2 User Admin** |  | 212d | 2014-05-22 A | 2015-03-13 A | 99 | 100% |  | India | 2256h | 2256h |  |
| 184 | 1.5.1.2.1 | 5.1.2.1 Entity Details | manual | 10d | 2014-05-22 A | 2014-06-04 A | 100 | 100% |  | India | 80h | 80h |  |
| 185 | 1.5.1.2.2 | 5.1.2.2. User Groups | manual | 10d | 2015-03-02 A | 2015-03-13 A | 101 | 100% |  | India | 80h | 80h |  |
| 186 | 1.5.1.2.3 | 5.1.2.3 User | manual | 10d | 2015-02-27 A | 2015-03-12 A | 102 | 100% |  | India | 80h | 80h |  |
| 187 | 1.5.1.2.4 | 5.1.2.4 Department Master | manual | 10d | 2015-02-13 A | 2015-02-26 A | 103 | 100% |  | India | 80h | 80h |  |
| 188 | 1.5.1.2.5 | 5.1.2.5 Password Setup | manual | 10d | 2015-02-06 A | 2015-02-19 A | 104 | 100% |  | India | 80h | 80h |  |
| 189 | 1.5.1.2.6 | 5.1.2.6 Release Locked Users | manual | 10d | 2015-02-06 A | 2015-02-19 A | 105 | 100% |  | India | 80h | 80h |  |
| 190 | 1.5.1.2.7 | 5.1.2.7 Country for User Access | manual | 10d | 2015-02-13 A | 2015-02-26 A | 106 | 100% |  | India | 80h | 80h |  |
| 191 | 1.5.1.3 | **5.1.3 Service Provider** |  | 15d | 2014-11-19 A | 2014-12-09 |  | 99% | 0d | India | 600h | 480h |  |
| 192 | 1.5.1.3.1 | 5.1.3.1 Insurer Master | manual | 10d | 2014-11-19 A | 2014-12-02 A | 108 | 100% |  | India | 80h | 80h |  |
| 193 | 1.5.1.3.2 | 5.1.3.2 Surveyor Master | manual | 10d | 2014-11-19 A | 2014-12-02 A | 109 | 100% |  | India | 80h | 80h |  |
| 194 | 1.5.1.3.3 | 5.1.3.3 Lawyer Master | manual | 10d | 2014-11-19 A | 2014-12-02 A | 110 | 100% |  | India | 80h | 80h |  |
| 195 | 1.5.1.3.4 | 5.1.3.4 Workshop/Dept Master | manual | 10d | 2014-11-25 A | 2014-12-08 A | 111 | 100% |  | India | 80h | 80h |  |
| 196 | 1.5.1.3.5 | 5.1.3.5 Hospital Master | manual | 10d | 2014-11-26 A | 2014-12-09 A | 112 | 100% |  | India | 80h | 80h |  |
| 197 | 1.5.1.3.6 | 5.1.3.6 Adjuster Master | manual | 10d | 2014-11-25 A | 2014-12-08 A | 113 | 100% |  | India | 80h | 80h |  |
| 198 | 1.5.1.4 | 5.1.4 Nature Of Loss | manual | 10d | 2014-06-25 A | 2014-07-08 A | 114 | 100% |  | India | 80h | 80h |  |
| 199 | 1.5.1.5 | 5.1.5 Type of Loss | manual | 10d | 2014-06-18 A | 2014-07-01 A | 115 | 100% |  | India | 80h | 80h |  |
| 200 | 1.5.1.6 | 5.1.6 Main Class Business | manual | 10d | 2014-06-18 A | 2014-07-01 A | 116 | 100% |  | India | 80h | 80h |  |
| 201 | 1.5.1.7 | 5.1.7 Sub Class | manual | 10d | 2014-06-18 A | 2014-07-01 A | 117 | 100% |  | India | 80h | 80h |  |
| 202 | 1.5.1.8 | 5.1.8 Claims Expense Master | manual | 10d | 2014-06-18 A | 2014-07-01 A | 118 | 100% |  | India | 80h | 80h |  |
| 203 | 1.5.1.9 | 5.1.9 Claims Close Reason Master | manual | 10d | 2014-06-18 A | 2014-07-01 A | 119 | 100% |  | India | 80h | 80h |  |
| 204 | 1.5.1.10 | 5.1.10 Currency Master | manual | 10d | 2014-06-18 A | 2014-07-01 A | 120 | 100% |  | India | 80h | 80h |  |
| 205 | 1.5.1.11 | 5.1.11 Exchange Rate Master | manual | 10d | 2014-06-18 A | 2014-07-01 A | 121 | 100% |  | India | 80h | 80h |  |
| 206 | 1.5.1.12 | 5.1.12 Vehicle Class | manual | 10d | 2014-06-18 A | 2014-07-01 A | 122 | 100% |  | India | 80h | 80h |  |
| 207 | 1.5.1.13 | 5.1.13 Vehicle Make | manual | 10d | 2014-06-18 A | 2014-07-01 A | 123 | 100% |  | India | 80h | 80h |  |
| 208 | 1.5.1.14 | 5.1.14 Vehicle Model | manual | 10d | 2014-06-18 A | 2014-07-01 A | 124 | 100% |  | India | 80h | 80h |  |
| 209 | 1.5.1.15 | 5.1.15 Insurance Policy | manual | 10d | 2014-06-25 A | 2014-07-08 A | 125 | 100% |  | India | 80h | 80h |  |
| 210 | 1.5.1.16 | 5.1.16 GST Setting | manual | 10d | 2014-06-18 A | 2014-07-01 A | 126 | 100% |  | India | 80h | 80h |  |
| 211 | 1.5.1.17 | 5.1.17 Organization | manual | 10d | 2015-01-12 A | 2015-01-23 A | 127 | 100% |  | India | 80h | 80h |  |
| 212 | 1.5.1.18 | 5.1.18 Claim Officer Duty | manual | 10d | 2014-09-17 A | 2014-09-30 A | 128 | 100% |  | India | 80h | 80h |  |
| 213 | 1.5.1.19 | 5.1.19 LOU Rate | manual | 10d | 2014-09-24 A | 2014-10-07 A | 129 | 100% |  | India | 80h | 80h |  |
| 214 | 1.5.1.20 | 5.1.20 Interchange | manual | 10d | 2014-09-24 A | 2014-10-07 A | 130 | 100% |  | India | 80h | 80h |  |
| 215 | 1.5.1.21 | 5.1.21 Deductible | manual | 10d | 2014-12-29 A | 2015-01-09 A | 131 | 100% |  | India | 80h | 80h |  |
| 216 | 1.5.1.22 | 5.1.22 User Manual | manual | 20d | 2015-02-02 A | 2015-02-27 |  | 10% | 18d | India | 160h | 16h | waiting To Get Details |
| 217 | 1.5.1.23 | 5.1.23 Test Approach/Test Cases | manual | 5d | 2015-02-02 A | 2015-02-06 A |  | 100% |  | India | 40h | 40h | waiting To Get Details |
| 218 | 1.5.1.24 | 5.1.24 QA Testing | manual | 20d | 2015-02-11 A | 2015-03-10 |  | 80% | 4d | India | 160h | 128h | waiting To Get Details |
| 219 | 1.5.1.25 | 5.1.25 UAT | manual | 20d | 2015-03-10 | 2015-04-06 |  |  |  | Singapore | 160h |  | waiting To Get Details |

| ID | WBS | Task | Type | Duration | Start | Finish | Predecessors | Complete | Remaining | Actual start | Resources | Work | Actual work | Items Pending at CDGI | India Ebix Remarks |
| --- | --- | --- | --- | --- | --- | --- | --- | --- | --- | --- | --- | --- | --- | --- | --- |
| 220 | 1.5.2 | **5.2 Upload** |  | 58d | 2015-01-30 | 2015-04-21 | 132 |  |  |  | India | 1240h |  | waiting to get Details |  |
| 221 | 1.5.2.1 | 5.2.1 TAC Upload | manual | 25d | 2015-02-26 | 2015-04-01 | 133 |  |  |  | India | 200h |  | waiting to get Details | Waiting for functionality |
| 222 | 1.5.2.2 | 5.2.2 Claim File Upload | manual | 25d | 2015-02-26 | 2015-04-01 | 134 |  |  |  | India | 200h |  |  | Waiting for functionality |
| 223 | 1.5.2.3 | 5.2.3 SAP File Upload | manual | 25d | 2015-02-26 | 2015-04-01 | 135 |  |  |  | India | 200h |  |  | Waiting for functionality |
| 224 | 1.5.2.4 | 5.2.4 User Manual | manual | 5d | 2015-04-02 | 2015-04-08 | 223 |  |  |  | India | 40h |  |  |  |
| 225 | 1.5.2.5 | 5.2.5 Test Approach/Test Cases | manual | 2d | 2015-04-01 | 2015-04-02 | 135 |  |  |  | India | 16h |  |  |  |
| 226 | 1.5.2.6 | 5.2.6 QA Testing | manual | 5d | 2015-04-01 | 2015-04-07 | 135 |  |  |  | India | 40h |  |  |  |
| 227 | 1.5.2.7 | 5.2.7 UAT | manual | 10d | 2015-04-08 | 2015-04-21 |  |  |  |  | India | 80h |  |  |  |
| 228 | 1.5.3 | **5.3 Claim** |  | 183d | 2014-11-14 | 2015-07-28 |  | 45% | 99.85d | 2014-10-30 | India | 6328h | 1748.4h |  |  |
| 229 | 1.5.3.1 | **5.3.1 Buses** |  | 127d | 2014-11-14 | 2015-05-11 | 137 | 85% | 18.83d | 2014-10-30 | India | 2648h | 1390h |  |  |
| 230 | 1.5.3.1.1 | 5.3.1.1 Accident | manual | 10d | 2014-11-14 A | 2014-11-27 A | 138 | 100% |  |  | India | 80h | 80h |  |  |
| 231 | 1.5.3.1.2 | 5.3.1.2 Claim | manual | 12d | 2014-11-14 A | 2014-12-01 A | 139 | 100% |  |  | India | 96h | 96h |  |  |
| 232 | 1.5.3.1.3 | 5.3.1.3 Service Provider | manual | 15d | 2014-11-14 A | 2014-12-04 A | 140 | 100% |  |  | India | 120h | 120h |  |  |
| 233 | 1.5.3.1.4 | 5.3.1.4 Notes | manual | 10d | 2014-11-14 A | 2014-11-27 A | 141 | 100% |  |  | India | 80h | 80h |  |  |
| 234 | 1.5.3.1.5 | 5.3.1.5 Tasks | manual | 12d | 2014-11-14 A | 2014-12-01 A | 142 | 100% |  |  | India | 96h | 96h |  |  |
| 235 | 1.5.3.1.6 | 5.3.1.6 Attachment | manual | 12d | 2014-11-14 A | 2014-12-01 A | 143 | 100% |  |  | India | 96h | 96h |  |  |
| 236 | 1.5.3.1.7 | 5.3.1.7 Dairy | manual | 20d | 2014-11-14 A | 2014-12-11 A | 144 | 100% |  |  | India | 160h | 160h |  |  |
| 237 | 1.5.3.1.8 | 5.3.1.8 Reassigned Dairy | manual | 10d | 2014-11-14 A | 2014-11-27 A | 145 | 100% |  |  | India | 80h | 80h |  |  |
| 238 | 1.5.3.1.9 | 5.3.1.9 Reserve | manual | 10d | 2015-01-02 A | 2015-01-15 | 146 | 85% | 1.5d |  | India | 80h | 68h |  |  |
| 239 | 1.5.3.1.10 | 5.3.1.10 Reserve History | manual | 5d | 2015-01-16 A | 2015-01-22 | 238 | 85% | 0.75d |  | India | 40h | 34h |  |  |
| 240 | 1.5.3.1.11 | 5.3.1.11 Mandate | manual | 10d | 2015-01-02 A | 2015-01-15 | 148 | 85% | 1.5d |  | India | 80h | 68h |  |  |
| 241 | 1.5.3.1.12 | 5.3.1.12 Mandate History | manual | 5d | 2015-01-16 A | 2015-01-22 | 240 | 30% | 3.5d |  | India | 40h | 12h |  | Waiting for functionality |
| 242 | 1.5.3.1.13 | 5.3.1.13 Payment | manual | 10d? | 2015-01-19 A | 2015-01-30 | 150 | 40% | 6d? |  | India | 80h | 32h |  | Waiting for functionality |
| 243 | 1.5.3.1.14 | 5.3.1.14 Payment History | manual | 5d | 2015-02-16 | 2015-02-20 | 151 |  |  |  | India | 40h |  |  | Waiting for functionality |
| 244 | 1.5.3.1.15 | 5.3.1.15 Recovery | manual | 20d | 2015-02-10 A | 2015-03-09 | 152 | 40% | 12d |  | India | 160h | 64h |  |  |
| 245 | 1.5.3.1.16 | 5.3.1.16 Transaction History | manual | 38d | 2014-10-30 A | 2014-12-22 A | 153 | 100% |  |  | India | 304h | 304h |  |  |
| 246 | 1.5.3.2 | 5.3.2 Trains | manual | 127d | 2014-11-14 A | 2015-05-11 | 154 | 35% | 82.2d |  | India | 1016h | 358.4h |  |  |
| 247 | 1.5.3.3 | 5.3.3 Taxis | manual | 30d | 2015-04-07 | 2015-05-18 | 155 |  |  |  | India | 240h |  |  | Waiting for functionality |
| 248 | 1.5.3.4 | 5.3.4 Rental Cars | manual | 30d | 2015-05-08 | 2015-06-18 | 156 |  |  |  | India | 240h |  |  | Waiting for functionality |
| 249 | 1.5.3.5 | 5.3.5 Private Cars | manual | 30d | 2015-05-08 | 2015-06-18 | 157 |  |  |  | India | 240h |  |  | Waiting for functionality |
| 250 | 1.5.3.6 | 5.3.6 User Manual | manual | 10d | 2015-05-11 | 2015-05-22 |  |  |  |  | India | 80h |  |  | Waiting for functionality |
| 251 | 1.5.3.7 | 5.3.7 Test Approach/Test Cases | manual | 5d | 2015-05-22 | 2015-05-28 |  |  |  |  | India | 40h |  |  |  |
| 252 | 1.5.3.8 | 5.3.8 QA Testing | manual | 25d | 2015-05-28 | 2015-07-01 |  |  |  |  | India | 200h |  |  |  |
| 253 | 1.5.3.9 | 5.3.9 UAT | manual | 20d | 2015-07-01 | 2015-07-28 |  |  |  |  | India | 160h |  |  |  |

| ID | WBS | Task | Type | Duration | Start | Finish | Predecessors | Resources | Work | India Ebix Remarks | Items Pending at CDGI |
| --- | --- | --- | --- | --- | --- | --- | --- | --- | --- | --- | --- |
| 254 | 1.5.4 | **5.4 Dashboard** |  | 10d | 2015-02-12 | 2015-02-25 |  | India | 160h | Waiting for functionality |  |
| 255 | 1.5.4.1 | 5.4.1 Sections of Dashboard per User Group | manual | 10d | 2015-02-12 | 2015-02-25 |  | India | 80h | pending for requirement detail | waiting To Get Details |
| 256 | 1.5.5 | **5.5 Diary Listing** |  | 240d | 2014-07-01 | 2015-06-01 |  | India | 4248h |  |  |
| 257 | 1.5.5.1 | 5.5.1 Diary Items | manual | 10d | 2015-02-24 | 2015-03-09 | 161 | India | 80h | Waiting for functionality | waiting To Get Details |
| 258 | 1.5.5.2 | 5.5.2 Assigned Tasks | manual | 10d | 2015-02-24 | 2015-03-09 | 162 | India | 80h | Waiting for functionality | waiting To Get Details |
| 259 | 1.5.5.3 | 5.5.3 Escalation Tasks | manual | 17d | 2015-02-24 | 2015-03-18 | 163 | India | 136h | Waiting for functionality | waiting To Get Details |
| 260 | 1.5.5.4 | 5.5.4 User Manual | manual | 5d | 2015-03-19 | 2015-03-25 | 259 | India | 40h | Waiting for functionality | waiting To Get Details |
| 261 | 1.5.5.5 | 5.5.5 Test Approach/Test Cases | manual | 5d | 2015-03-26 | 2015-04-01 | 260 | India | 40h |  | waiting To Get Details |
| 262 | 1.5.5.6 | 5.5.6 QA Testing | manual | 5d | 2015-03-26 | 2015-04-01 | 260 | India | 40h |  | waiting To Get Details |
| 263 | 1.5.5.7 | 5.5.7 UAT | manual | 239d | 2014-07-01 | 2015-05-29 |  | India | 1912h |  | waiting To Get Details |
| 264 | 1.5.6 | **5.6 Claim Enquiry** |  | 67d | 2015-03-11 | 2015-06-11 | 164 | India | 976h | Waiting for functionality |  |
| 265 | 1.5.6.1 | 5.6.1 Claims | manual | 15d | 2015-03-12 | 2015-04-01 | 165 | India | 120h | Waiting for functionality | waiting To Get Details |
| 266 | 1.5.6.2 | 5.6.2 Claim Documents Printing | manual | 10d | 2015-05-01 | 2015-05-14 | 166 | India | 80h | Waiting for functionality | waiting To Get Details |
| 267 | 1.5.6.3 | 5.6.3 Job Schedule Enquiry | manual | 10d | 2015-05-15 | 2015-05-28 | 266 | India | 80h | Waiting for functionality | waiting To Get Details |
| 268 | 1.5.6.4 | 5.6.4 User Manual | manual | 5d | 2015-05-29 | 2015-06-04 | 267 | India | 40h |  | waiting To Get Details |
| 269 | 1.5.6.5 | 5.6.5 Test Approach/Test Cases | manual | 5d | 2015-05-29 | 2015-06-04 | 267 | India | 40h |  | waiting To Get Details |
| 270 | 1.5.6.6 | 5.6.6 QA Testing | manual | 5d | 2015-05-29 | 2015-06-04 | 267 | India | 40h |  | waiting To Get Details |
| 271 | 1.5.6.7 | 5.6.7 UAT | manual | 5d | 2015-06-05 | 2015-06-11 | 268 | India | 40h |  | waiting To Get Details |
| 272 | 1.5.7 | **5.7 Document Generation Module** |  | 30d | 2014-07-01 | 2014-08-11 |  | India | 360h | Waiting for functionality |  |
| 273 | 1.5.7.1 | 5.7.1 Document Generation Criteria | manual | 15d | 2015-04-23 | 2015-05-13 | 169 |  |  | Waiting for functionality |  |
| 274 | 1.5.7.2 | 5.7.2 User Manual | manual | 5d | 2015-05-14 | 2015-05-20 | 273 | India | 40h |  | waiting To Get Details |
| 275 | 1.5.7.3 | 5.7.3 Test Approach/Test Cases | manual | 5d | 2015-05-21 | 2015-05-27 | 273 | India | 40h |  | waiting To Get Details |
| 276 | 1.5.7.4 | 5.7.4 QA Testing | manual | 5d | 2015-05-21 | 2015-05-27 | 273 | India | 40h |  | waiting To Get Details |
| 277 | 1.5.7.5 | 5.7.5 UAT | milestone, manual | 0d | 2015-05-25 | 2015-05-25 | 274 | India |  |  | waiting To Get Details |

| ID | WBS | Task | Type | Duration | Start | Finish | Predecessors | Complete | Remaining | Actual start | Resources | Work | Actual work | Items Pending at CDGI | India Ebix Remarks | Description |
| --- | --- | --- | --- | --- | --- | --- | --- | --- | --- | --- | --- | --- | --- | --- | --- | --- |
| 278 | 1.5.8 | **5.8 Document Print** |  | 240d? | 2014-07-01 | 2015-06-01 |  |  |  |  | India | 2280h |  |  |  |  |
| 279 | 1.5.8.1 | 5.8.1 Claim Payment Document Printing | manual | 10d | 2015-02-19 | 2015-03-04 | 173 |  |  |  | India | 80h |  | waiting To Get Details | Waiting for functionality |  |
| 280 | 1.5.8.2 | 5.8.2 Claim Registration Document Printing | manual | 10d | 2014-12-22 | 2015-01-02 | 174 |  |  |  | India | 80h |  | waiting To Get Details | Waiting for functionality |  |
| 281 | 1.5.8.3 | 5.8.3 User Manual | manual | 5d | 2015-01-05 | 2015-01-09 | 280 |  |  |  | India | 40h |  | waiting To Get Details |  | on Going |
| 282 | 1.5.8.4 | 5.8.4 Test Approach/Test Cases | manual | 5d | 2015-01-05 | 2015-01-09 | 280 |  |  |  | India | 40h |  | waiting To Get Details |  |  |
| 283 | 1.5.8.5 | 5.8.5 QA Testing | manual | 5d | 2015-01-05 | 2015-01-09 | 280 |  |  |  | India | 40h |  | waiting To Get Details |  |  |
| 284 | 1.5.8.6 | 5.8.6 UAT | manual | 10d | 2015-02-03 | 2015-02-16 | 283 |  |  |  | India | 80h |  | waiting To Get Details |  |  |
| 285 | 1.5.9 | **5.9 Unreported Claim Menu** |  | 0d? | 2015-01-30 | 2015-01-30 |  |  |  |  | India | 280h |  |  |  |  |
| 286 | 1.5.9.1 | 5.9.1 UI and functionality implementation | manual | 10d | 2015-02-19 | 2015-03-04 | 173 |  |  |  | India | 80h |  | waiting To Get Details | Waiting for functionality |  |
| 287 | 1.5.9.2 | 5.9.2 User Manual | manual | 5d | 2015-03-05 | 2015-03-11 | 286 |  |  |  | India | 40h |  | waiting To Get Details |  |  |
| 288 | 1.5.9.3 | 5.9.3 Test Approach/Test Cases | manual | 5d | 2015-03-12 | 2015-03-18 | 287 |  |  |  | India | 40h |  | waiting To Get Details |  |  |
| 289 | 1.5.9.4 | 5.9.4 QA Testing | manual | 5d | 2015-03-19 | 2015-03-25 | 287 |  |  |  | India | 40h |  | waiting To Get Details |  |  |
| 290 | 1.5.9.5 | 5.9.5 UAT | manual | 10d | 2015-03-26 | 2015-04-08 | 289 |  |  |  | India | 80h |  | waiting To Get Details |  |  |
| 291 | 1.5.10 | **5.10 Security Management System** |  | 12d | 2014-07-01 | 2014-07-16 |  | 26% | 8.91d | 2014-12-01 | India | 296h | 72h |  |  |  |
| 292 | 1.5.10.1 | 5.7.1 Permission Screen UI and Functionality | manual | 10d | 2014-12-01 | 2014-12-12 | 175 |  |  |  |  |  |  | waiting To Get Details | Waiting for functionality |  |
| 293 | 1.5.10.2 | 5.7.2 User Manual | manual | 5d | 2015-02-09 | 2015-02-13 | 292 |  |  |  | India | 40h |  | waiting To Get Details |  | On Going |
| 294 | 1.5.10.3 | 5.7.3 Test Approach/Test Cases | manual | 5d | 2015-02-02 A | 2015-02-06 A |  | 100% |  |  | India | 40h | 40h | waiting To Get Details |  |  |
| 295 | 1.5.10.4 | 5.7.4 QA Testing | manual | 5d | 2015-02-02 A | 2015-02-09 | 294 | 80% | 1d |  | India | 40h | 32h | waiting To Get Details |  |  |
| 296 | 1.5.10.5 | 5.7.5 UAT | manual | 10d | 2015-02-10 | 2015-02-23 | 294 |  |  |  | India | 80h |  | waiting To Get Details |  |  |
| 297 | 1.6 | **6 QA Test Scripts** |  | 30d | 2015-07-01 | 2015-08-11 | 178 |  |  |  | India | 560h |  |  |  |  |
| 298 | 1.6.1 | 6.1 Testing Approach Development/Confirmation | manual | 10d | 2015-07-01 | 2015-07-14 |  |  |  |  | India | 80h |  |  |  |  |
| 299 | 1.6.2 | 6.2 Test Condition Development | manual | 10d | 2015-07-01 | 2015-07-14 |  |  |  |  | India | 80h |  |  |  |  |
| 300 | 1.6.3 | 6.3 Test Script Development | manual | 10d | 2015-07-01 | 2015-07-14 |  |  |  |  | India | 80h |  |  |  |  |
| 301 | 1.6.4 | 6.4 Expected Results Development | manual | 10d | 2015-07-01 | 2015-07-14 |  |  |  |  | India | 80h |  |  |  |  |

| ID | WBS | Task | Type | Duration | Start | Finish | Resources | Work |
| --- | --- | --- | --- | --- | --- | --- | --- | --- |
| 302 | 1.7 | **7 QA Testing** |  | 30d | 2015-07-15 | 2015-08-25 | India | 400h |
| 303 | 1.7.1 | 7.1 QA Testing | manual | 10d | 2015-07-15 | 2015-07-28 | India | 80h |
| 304 | 1.7.2 | 7.2 Review results | manual | 10d | 2015-07-15 | 2015-07-28 | India | 80h |
| 305 | 1.8 | **8 End-to-end UAT** |  | 10d | 2015-07-29 | 2015-08-11 | Singapore | 240h |
| 306 | 1.8.1 | 8.1 Access to UAT Environment | manual | 10d | 2015-07-29 | 2015-08-11 | Singapore | 80h |
| 307 | 1.8.2 | 8.2 Product Testing | manual | 10d | 2015-07-29 | 2015-08-11 | Singapore | 80h |
| 308 | 1.9 | **9 Client UAT** |  | 15d | 2015-08-12 | 2015-09-01 | CDGI | 360h |
| 309 | 1.9.1 | 9.1 Access to UAT Environment | manual | 15d | 2015-08-12 | 2015-09-01 | CDGI | 120h |
| 310 | 1.9.2 | 9.2 Product Testing | manual | 15d | 2015-08-12 | 2015-09-01 | CDGI | 120h |
| 311 | 1.10 | **10 Deployment** |  | 37d | 2015-09-02 | 2015-10-22 | Singapore | 632h |
| 312 | 1.10.1 | 10.1 Deployment Approach | manual | 7d | 2015-09-02 | 2015-09-10 | Singapore | 56h |
| 313 | 1.10.2 | 10.2 Platform Readiness | manual | 7d | 2015-09-10 | 2015-09-18 | Singapore | 56h |
| 314 | 1.10.3 | 10.3 Software Installation | manual | 7d | 2015-09-18 | 2015-09-28 | Singapore | 56h |
| 315 | 1.10.4 | 10.4 UAT Sign-off | manual | 7d | 2015-09-28 | 2015-10-06 | Singapore | 56h |
| 316 | 1.10.5 | 10.5 Go Live Preparation | manual | 7d | 2015-10-06 | 2015-10-14 | Singapore | 56h |
| 317 | 1.10.6 | 10.6 Support Kick Off | manual | 7d | 2015-10-14 | 2015-10-22 | Singapore | 56h |
